# Planning_ActivA

Schedule from MS Project, 2009-08-07 to 2011-03-08.

## Calendars

- Standard: Mon-Fri 08:00-12:00, 13:00-17:00; Sat-Sun off. Exceptions (off unless hours are given): 2009-12-25 (Christmas), 2010-01-01 (New year).

## Resources

| Resource | Group |
| --- | --- |
| Dr. Luis Maiz | HRC |
| Dra. Maite Martinez | H12O |
| Esther Sabando | AMFQ |
| Alfonso Montero | AMFQ |
| Tamara del corral | AMFQ |
| Jordi Villa | UPF |
| Sinan Mutlu | UPF |
| James Dalton | UPF |
| Jordi Blecua | ISOCO |
| Miguel Tsuchiya | FL |
| Joan Plana | ASET |
| Lisbeth Hernández | O2H |
| Miguel Hernández | O2H |
| Jordi Vilaro | O2H |
| Ezequiel Cuesta | O2H |
| Doug Thurber | O2H |
| William Lalinde | O2H |
| FL |  |
| O2H |  |
| ISOCO |  |
| UPF |  |
| AMFQ |  |
| ASET |  |
| FG |  |
| LH |  |
| JV |  |
| MH |  |
| JVL |  |
| JVA |  |

## Schedule

| ID | WBS | Task | Type | Duration | Start | Finish | Predecessors | Total slack | Free slack | Constraint | Resources | Work |
| --- | --- | --- | --- | --- | --- | --- | --- | --- | --- | --- | --- | --- |
| 1 | 1 | **GP 1A Version 1 - ActivA Platform** |  | 334d? | 2009-09-01 | 2010-12-14 |  | 0d |  |  |  | 8736h |
| 2 | 1.1 | **Analysis - Entire Platform Complete** |  | 57d | 2009-09-01 | 2009-11-18 |  | 0d |  |  |  |  |
| 3 | 1.1.1 | Specifications |  | 43d | 2009-09-01 | 2009-10-29 |  | 0d |  | start no earlier than 2009-09-01 |  |  |
| 4 | 1.1.2 | Analysis complete Entire Platform - General |  | 14d | 2009-10-30 | 2009-11-18 | 3 | 327d | 0d |  |  |  |
| 5 | 1.2 | **WP1 Mobile platform** |  | 75d | 2009-10-29 | 2010-02-12 |  | 0d |  |  | FL; O2H | 2344h |
| 6 | 1.2.1 | **Analysis Mobile Applications** |  | 23d | 2009-10-29 | 2009-11-30 |  | 0d |  |  | O2H | 184h |
| 7 | 1.2.1.1 | Specifications |  | 15d | 2009-10-29 | 2009-11-18 |  | 0d |  | start no earlier than 2009-10-29 |  |  |
| 8 | 1.2.1.2 | Analysis Mobile Platform |  | 15d | 2009-11-10 | 2009-11-30 |  | 329d |  | start no earlier than 2009-11-10 |  |  |
| 9 | 1.2.2 | **Equipment Acquisition** |  | 10d | 2009-11-19 | 2009-12-02 |  | 327d |  |  | FL | 80h |
| 10 | 1.2.2.1 | Acquisition |  | 5d | 2009-11-19 | 2009-11-25 | 4 | 327d | 0d |  |  |  |
| 11 | 1.2.2.2 | Installation |  | 5d | 2009-11-26 | 2009-12-02 | 10 | 327d |  |  |  |  |
| 12 | 1.2.3 | **iPhone development (from other project)** |  | 50d | 2009-11-19 | 2010-01-29 |  | 0d |  |  | FL | 400h |
| 13 | 1.2.3.1 | Smart questionaries |  | 45d | 2009-11-19 | 2010-01-22 | 7 | 287d | 0d | finish no earlier than 2009-12-31 |  |  |
| 14 | 1.2.3.2 | Measurements |  | 45d | 2009-11-19 | 2010-01-22 | 7 | 287d | 0d |  |  |  |
| 15 | 1.2.3.3 | Calendar and alarm |  | 45d | 2009-11-19 | 2010-01-22 | 7 | 287d | 0d |  |  |  |
| 16 | 1.2.3.4 | Security |  | 14d | 2009-11-19 | 2009-12-08 | 7 | 323d |  |  |  |  |
| 17 | 1.2.3.5 | Complete Build Version 1 application |  | 5d | 2010-01-25 | 2010-01-29 | 13, 14, 15 | 287d |  | start no earlier than 2009-10-29 |  |  |
| 18 | 1.2.3.6 | Implementation document |  | 50d | 2009-11-19 | 2010-01-29 | 7 | 0d |  | must finish on 2010-01-29 |  |  |
| 19 | 1.2.3.7 | User manual |  | 15d | 2010-01-11 | 2010-01-29 | 7 | 0d |  | must finish on 2010-01-29 |  |  |
| 20 | 1.2.4 | **Android Development** |  | 50d | 2009-11-19 | 2010-01-29 |  | 0d |  |  | FL | 400h |
| 21 | 1.2.4.1 | Smart questionaries |  | 45d | 2009-11-19 | 2010-01-22 | 7 | 287d | 0d | finish no earlier than 2009-12-31 |  |  |
| 22 | 1.2.4.2 | Measurements |  | 45d | 2009-11-19 | 2010-01-22 | 7 | 287d | 0d |  |  |  |
| 23 | 1.2.4.3 | Calendar and alarm |  | 45d | 2009-11-19 | 2010-01-22 | 7 | 287d | 0d |  |  |  |
| 24 | 1.2.4.4 | Security |  | 14d | 2009-11-19 | 2009-12-08 | 7 | 323d |  |  |  |  |
| 25 | 1.2.4.5 | Complete Build Version 1 application |  | 5d | 2010-01-25 | 2010-01-29 | 21, 22, 23 | 287d |  | start no earlier than 2009-10-29 |  |  |
| 26 | 1.2.4.6 | Implementation document |  | 50d | 2009-11-19 | 2010-01-29 | 7 | 0d |  | must finish on 2010-01-29 |  |  |
| 27 | 1.2.4.7 | User manual |  | 15d | 2010-01-11 | 2010-01-29 | 7 | 0d |  | must finish on 2010-01-29 |  |  |
| 28 | 1.2.4.8 | Development Complete - Mobile Platform | milestone | 0d | 2010-01-29 | 2010-01-29 | 27 | 277d | 0d |  |  |  |

Notes:
- 1: Although a cascade way is shown, the methodology must be iterative by prototypying
- 5: Although a cascade way is shown, the methodology must be iterative by prototypying
- 9: Hardware refers to the acquirement, mount of devices and installation
- 17: Documentation, iterative through development
- 18: Documentation, iterative through development
- 19: Documentation
- 25: Documentation, iterative through development
- 26: Documentation, iterative through development
- 27: Documentation

| ID | WBS | Task | Type | Duration | Start | Finish | Predecessors | Total slack | Free slack | Constraint | Resources | Work |
| --- | --- | --- | --- | --- | --- | --- | --- | --- | --- | --- | --- | --- |
| 29 | 1.2.5 | **Quality assurance** |  | 10d | 2010-02-01 | 2010-02-12 |  | 277d |  |  | FL | 80h |
| 30 | 1.2.5.1 | Test Matrix |  | 5d | 2010-02-01 | 2010-02-05 | 28 | 277d | 0d |  |  |  |
| 31 | 1.2.5.2 | Test Quality assurance iPhone |  | 5d | 2010-02-08 | 2010-02-12 | 30 | 277d | 0d |  |  |  |
| 32 | 1.2.5.3 | Test Quality assurance Android |  | 5d | 2010-02-08 | 2010-02-12 | 30 | 277d | 0d |  |  |  |
| 33 | 1.2.6 | Complete First Product Delivery - MP | milestone | 0d | 2010-02-12 | 2010-02-12 | 31, 32 | 277d |  |  |  |  |
| 34 | 1.3 | **WP2 Web platform** |  | 130d? | 2009-10-30 | 2010-05-03 |  | 0d |  |  |  | 480h |
| 35 | 1.3.1 | **Analysis** |  | 15d | 2009-10-30 | 2009-11-19 |  | 0d |  |  | O2H | 120h |
| 36 | 1.3.1.1 | Architecture document update |  | 15d | 2009-10-30 | 2009-11-19 | 3 | 0d |  | finish no earlier than 2009-10-02 |  |  |
| 37 | 1.3.1.2 | Document delivery | milestone | 0d | 2009-11-19 | 2009-11-19 | 36 | 0d |  |  |  |  |
| 38 | 1.3.2 | **Development** |  | 102d? | 2009-11-20 | 2010-04-14 | 35 | 0d |  |  |  | 200h |
| 39 | 1.3.2.1 | **Hardware** |  | 70d | 2009-11-20 | 2010-03-01 |  | 234d |  |  |  |  |
| 40 | 1.3.2.1.1 | Demo server installation |  | 10d | 2009-11-20 | 2009-12-03 | 3 | 234d | 0d |  |  |  |
| 41 | 1.3.2.1.2 | Load balancing servers |  | 30d | 2009-12-04 | 2010-01-18 | 40 | 266d | 0d |  |  |  |
| 42 | 1.3.2.1.3 | Disperse database |  | 30d | 2010-01-19 | 2010-03-01 | 41 | 266d |  |  |  |  |
| 43 | 1.3.2.2 | **Server side development** |  | 62d | 2009-12-04 | 2010-03-03 | 40 | 234d |  |  |  |  |
| 44 | 1.3.2.2.1 | Business objects (EJB3 Entities) |  | 20d | 2009-12-04 | 2010-01-04 | 37 | 234d | 0d | finish no earlier than 2009-10-30 |  |  |
| 45 | 1.3.2.2.2 | Business methods (EJB3 Sessions) |  | 20d | 2010-01-05 | 2010-02-01 | 44 | 234d | 0d |  |  |  |
| 46 | 1.3.2.2.3 | Client server communication |  | 20d | 2009-12-04 | 2010-01-04 | 37 | 306d |  |  |  |  |
| 47 | 1.3.2.2.4 | Client side communication (GWT RPC) |  | 20d | 2009-12-04 | 2010-01-04 | 37 | 286d | 0d |  |  |  |
| 48 | 1.3.2.2.5 | Client side communication (GWT JSON) |  | 20d | 2010-01-05 | 2010-02-01 | 47 | 286d |  |  |  |  |
| 49 | 1.3.2.2.6 | Web services (SOAP XML) |  | 22d | 2010-02-02 | 2010-03-03 | 45 | 234d | 0d |  |  |  |
| 50 | 1.3.2.3 | **Client side development** |  | 102d | 2009-11-20 | 2010-04-14 |  | 234d |  |  |  |  |
| 51 | 1.3.2.3.1 | Client Business objects |  | 21d | 2009-11-20 | 2009-12-18 | 37 | 275d | 24d |  |  |  |
| 52 | 1.3.2.3.2 | Client UI Events |  | 20d | 2009-11-20 | 2009-12-17 | 37 | 251d | 0d |  |  |  |
| 53 | 1.3.2.3.3 | Client widgets |  | 25d | 2009-12-18 | 2010-01-25 | 52 | 251d | 0d |  |  |  |
| 54 | 1.3.2.3.4 | Client Services |  | 10d | 2010-01-26 | 2010-02-08 | 51, 52, 53 | 251d | 17d |  |  |  |
| 55 | 1.3.2.3.5 | Web Develpoment end to end consolidation |  | 10d | 2010-03-04 | 2010-03-17 | 49, 54 | 234d | 0d |  |  |  |
| 56 | 1.3.2.3.6 | Internatioalization and Accesibility |  | 20d | 2010-03-18 | 2010-04-14 | 55 | 234d |  |  |  |  |

Notes:
- 31: Test Matrix is already developed
- 32: Test Matrix is already developed
- 33: Used to take patient measurements
- 36: This architecture document is not constrained only to the web platform.
- 40: Initially only one server is needed
- 41: For an scalable choice multiple servers must be mounted
- 42: The database must be dispersed as well to avoid being the bottleneck
- 44: Objetos de negocio
- 45: Métodos de negocio
- 48: Additional sites not using RPC
- 53: Will be replaced by the 3D UI.

| ID | WBS | Task | Type | Duration | Start | Finish | Predecessors | Total slack | Free slack | Constraint | Resources | Work |
| --- | --- | --- | --- | --- | --- | --- | --- | --- | --- | --- | --- | --- |
| 57 | 1.3.2.4 | **eCommerce** |  | 77d? | 2009-11-20 | 2010-03-10 |  | 259d |  |  |  |  |
| 58 | 1.3.2.4.1 | Analysis & Update to Arch. Doc |  | 15d | 2009-11-20 | 2009-12-10 | 37 | 259d | 0d | finish no earlier than 2009-10-02 |  |  |
| 59 | 1.3.2.4.2 | Document delivery |  | 1d | 2009-12-11 | 2009-12-11 | 58 | 259d | 0d |  |  |  |
| 60 | 1.3.2.4.3 | Interface development 2.3.0 |  | 1d? | 2009-12-14 | 2009-12-14 | 59 | 259d | 0d |  |  |  |
| 61 | 1.3.2.4.4 | Interface implementation |  | 45d | 2009-12-15 | 2010-02-17 | 60 | 259d | 0d |  |  |  |
| 62 | 1.3.2.4.5 | Transaction |  | 15d | 2010-02-18 | 2010-03-10 | 61 | 259d | 5d |  |  |  |
| 63 | 1.3.2.5 | **Security** |  | 76d | 2009-11-20 | 2010-03-09 |  | 260d |  |  |  |  |
| 64 | 1.3.2.5.1 | Architecture document update |  | 15d | 2009-11-20 | 2009-12-10 | 37 | 260d | 0d | finish no earlier than 2009-10-02 |  |  |
| 65 | 1.3.2.5.2 | Document delivery |  | 1d | 2009-12-11 | 2009-12-11 | 64 | 260d | 0d |  |  |  |
| 66 | 1.3.2.5.3 | SSL Encryption (HTTPS) |  | 45d | 2009-12-14 | 2010-02-16 | 65 | 260d | 0d |  |  |  |
| 67 | 1.3.2.5.4 | SSL Certificates (Verisign) |  | 15d | 2010-02-17 | 2010-03-09 | 66 | 260d | 6d |  |  |  |
| 68 | 1.3.2.6 | **Semantic Web (HL7)** |  | 95d | 2009-11-20 | 2010-04-05 |  | 0d |  |  |  | 200h |
| 69 | 1.3.2.6.1 | **Analysis** |  | 20d | 2009-11-20 | 2009-12-17 |  | 0d |  |  |  |  |
| 70 | 1.3.2.6.1.1 | Architecture |  | 20d | 2009-11-20 | 2009-12-17 |  | 0d |  |  |  |  |
| 71 | 1.3.2.6.2 | **Development** |  | 60d | 2009-12-18 | 2010-03-15 |  | 0d |  |  |  |  |
| 72 | 1.3.2.6.2.1 | Web services for interfaces |  | 60d | 2009-12-18 | 2010-03-15 | 70 | 0d |  |  |  |  |
| 73 | 1.3.2.6.3 | **Quality Assurance** |  | 15d | 2010-03-16 | 2010-04-05 |  | 241d |  |  |  | 200h |
| 74 | 1.3.2.6.3.1 | Test Matrix |  | 5d | 2010-03-16 | 2010-03-22 | 72 | 241d | 0d |  | ISOCO | 40h |
| 75 | 1.3.2.6.3.2 | Test Period |  | 10d | 2010-03-23 | 2010-04-05 | 74 | 241d |  |  | ISOCO; MH | 160h |
| 76 | 1.3.3 | Implementation document |  | 110d | 2009-11-20 | 2010-04-26 | 37 | 226d |  |  |  |  |
| 77 | 1.3.4 | Development Complete - Web Platform | milestone | 0d | 2010-03-17 | 2010-03-17 | 49, 55, 62, 67 | 254d |  |  |  |  |
| 78 | 1.3.5 | **Quality assurance** |  | 35d | 2010-03-16 | 2010-05-03 |  | 0d |  |  |  | 160h |
| 79 | 1.3.5.1 | **Test matrix** |  | 5d | 2010-03-16 | 2010-03-22 |  | 0d |  |  |  | 160h |
| 80 | 1.3.5.1.1 | Patient matrix |  | 5d | 2010-03-16 | 2010-03-22 | 72 | 0d |  |  | FG | 40h |
| 81 | 1.3.5.1.2 | Clinician matrix |  | 5d | 2010-03-16 | 2010-03-22 | 72 | 251d |  |  | LH | 40h |
| 82 | 1.3.5.1.3 | Researcher matrix |  | 5d | 2010-03-16 | 2010-03-22 | 72 | 251d |  |  | JVA | 40h |
| 83 | 1.3.5.1.4 | Technical matrix |  | 5d | 2010-03-16 | 2010-03-22 | 72 | 20d | 0d |  | MH | 40h |

Notes:
- 58: This architecture document is not constrained only to the web platform.
- 64: This architecture document is not constrained only to the web platform.
- 68: REVISAR!!
- 74: Agregar Test Matrix al principio y Text Period al final de todos los bloques en WP2 (integracion al final MH)
- 76: This implementation document is not constrained only to the web platform.

| ID | WBS | Task | Type | Duration | Start | Finish | Predecessors | Total slack | Free slack | Resources | Work |
| --- | --- | --- | --- | --- | --- | --- | --- | --- | --- | --- | --- |
| 84 | 1.3.5.2 | **Test period** |  | 30d | 2010-03-23 | 2010-05-03 |  | 0d |  |  |  |
| 85 | 1.3.5.2.1 | Patient test |  | 10d | 2010-03-23 | 2010-04-05 | 80 | 0d |  |  |  |
| 86 | 1.3.5.2.2 | Clinician test |  | 10d | 2010-04-06 | 2010-04-19 | 85 | 0d |  |  |  |
| 87 | 1.3.5.2.3 | Researcher tests |  | 10d | 2010-04-20 | 2010-05-03 | 86 | 0d |  |  |  |
| 88 | 1.3.5.2.4 | Technical tests |  | 10d | 2010-03-23 | 2010-04-05 | 83 | 20d |  |  |  |
| 89 | 1.3.6 | Complete First Product Delivery - WP | milestone | 0d | 2010-05-03 | 2010-05-03 | 88, 85, 86, 87 | 0d |  |  |  |
| 90 | 1.4 | **WP3 Social Networking platform** |  | 100d | 2009-10-29 | 2010-03-19 |  | 158d |  | ISOCO | 800h |
| 91 | 1.4.1 | **Analysis** |  | 65d | 2009-10-29 | 2010-01-29 |  | 158d |  |  |  |
| 92 | 1.4.1.1 | Social Network Framework |  | 20d | 2009-10-29 | 2009-11-25 |  | 158d | 0d |  |  |
| 93 | 1.4.1.2 | Entities |  | 10d | 2009-11-26 | 2009-12-09 | 92 | 158d | 0d |  |  |
| 94 | 1.4.1.3 | Basic commands |  | 10d | 2009-12-10 | 2009-12-23 | 93 | 158d | 0d |  |  |
| 95 | 1.4.1.4 | Social Network Integration (demo) |  | 25d | 2009-12-24 | 2010-01-29 | 94 | 158d | 0d |  |  |
| 96 | 1.4.2 | **Development** |  | 30d | 2010-02-01 | 2010-03-12 |  | 158d |  |  |  |
| 97 | 1.4.2.1 | Social Network Integration |  | 20d | 2010-02-01 | 2010-02-26 | 95 | 267d |  |  |  |
| 98 | 1.4.2.2 | Social Network Tools |  | 30d | 2010-02-01 | 2010-03-12 | 95 | 257d |  |  |  |
| 99 | 1.4.2.3 | Social Network App integration |  | 20d | 2010-02-01 | 2010-02-26 | 95 | 158d | 0d |  |  |
| 100 | 1.4.2.4 | RSS Feed |  | 15d | 2010-02-01 | 2010-02-19 | 95 | 272d |  |  |  |
| 101 | 1.4.3 | Development Complete - SN Platform | milestone | 0d | 2010-02-26 | 2010-02-26 | 99 | 158d | 0d |  |  |
| 102 | 1.4.4 | **Quality assurance** |  | 15d | 2010-03-01 | 2010-03-19 |  | 158d |  |  |  |
| 103 | 1.4.4.1 | **Test matrix** |  | 10d | 2010-03-01 | 2010-03-12 |  | 158d |  |  |  |
| 104 | 1.4.4.1.1 | Environment test matrix |  | 5d | 2010-03-01 | 2010-03-05 | 101 | 158d | 0d |  |  |
| 105 | 1.4.4.1.2 | Scientific test matrix |  | 5d | 2010-03-08 | 2010-03-12 | 104 | 158d | 0d |  |  |
| 106 | 1.4.4.2 | **Test period** |  | 5d | 2010-03-15 | 2010-03-19 |  | 158d |  |  |  |
| 107 | 1.4.4.2.1 | Environment test period |  | 5d | 2010-03-15 | 2010-03-19 | 105 | 252d |  |  |  |
| 108 | 1.4.4.2.2 | Scientific test period |  | 5d | 2010-03-15 | 2010-03-19 | 105 | 158d | 0d |  |  |
| 109 | 1.4.5 | Complete First Product Delivery - SN | milestone | 0d | 2010-03-19 | 2010-03-19 | 108 | 237d | 0d |  |  |

Notes:
- 85: Do not mix the testing phase named here with the WP Patient Management, they are not related
- 93: Not fully deployed to leave it for later
- 94: Not fully deployed to leave it for later

| ID | WBS | Task | Type | Duration | Start | Finish | Predecessors | Total slack | Free slack | Resources | Work |
| --- | --- | --- | --- | --- | --- | --- | --- | --- | --- | --- | --- |
| 110 | 1.5 | **WP4 Virtual 3D platform** |  | 115d | 2009-10-29 | 2010-04-09 |  | 220d |  | UPF | 920h |
| 111 | 1.5.1 | **Analysis** |  | 35d | 2009-10-29 | 2009-12-16 |  | 220d |  |  |  |
| 112 | 1.5.1.1 | Animation script (screenplay) |  | 10d | 2009-10-29 | 2009-11-11 |  | 220d | 0d |  |  |
| 113 | 1.5.1.2 | **ActionScript development** |  | 10d | 2009-11-12 | 2009-11-25 |  | 332d |  |  |  |
| 114 | 1.5.1.2.1 | Entities |  | 10d | 2009-11-12 | 2009-11-25 | 112 | 332d |  |  |  |
| 115 | 1.5.1.2.2 | Basic commands |  | 10d | 2009-11-12 | 2009-11-25 | 112 | 332d |  |  |  |
| 116 | 1.5.1.3 | Storyboard (From campus to molecular structure) |  | 25d | 2009-11-12 | 2009-12-16 | 112 | 317d |  |  |  |
| 117 | 1.5.2 | **Development** |  | 70d | 2009-11-12 | 2010-02-19 |  | 220d |  |  |  |
| 118 | 1.5.2.1 | Object design frameworks |  | 10d | 2009-11-12 | 2009-11-25 | 112 | 220d | 0d |  |  |
| 119 | 1.5.2.2 | Object design libraries |  | 45d | 2009-11-26 | 2010-01-29 | 118 | 287d |  |  |  |
| 120 | 1.5.2.3 | complete object designs |  | 45d | 2009-11-26 | 2010-01-29 | 118 | 220d | 0d |  |  |
| 121 | 1.5.2.4 | Stage design |  | 15d | 2010-02-01 | 2010-02-19 | 120 | 220d | 0d |  |  |
| 122 | 1.5.3 | Development Complete - VR Platform | milestone | 0d | 2010-02-19 | 2010-02-19 | 121 | 272d |  |  |  |
| 123 | 1.5.4 | **Quality assurance** |  | 35d | 2010-02-22 | 2010-04-09 |  | 220d |  |  |  |
| 124 | 1.5.4.1 | **Test matrix** |  | 10d | 2010-02-22 | 2010-03-05 |  | 220d |  |  |  |
| 125 | 1.5.4.1.1 | Environment test matrix |  | 5d | 2010-02-22 | 2010-02-26 | 121 | 220d | 0d |  |  |
| 126 | 1.5.4.1.2 | Scientific test matrix |  | 5d | 2010-03-01 | 2010-03-05 | 125 | 220d | 0d |  |  |
| 127 | 1.5.4.2 | **Test period** |  | 25d | 2010-03-08 | 2010-04-09 |  | 220d |  |  |  |
| 128 | 1.5.4.2.1 | Environment test period |  | 25d | 2010-03-08 | 2010-04-09 | 126 | 220d | 0d |  |  |
| 129 | 1.5.4.2.2 | Scientific test period |  | 25d | 2010-03-08 | 2010-04-09 | 126 | 237d |  |  |  |
| 130 | 1.5.5 | Complete First Product Delivery - VR | milestone | 0d | 2010-04-09 | 2010-04-09 | 128 | 220d | 0d |  |  |
| 131 | 1.6 | **WP5 Integration** |  | 80d | 2010-03-22 | 2010-07-09 |  | 158d |  | O2H | 1856h |
| 132 | 1.6.1 | **Mobile - Web integration** |  | 25d | 2010-05-04 | 2010-06-07 |  | 196d |  | FL | 200h |
| 133 | 1.6.1.1 | XML communication |  | 10d | 2010-05-04 | 2010-05-17 | 89 | 196d | 0d |  |  |
| 134 | 1.6.1.2 | Security implementation |  | 10d | 2010-05-04 | 2010-05-17 | 89 | 196d | 0d |  |  |
| 135 | 1.6.1.3 | Mobile to Server communication |  | 10d | 2010-05-04 | 2010-05-17 | 89 | 196d | 0d |  |  |
| 136 | 1.6.1.4 | Server to Mobile communication |  | 10d | 2010-05-04 | 2010-05-17 | 89 | 196d | 0d |  |  |

Notes:
- 114: Not fully deployed to leave it for later
- 115: Not fully deployed to leave it for later
- 134: Described up

| ID | WBS | Task | Type | Duration | Start | Finish | Predecessors | Total slack | Free slack | Resources | Work |
| --- | --- | --- | --- | --- | --- | --- | --- | --- | --- | --- | --- |
| 137 | 1.6.1.5 | **Quality assurance** |  | 15d | 2010-05-18 | 2010-06-07 |  | 196d |  |  |  |
| 138 | 1.6.1.5.1 | Test Matrix |  | 5d | 2010-05-18 | 2010-05-24 | 133, 134, 135, 136 | 196d | 0d |  |  |
| 139 | 1.6.1.5.2 | Test Period |  | 10d | 2010-05-25 | 2010-06-07 | 138 | 196d | 0d |  |  |
| 140 | 1.6.2 | Platform Mobile Integration - Complete | milestone | 0d | 2010-06-07 | 2010-06-07 | 139 | 196d |  |  |  |
| 141 | 1.6.3 | **Social networks** |  | 15d | 2010-03-22 | 2010-04-09 |  | 237d |  |  |  |
| 142 | 1.6.3.1 | Facebook integration |  | 15d | 2010-03-22 | 2010-04-09 | 109 | 237d |  |  |  |
| 143 | 1.6.3.2 | Other networks |  | 15d | 2010-03-22 | 2010-04-09 | 109 | 237d | 0d |  |  |
| 144 | 1.6.4 | Platform Social Networking Integration - Complete | milestone | 0d | 2010-04-09 | 2010-04-09 | 143 | 237d |  |  |  |
| 145 | 1.6.5 | **Virtual 3D - Web integration** |  | 17d | 2010-04-12 | 2010-05-04 |  | 220d |  | O2H | 136h |
| 146 | 1.6.5.1 | **ActionScript - JavaScript** |  | 14d | 2010-04-12 | 2010-04-29 |  | 220d |  |  |  |
| 147 | 1.6.5.1.1 | Demo of integration |  | 14d | 2010-04-12 | 2010-04-29 | 130 | 223d |  |  |  |
| 148 | 1.6.5.1.2 | **Reuse of client side code** |  | 7d | 2010-04-12 | 2010-04-20 |  | 220d |  |  |  |
| 149 | 1.6.5.1.2.1 | Reuse of entities |  | 7d | 2010-04-12 | 2010-04-20 | 130 | 230d |  |  |  |
| 150 | 1.6.5.1.2.2 | Reuse of commands |  | 7d | 2010-04-12 | 2010-04-20 | 130 | 220d | 0d |  |  |
| 151 | 1.6.5.2 | **Quality Assurance** |  | 10d | 2010-04-21 | 2010-05-04 |  | 220d |  |  |  |
| 152 | 1.6.5.2.1 | Test matrix |  | 5d | 2010-04-21 | 2010-04-27 | 150 | 220d | 0d |  |  |
| 153 | 1.6.5.2.2 | Test period |  | 5d | 2010-04-28 | 2010-05-04 | 152 | 220d | 0d |  |  |
| 154 | 1.6.6 | Platform VR 3D Integration - Complete | milestone | 0d | 2010-05-04 | 2010-05-04 | 153 | 220d |  |  |  |
| 155 | 1.6.7 | **Semantic Web (HL7)** |  | 30d | 2010-03-22 | 2010-04-30 |  | 222d |  | ISOCO | 240h |
| 156 | 1.6.7.1 | Environment Setting |  | 10d | 2010-03-22 | 2010-04-02 | 108 | 222d | 0d |  |  |
| 157 | 1.6.7.2 | **Quality Assurance** |  | 20d | 2010-04-05 | 2010-04-30 |  | 222d |  |  |  |
| 158 | 1.6.7.2.1 | Test Matrix |  | 5d | 2010-04-05 | 2010-04-09 | 156 | 222d | 0d |  |  |
| 159 | 1.6.7.2.2 | Test Period |  | 15d | 2010-04-12 | 2010-04-30 | 158 | 222d | 0d |  |  |
| 160 | 1.6.8 | Platform Integration - Complete | milestone | 0d | 2010-04-30 | 2010-04-30 | 159 | 222d |  |  |  |

| ID | WBS | Task | Type | Duration | Start | Finish | Predecessors | Total slack | Free slack | Resources | Work |
| --- | --- | --- | --- | --- | --- | --- | --- | --- | --- | --- | --- |
| 161 | 1.6.9 | **WP6 Inference and reasoning** |  | 80d | 2010-03-22 | 2010-07-09 |  | 158d |  | UPF | 640h |
| 162 | 1.6.9.1 | **Analysis** |  | 5d | 2010-03-22 | 2010-03-26 |  | 158d |  |  |  |
| 163 | 1.6.9.1.1 | Database reference document |  | 5d | 2010-03-22 | 2010-03-26 | 108 | 247d |  |  |  |
| 164 | 1.6.9.1.2 | Knoweldge generation document |  | 5d | 2010-03-22 | 2010-03-26 | 108 | 158d | 0d |  |  |
| 165 | 1.6.9.2 | **Development** |  | 35d | 2010-03-29 | 2010-05-14 |  | 158d |  |  |  |
| 166 | 1.6.9.2.1 | Integration of databases |  | 5d | 2010-03-29 | 2010-04-02 | 164 | 158d | 0d |  |  |
| 167 | 1.6.9.2.2 | Interface for accessing information |  | 15d | 2010-04-05 | 2010-04-23 | 166 | 158d | 0d |  |  |
| 168 | 1.6.9.2.3 | Integration of new results |  | 15d | 2010-04-26 | 2010-05-14 | 167 | 158d | 0d |  |  |
| 169 | 1.6.9.2.4 | Development Complete - Inference Platform | milestone | 0d | 2010-05-14 | 2010-05-14 | 168 | 158d | 0d |  |  |
| 170 | 1.6.9.3 | **Quality Assurance** |  | 40d | 2010-05-17 | 2010-07-09 |  | 158d |  |  |  |
| 171 | 1.6.9.3.1 | **Test Matrix** |  | 10d | 2010-05-17 | 2010-05-28 |  | 158d |  |  |  |
| 172 | 1.6.9.3.1.1 | Clinician test matrix |  | 5d | 2010-05-17 | 2010-05-21 | 169 | 158d | 0d |  |  |
| 173 | 1.6.9.3.1.2 | Researcher test matrix |  | 5d | 2010-05-24 | 2010-05-28 | 172 | 158d | 0d |  |  |
| 174 | 1.6.9.3.1.3 | Platform Integration - Complete | milestone | 0d | 2010-05-28 | 2010-05-28 | 173 | 158d | 0d |  |  |
| 175 | 1.6.9.3.2 | **Test Period** |  | 30d | 2010-05-31 | 2010-07-09 |  | 158d |  |  |  |
| 176 | 1.6.9.3.2.1 | Clinician test period |  | 15d | 2010-05-31 | 2010-06-18 | 174 | 158d | 0d |  |  |
| 177 | 1.6.9.3.2.2 | Researcher test period |  | 15d | 2010-06-21 | 2010-07-09 | 176 | 158d | 0d |  |  |
| 178 | 1.7 | Platform Version 1 - Complete | milestone | 0d | 2010-07-09 | 2010-07-09 | 177 | 158d | 0d |  |  |
| 179 | 1.8 | Code versioning |  | 14d | 2010-07-12 | 2010-07-29 | 178 | 158d |  |  |  |
| 180 | 1.9 | **WP6 Patient management** |  | 292d? | 2009-10-29 | 2010-12-14 |  | 0d |  | AMFQ | 2336h |
| 181 | 1.9.1 | **Preparation** |  | 131d? | 2009-10-29 | 2010-05-03 |  | 0d |  |  |  |
| 182 | 1.9.1.1 | Protocol document |  | 25d | 2009-10-29 | 2009-12-02 |  | 0d |  |  |  |
| 183 | 1.9.1.2 | Clinician training |  | 60d | 2009-12-03 | 2010-02-26 | 182 | 0d |  |  |  |
| 184 | 1.9.1.3 | Condifentiality agreement |  | 30d | 2010-03-01 | 2010-04-09 | 183 | 0d |  |  |  |
| 185 | 1.9.1.4 | Patient selection |  | 15d | 2010-04-12 | 2010-04-30 | 184 | 0d |  |  |  |
| 186 | 1.9.1.5 | Prueba completa con unos individuos |  | 1d? | 2010-05-03 | 2010-05-03 | 185 | 0d |  |  |  |

Notes:
- 179: Installment of SVN or CVS
- 180: Deberia de ser WP7 y arreglar los otros
- 186: Atar antes de Test matrix y period

| ID | WBS | Task | Type | Duration | Start | Finish | Predecessors | Total slack | Free slack | Resources | Work |
| --- | --- | --- | --- | --- | --- | --- | --- | --- | --- | --- | --- |
| 187 | 1.9.2 | **Initiation** |  | 70d | 2010-05-04 | 2010-08-09 |  | 0d |  |  |  |
| 188 | 1.9.2.1 | Educational training |  | 15d | 2010-05-04 | 2010-05-24 | 89, 186 | 0d |  |  |  |
| 189 | 1.9.2.2 | Patient observation |  | 40d | 2010-05-25 | 2010-07-19 | 188 | 0d |  |  |  |
| 190 | 1.9.2.3 | Patient post observation |  | 15d | 2010-07-20 | 2010-08-09 | 189 | 0d |  |  |  |
| 191 | 1.9.3 | **Evaluation and control** |  | 91d? | 2010-08-10 | 2010-12-14 |  | 0d |  |  |  |
| 192 | 1.9.3.1 | Initial Analysis and Scientific treatment of data |  | 1d? | 2010-08-10 | 2010-08-10 | 190 | 0d |  |  |  |
| 193 | 1.9.3.2 | Scientific treatment of data |  | 60d | 2010-08-11 | 2010-11-02 | 192 | 0d |  |  |  |
| 194 | 1.9.3.3 | Clinician treatment of data |  | 30d | 2010-11-03 | 2010-12-14 | 193 | 0d |  |  |  |
| 195 | 1.10 | Platform Version 1.1 - Complete | milestone | 0d | 2010-12-14 | 2010-12-14 | 194 | 0d |  |  |  |
| 196 | 2 | **GP 1B Version 1.1 (revision)** |  | 352d | 2009-10-29 | 2011-03-08 |  | 0d |  |  | 4992h |
| 197 | 2.1 | **WP7 (revision)** |  | 352d | 2009-10-29 | 2011-03-08 |  | 0d |  | O2H | 2816h |
| 198 | 2.1.1 | **Analysis** |  | 20d | 2010-12-15 | 2011-01-11 |  | 0d |  |  |  |
| 199 | 2.1.1.1 | Modification Requests |  | 10d | 2010-12-15 | 2010-12-28 | 195 | 0d |  |  |  |
| 200 | 2.1.1.2 | Knoweldge generation document |  | 10d | 2010-12-29 | 2011-01-11 | 199 | 0d |  |  |  |
| 201 | 2.1.2 | **Development** |  | 30d | 2011-01-12 | 2011-02-22 |  | 0d |  |  |  |
| 202 | 2.1.2.1 | Modification Development |  | 15d | 2011-01-12 | 2011-02-01 | 200 | 0d |  |  |  |
| 203 | 2.1.2.2 | Integration of new results |  | 15d | 2011-02-02 | 2011-02-22 | 202 | 0d |  |  |  |
| 204 | 2.1.2.3 | Development Complete - VR Platform | milestone | 0d | 2011-02-22 | 2011-02-22 | 203 | 0d |  |  |  |
| 205 | 2.1.3 | **Quality Assurance** |  | 352d | 2009-10-29 | 2011-03-08 |  | 0d |  |  |  |
| 206 | 2.1.3.1 | **Test Matrix** |  | 10d | 2011-02-23 | 2011-03-08 |  | 0d |  |  |  |
| 207 | 2.1.3.1.1 | Clinician test matrix |  | 5d | 2011-02-23 | 2011-03-01 | 204 | 0d |  |  |  |
| 208 | 2.1.3.1.2 | Researcher test matrix |  | 5d | 2011-03-02 | 2011-03-08 | 207 | 0d |  |  |  |
| 209 | 2.1.3.2 | Platform Integration - Complete | milestone | 0d | 2011-03-08 | 2011-03-08 | 208 | 0d |  |  |  |
| 210 | 2.1.3.3 | **Test Period** |  | 30d | 2009-10-29 | 2009-12-09 |  | 50d |  |  |  |
| 211 | 2.1.3.3.1 | Clinician test period |  | 15d | 2009-10-29 | 2009-11-18 |  | 50d | 0d |  |  |
| 212 | 2.1.3.3.2 | Researcher test period |  | 15d | 2009-11-19 | 2009-12-09 | 211 | 50d | 0d |  |  |
| 213 | 2.2 | Platform Version 1.1 - Complete | milestone | 0d | 2009-12-09 | 2009-12-09 | 212 | 50d | 0d |  |  |

| ID | WBS | Task | Duration | Start | Finish | Predecessors | Total slack | Free slack | Constraint | Resources | Work |
| --- | --- | --- | --- | --- | --- | --- | --- | --- | --- | --- | --- |
| 214 | 2.3 | **WP8 Patient management** | 270d | 2009-12-10 | 2010-12-24 |  | 50d |  |  | AMFQ | 2160h |
| 215 | 2.3.1 | **Preparation** | 180d | 2009-12-10 | 2010-08-20 |  | 50d |  |  |  |  |
| 216 | 2.3.1.1 | Protocol document | 25d | 2009-12-10 | 2010-01-15 | 213 | 297d |  |  |  |  |
| 217 | 2.3.1.2 | Clinician training | 20d | 2009-12-10 | 2010-01-08 | 213 | 302d |  |  |  |  |
| 218 | 2.3.1.3 | Condifentiality agreement | 20d | 2009-12-10 | 2010-01-08 | 213 | 50d | 0d |  |  |  |
| 219 | 2.3.1.4 | **Development** | 70d | 2010-01-11 | 2010-04-16 |  | 50d |  |  |  |  |
| 220 | 2.3.1.4.1 | Educational training | 15d | 2010-01-11 | 2010-01-29 | 218 | 287d |  |  |  |  |
| 221 | 2.3.1.4.2 | Patient selection | 15d | 2010-01-11 | 2010-01-29 | 218 | 50d | 0d |  |  |  |
| 222 | 2.3.1.4.3 | Patient observation | 40d | 2010-02-01 | 2010-03-26 | 221 | 50d | 0d |  |  |  |
| 223 | 2.3.1.4.4 | Patient post observation | 15d | 2010-03-29 | 2010-04-16 | 222 | 50d | 0d |  |  |  |
| 224 | 2.3.1.5 | **Evaluation and control** | 90d | 2010-04-19 | 2010-08-20 |  | 50d |  |  |  |  |
| 225 | 2.3.1.5.1 | Scientific treatment of data | 60d | 2010-04-19 | 2010-07-09 | 223 | 50d | 0d |  |  |  |
| 226 | 2.3.1.5.2 | Clinician treatment of data | 30d | 2010-07-12 | 2010-08-20 | 225 | 50d | 0d |  |  |  |
| 227 | 2.3.2 | **Evaluation and control** | 90d | 2010-08-23 | 2010-12-24 |  | 50d |  |  |  |  |
| 228 | 2.3.2.1 | Scientific treatment of data | 60d | 2010-08-23 | 2010-11-12 | 226 | 50d | 0d |  |  |  |
| 229 | 2.3.2.2 | Clinician treatment of data | 30d | 2010-11-15 | 2010-12-24 | 228 | 50d | 0d |  |  |  |
| 230 | 2.4 | **Version 1.1 - Demonstration** | 2d | 2010-12-27 | 2010-12-28 |  | 50d |  |  | O2H | 16h |
| 231 | 2.4.1 | Internal Demonstration | 1d | 2010-12-27 | 2010-12-27 | 229 | 50d | 0d |  |  |  |
| 232 | 2.4.2 | Congress Demonstration | 1d | 2010-12-28 | 2010-12-28 | 231 | 50d |  |  |  |  |
| 233 | 3 | **GP Administrative** | 159d | 2009-08-07 | 2010-03-19 |  | 0d |  |  | O2H | 1272h |
| 234 | 3.1 | Initial Study | 60d | 2009-08-07 | 2009-10-29 |  | 0d |  | must finish on 2009-10-29 |  |  |
| 235 | 3.2 | Functional Analysis | 60d | 2009-08-07 | 2009-10-29 |  | 0d |  | must finish on 2009-10-29 |  |  |
| 236 | 3.3 | Business Plan | 60d | 2009-10-29 | 2010-01-22 |  | 252d | 0d |  |  |  |
| 237 | 3.4 | Difusion Plan | 40d | 2010-01-25 | 2010-03-19 | 236 | 252d |  |  |  |  |

| ID | WBS | Task | Duration | Start | Finish | Total slack | Resources | Work |
| --- | --- | --- | --- | --- | --- | --- | --- | --- |
| 238 | 4 | **Documentation management** | 100d | 2009-10-29 | 2010-03-19 | 252d | ASET | 800h |
| 239 | 4.1 | Memoria 1ra | 100d | 2009-10-29 | 2010-03-19 | 252d |  |  |
