# Planning_ActivA

Schedule from MS Project, 2009-08-07 to 2012-05-11.

## Calendars

- Standard: Mon-Fri 08:00-12:00, 13:00-17:00; Sat-Sun off. Exceptions (off unless hours are given): 2009-12-25 (Christmas), 2010-01-01 (New year).

## Resources

| Resource | Group |
| --- | --- |
| Dr. Luis Maiz | HRC |
| Dra. Maite Martinez | H12O |
| Esther Sabando | AMFQ |
| Alfonso Montero | AMFQ |
| Tamara del corral | AMFQ |
| Jordi Villa | UPF |
| Sinan Mutlu | UPF |
| James Dalton | UPF |
| Jordi Blecua | ISOCO |
| Miguel Tsuchiya | FL |
| Joan Plana | ASET |
| Lisbeth Hernández | O2H |
| Miguel Hernández | O2H |
| Jordi Vilaro | O2H |
| Ezequiel Cuesta | O2H |
| Doug Thurber | O2H |
| William Lalinde | O2H |
| FL |  |
| O2H |  |
| ISOCO |  |
| UPF |  |
| AMFQ |  |
| ASET |  |

## Schedule

| ID | WBS | Task | Type | Duration | Start | Finish | Predecessors | Total slack | Free slack | Constraint | Resources | Work |
| --- | --- | --- | --- | --- | --- | --- | --- | --- | --- | --- | --- | --- |
| 1 | 1 | **GP 1A Version 1 - ActivA Platform** |  | 340d | 2009-09-01 | 2010-12-22 |  | 0d |  |  |  | 8472h |
| 2 | 1.1 | **Analysis - Entire Platform Complete** |  | 57d | 2009-09-01 | 2009-11-18 |  | 0d |  |  |  |  |
| 3 | 1.1.1 | Specifications |  | 43d | 2009-09-01 | 2009-10-29 |  | 0d |  | start no earlier than 2009-09-01 |  |  |
| 4 | 1.1.2 | Analysis complete Entire Platform - General |  | 14d | 2009-10-30 | 2009-11-18 | 3 | 635d | 0d |  |  |  |
| 5 | 1.2 | **WP1 Mobile platform** |  | 75d | 2009-10-29 | 2010-02-12 |  | 0d |  |  | FL; O2H | 2480h |
| 6 | 1.2.1 | **Analysis - Mobile Platform Complete** |  | 15d | 2009-10-29 | 2009-11-18 |  | 456d |  |  | O2H | 120h |
| 7 | 1.2.1.1 | Specifications |  | 10d | 2009-10-30 | 2009-11-12 | 3 | 455d | 0d | start no earlier than 2009-09-04 |  |  |
| 8 | 1.2.1.2 | Analysis Mobile Platform |  | 15d | 2009-10-29 | 2009-11-18 |  | 645d |  |  |  |  |
| 9 | 1.2.2 | **Definition Mobile Applications** |  | 15d | 2009-10-29 | 2009-11-18 |  | 0d |  |  | O2H | 120h |
| 10 | 1.2.2.1 | Specifications |  | 15d | 2009-10-29 | 2009-11-18 |  | 0d |  | start no earlier than 2009-10-29 |  |  |
| 11 | 1.2.2.2 | Demo |  | 2d | 2009-11-10 | 2009-11-11 |  | 650d |  | start no earlier than 2009-11-10 |  |  |
| 12 | 1.2.3 | **Equipment Acquisition** |  | 10d | 2009-11-19 | 2009-12-02 |  | 635d |  |  | FL | 80h |
| 13 | 1.2.3.1 | Acquisition |  | 5d | 2009-11-19 | 2009-11-25 | 4 | 635d | 0d |  |  |  |
| 14 | 1.2.3.2 | Installation |  | 5d | 2009-11-26 | 2009-12-02 | 13 | 635d |  |  |  |  |
| 15 | 1.2.4 | **iPhone development (from other project)** |  | 60d | 2009-11-19 | 2010-02-12 |  | 0d |  |  | FL | 960h |
| 16 | 1.2.4.1 | Smart questionaries |  | 45d | 2009-11-19 | 2010-01-22 | 10 | 595d | 0d | finish no earlier than 2009-12-31 |  |  |
| 17 | 1.2.4.2 | Measurements |  | 45d | 2009-11-19 | 2010-01-22 | 10 | 595d | 0d |  |  |  |
| 18 | 1.2.4.3 | Calendar and alarm |  | 45d | 2009-11-19 | 2010-01-22 | 10 | 595d | 0d |  |  |  |
| 19 | 1.2.4.4 | Security |  | 14d | 2009-11-19 | 2009-12-08 | 10 | 631d |  |  |  |  |
| 20 | 1.2.4.5 | Complete Build Version 1 application |  | 5d | 2010-01-25 | 2010-01-29 | 16, 17, 18 | 595d |  | start no earlier than 2009-10-29 |  |  |
| 21 | 1.2.4.6 | Implementation document |  | 50d | 2009-11-19 | 2010-01-29 | 10 | 0d |  | must finish on 2010-01-29 |  |  |
| 22 | 1.2.4.7 | User manual |  | 15d | 2010-01-11 | 2010-01-29 | 10 | 0d |  | must finish on 2010-01-29 |  |  |
| 23 | 1.2.4.8 | **Android Development** |  | 50d | 2009-11-19 | 2010-01-29 |  | 0d |  |  | FL | 400h |
| 24 | 1.2.4.8.1 | Smart questionaries |  | 45d | 2009-11-19 | 2010-01-22 | 10 | 595d | 0d | finish no earlier than 2009-12-31 |  |  |
| 25 | 1.2.4.8.2 | Measurements |  | 45d | 2009-11-19 | 2010-01-22 | 10 | 595d | 0d |  |  |  |
| 26 | 1.2.4.8.3 | Calendar and alarm |  | 45d | 2009-11-19 | 2010-01-22 | 10 | 595d | 0d |  |  |  |
| 27 | 1.2.4.8.4 | Security |  | 14d | 2009-11-19 | 2009-12-08 | 10 | 631d |  |  |  |  |
| 28 | 1.2.4.8.5 | Complete Build Version 1 application |  | 5d | 2010-01-25 | 2010-01-29 | 24, 25, 26 | 595d |  | start no earlier than 2009-10-29 |  |  |
| 29 | 1.2.4.8.6 | Implementation document |  | 50d | 2009-11-19 | 2010-01-29 | 10 | 0d |  | must finish on 2010-01-29 |  |  |
| 30 | 1.2.4.8.7 | User manual |  | 15d | 2010-01-11 | 2010-01-29 | 10 | 0d |  | must finish on 2010-01-29 |  |  |
| 31 | 1.2.4.9 | Development Complete - Mobile Platform | milestone | 0d | 2010-01-29 | 2010-01-29 | 30 | 585d | 0d |  |  |  |

Notes:
- 1: Although a cascade way is shown, the methodology must be iterative by prototypying
- 5: Although a cascade way is shown, the methodology must be iterative by prototypying
- 12: Hardware refers to the acquirement, mount of devices and installation
- 20: Documentation, iterative through development
- 21: Documentation, iterative through development
- 22: Documentation
- 28: Documentation, iterative through development
- 29: Documentation, iterative through development
- 30: Documentation

| ID | WBS | Task | Type | Duration | Start | Finish | Predecessors | Total slack | Free slack | Constraint | Resources | Work |
| --- | --- | --- | --- | --- | --- | --- | --- | --- | --- | --- | --- | --- |
| 32 | 1.2.4.10 | **Quality assurance** |  | 10d | 2010-02-01 | 2010-02-12 |  | 585d |  |  | FL | 80h |
| 33 | 1.2.4.10.1 | Test Matrix |  | 5d | 2010-02-01 | 2010-02-05 | 31 | 585d | 0d |  |  |  |
| 34 | 1.2.4.10.2 | Test Quality assurance iPhone |  | 5d | 2010-02-08 | 2010-02-12 | 33 | 585d | 0d |  |  |  |
| 35 | 1.2.4.10.3 | Test Quality assurance Android |  | 5d | 2010-02-08 | 2010-02-12 | 33 | 585d | 0d |  |  |  |
| 36 | 1.2.5 | Complete First Product Delivery - MP | milestone | 0d | 2010-02-12 | 2010-02-12 | 34, 35 | 585d |  |  |  |  |
| 37 | 1.3 | **WP2 Web platform** |  | 125d | 2009-10-30 | 2010-04-26 |  | 0d |  |  |  | 120h |
| 38 | 1.3.1 | **Analysis** |  | 15d | 2009-10-30 | 2009-11-19 |  | 0d |  |  | O2H | 120h |
| 39 | 1.3.1.1 | Architecture document update |  | 15d | 2009-10-30 | 2009-11-19 | 3 | 0d |  | finish no earlier than 2009-10-02 |  |  |
| 40 | 1.3.1.2 | Document delivery | milestone | 0d | 2009-11-19 | 2009-11-19 | 39 | 0d |  |  |  |  |
| 41 | 1.3.2 | **Development** |  | 110d | 2009-11-20 | 2010-04-26 | 38 | 0d |  |  |  |  |
| 42 | 1.3.2.1 | **Hardware** |  | 70d | 2009-11-20 | 2010-03-01 |  | 0d |  |  |  |  |
| 43 | 1.3.2.1.1 | Demo server installation |  | 10d | 2009-11-20 | 2009-12-03 | 3 | 0d |  |  |  |  |
| 44 | 1.3.2.1.2 | Load balancing servers |  | 30d | 2009-12-04 | 2010-01-18 | 43 | 574d | 0d |  |  |  |
| 45 | 1.3.2.1.3 | Disperse database |  | 30d | 2010-01-19 | 2010-03-01 | 44 | 574d |  |  |  |  |
| 46 | 1.3.2.2 | **Server side development** |  | 62d | 2009-12-04 | 2010-03-03 | 43 | 0d |  |  |  |  |
| 47 | 1.3.2.2.1 | Business objects (EJB3 Entities) |  | 20d | 2009-12-04 | 2010-01-04 | 40 | 0d |  | finish no earlier than 2009-10-30 |  |  |
| 48 | 1.3.2.2.2 | Business methods (EJB3 Sessions) |  | 20d | 2010-01-05 | 2010-02-01 | 47 | 0d |  |  |  |  |
| 49 | 1.3.2.2.3 | Client server communication |  | 20d | 2009-12-04 | 2010-01-04 | 40 | 614d |  |  |  |  |
| 50 | 1.3.2.2.4 | Client side communication (GWT RPC) |  | 20d | 2009-12-04 | 2010-01-04 | 40 | 594d | 0d |  |  |  |
| 51 | 1.3.2.2.5 | Client side communication (GWT JSON) |  | 20d | 2010-01-05 | 2010-02-01 | 50 | 594d |  |  |  |  |
| 52 | 1.3.2.2.6 | Web services (SOAP XML) |  | 22d | 2010-02-02 | 2010-03-03 | 48 | 0d |  |  |  |  |
| 53 | 1.3.2.3 | **Client side development** |  | 102d | 2009-11-20 | 2010-04-14 |  | 17d |  |  |  |  |
| 54 | 1.3.2.3.1 | Client Business objects |  | 21d | 2009-11-20 | 2009-12-18 | 40 | 41d | 24d |  |  |  |
| 55 | 1.3.2.3.2 | Client UI Events |  | 20d | 2009-11-20 | 2009-12-17 | 40 | 17d | 0d |  |  |  |
| 56 | 1.3.2.3.3 | Client widgets |  | 25d | 2009-12-18 | 2010-01-25 | 55 | 17d | 0d |  |  |  |
| 57 | 1.3.2.3.4 | Client Services |  | 10d | 2010-01-26 | 2010-02-08 | 54, 55, 56 | 17d |  |  |  |  |
| 58 | 1.3.2.3.5 | Web Develpoment end to end consolidation |  | 10d | 2010-03-04 | 2010-03-17 | 52, 57 | 0d |  |  |  |  |
| 59 | 1.3.2.3.6 | Internatioalization and Accesibility |  | 20d | 2010-03-18 | 2010-04-14 | 58 | 542d |  |  |  |  |

Notes:
- 34: Test Matrix is already developed
- 35: Test Matrix is already developed
- 36: Used to take patient measurements
- 39: This architecture document is not constrained only to the web platform.
- 43: Initially only one server is needed
- 44: For an scalable choice multiple servers must be mounted
- 45: The database must be dispersed as well to avoid being the bottleneck
- 47: Objetos de negocio
- 48: Métodos de negocio
- 51: Additional sites not using RPC
- 56: Will be replaced by the 3D UI.

| ID | WBS | Task | Type | Duration | Start | Finish | Predecessors | Total slack | Free slack | Constraint |
| --- | --- | --- | --- | --- | --- | --- | --- | --- | --- | --- |
| 60 | 1.3.2.4 | **eCommerce** |  | 76d | 2009-11-20 | 2010-03-09 |  | 6d |  |  |
| 61 | 1.3.2.4.1 | Architecture document update |  | 15d | 2009-11-20 | 2009-12-10 | 40 | 6d | 0d | finish no earlier than 2009-10-02 |
| 62 | 1.3.2.4.2 | Document delivery |  | 1d | 2009-12-11 | 2009-12-11 | 61 | 6d | 0d |  |
| 63 | 1.3.2.4.3 | Interface implementation |  | 45d | 2009-12-14 | 2010-02-16 | 62 | 6d | 0d |  |
| 64 | 1.3.2.4.4 | Transaction |  | 15d | 2010-02-17 | 2010-03-09 | 63 | 6d |  |  |
| 65 | 1.3.2.5 | **Security** |  | 76d | 2009-11-20 | 2010-03-09 |  | 6d |  |  |
| 66 | 1.3.2.5.1 | Architecture document update |  | 15d | 2009-11-20 | 2009-12-10 | 40 | 6d | 0d | finish no earlier than 2009-10-02 |
| 67 | 1.3.2.5.2 | Document delivery |  | 1d | 2009-12-11 | 2009-12-11 | 66 | 6d | 0d |  |
| 68 | 1.3.2.5.3 | SSL Encryption (HTTPS) |  | 45d | 2009-12-14 | 2010-02-16 | 67 | 6d | 0d |  |
| 69 | 1.3.2.5.4 | SSL Certificates (Verisign) |  | 15d | 2010-02-17 | 2010-03-09 | 68 | 6d |  |  |
| 70 | 1.3.2.6 | **Semantic Web (HL7)** |  | 110d | 2009-11-20 | 2010-04-26 |  | 534d |  |  |
| 71 | 1.3.2.6.1 | **Analysis** |  | 20d | 2009-11-20 | 2009-12-17 |  | 534d |  |  |
| 72 | 1.3.2.6.1.1 | Architecture |  | 20d | 2009-11-20 | 2009-12-17 | 7 | 534d | 0d |  |
| 73 | 1.3.2.6.2 | **Development** |  | 60d | 2009-12-18 | 2010-03-15 |  | 534d |  |  |
| 74 | 1.3.2.6.2.1 | Web services for interfaces |  | 60d | 2009-12-18 | 2010-03-15 | 72 | 534d | 0d |  |
| 75 | 1.3.2.6.3 | **Quality Assurance** |  | 30d | 2010-03-16 | 2010-04-26 |  | 534d |  |  |
| 76 | 1.3.2.6.3.1 | Test Matrix |  | 5d | 2010-03-16 | 2010-03-22 | 74 | 534d | 0d |  |
| 77 | 1.3.2.6.3.2 | Test Period |  | 25d | 2010-03-23 | 2010-04-26 | 76 | 534d |  |  |
| 78 | 1.3.3 | Implementation document |  | 110d | 2009-11-20 | 2010-04-26 | 40 | 534d |  |  |
| 79 | 1.3.4 | Development Complete - Web Platform | milestone | 0d | 2010-03-17 | 2010-03-17 | 52, 58, 64, 69 | 0d |  |  |
| 80 | 1.3.5 | **Quality assurance** |  | 20d | 2010-03-18 | 2010-04-14 |  | 0d |  |  |
| 81 | 1.3.5.1 | **Test matrix** |  | 5d | 2010-03-18 | 2010-03-24 |  | 0d |  |  |
| 82 | 1.3.5.1.1 | Patient matrix |  | 5d | 2010-03-18 | 2010-03-24 | 79 | 542d | 0d |  |
| 83 | 1.3.5.1.2 | Clinician matrix |  | 5d | 2010-03-18 | 2010-03-24 | 79 | 557d |  |  |
| 84 | 1.3.5.1.3 | Researcher matrix |  | 5d | 2010-03-18 | 2010-03-24 | 79 | 557d |  |  |
| 85 | 1.3.5.1.4 | Technical matrix |  | 5d | 2010-03-18 | 2010-03-24 | 79 | 0d |  |  |

Notes:
- 61: This architecture document is not constrained only to the web platform.
- 66: This architecture document is not constrained only to the web platform.
- 78: This implementation document is not constrained only to the web platform.

| ID | WBS | Task | Type | Duration | Start | Finish | Predecessors | Total slack | Free slack | Resources | Work |
| --- | --- | --- | --- | --- | --- | --- | --- | --- | --- | --- | --- |
| 86 | 1.3.5.2 | **Test period** |  | 15d | 2010-03-25 | 2010-04-14 |  | 0d |  |  |  |
| 87 | 1.3.5.2.1 | Patient test |  | 5d | 2010-03-25 | 2010-03-31 | 82 | 542d | 0d |  |  |
| 88 | 1.3.5.2.2 | Clinician test |  | 5d | 2010-04-01 | 2010-04-07 | 87 | 542d | 0d |  |  |
| 89 | 1.3.5.2.3 | Researcher tests |  | 5d | 2010-04-08 | 2010-04-14 | 88 | 542d |  |  |  |
| 90 | 1.3.5.2.4 | Technical tests |  | 15d | 2010-03-25 | 2010-04-14 | 85 | 0d |  |  |  |
| 91 | 1.3.6 | Complete First Product Delivery - WP | milestone | 0d | 2010-04-14 | 2010-04-14 | 90 | 517d | 0d |  |  |
| 92 | 1.4 | **WP3 Social Networking platform** |  | 100d | 2009-11-13 | 2010-04-05 |  | 455d |  | ISOCO | 800h |
| 93 | 1.4.1 | **Analysis** |  | 65d | 2009-11-13 | 2010-02-15 |  | 455d |  |  |  |
| 94 | 1.4.1.1 | Social Network Framework |  | 20d | 2009-11-13 | 2009-12-10 | 7 | 455d | 0d |  |  |
| 95 | 1.4.1.2 | Entities |  | 10d | 2009-12-11 | 2009-12-24 | 94 | 455d | 0d |  |  |
| 96 | 1.4.1.3 | Basic commands |  | 10d | 2009-12-28 | 2010-01-11 | 95 | 455d | 0d |  |  |
| 97 | 1.4.1.4 | Social Network Integration (demo) |  | 25d | 2010-01-12 | 2010-02-15 | 96 | 455d | 0d |  |  |
| 98 | 1.4.2 | **Development** |  | 30d | 2010-02-16 | 2010-03-29 |  | 455d |  |  |  |
| 99 | 1.4.2.1 | Social Network Integration |  | 20d | 2010-02-16 | 2010-03-15 | 97 | 564d |  |  |  |
| 100 | 1.4.2.2 | Social Network Tools |  | 30d | 2010-02-16 | 2010-03-29 | 97 | 554d |  |  |  |
| 101 | 1.4.2.3 | Social Network App integration |  | 20d | 2010-02-16 | 2010-03-15 | 97 | 455d | 0d |  |  |
| 102 | 1.4.2.4 | RSS Feed |  | 15d | 2010-02-16 | 2010-03-08 | 97 | 569d |  |  |  |
| 103 | 1.4.3 | Development Complete - SN Platform | milestone | 0d | 2010-03-15 | 2010-03-15 | 101 | 455d | 0d |  |  |
| 104 | 1.4.4 | **Quality assurance** |  | 15d | 2010-03-16 | 2010-04-05 |  | 455d |  |  |  |
| 105 | 1.4.4.1 | **Test matrix** |  | 10d | 2010-03-16 | 2010-03-29 |  | 455d |  |  |  |
| 106 | 1.4.4.1.1 | Environment test matrix |  | 5d | 2010-03-16 | 2010-03-22 | 103 | 455d | 0d |  |  |
| 107 | 1.4.4.1.2 | Scientific test matrix |  | 5d | 2010-03-23 | 2010-03-29 | 106 | 455d | 0d |  |  |
| 108 | 1.4.4.2 | **Test period** |  | 5d | 2010-03-30 | 2010-04-05 |  | 455d |  |  |  |
| 109 | 1.4.4.2.1 | Environment test period |  | 5d | 2010-03-30 | 2010-04-05 | 107 | 549d |  |  |  |
| 110 | 1.4.4.2.2 | Scientific test period |  | 5d | 2010-03-30 | 2010-04-05 | 107 | 455d | 0d |  |  |
| 111 | 1.4.5 | Complete First Product Delivery - SN | milestone | 0d | 2010-04-05 | 2010-04-05 | 110 | 534d | 0d |  |  |

Notes:
- 87: Do not mix the testing phase named here with the WP Patient Management, they are not related
- 95: Not fully deployed to leave it for later
- 96: Not fully deployed to leave it for later

| ID | WBS | Task | Type | Duration | Start | Finish | Predecessors | Total slack | Free slack | Resources | Work |
| --- | --- | --- | --- | --- | --- | --- | --- | --- | --- | --- | --- |
| 112 | 1.5 | **WP4 Virtual 3D platform** |  | 115d | 2009-11-13 | 2010-04-26 |  | 517d |  | UPF | 920h |
| 113 | 1.5.1 | **Analysis** |  | 35d | 2009-11-13 | 2010-01-04 |  | 517d |  |  |  |
| 114 | 1.5.1.1 | Animation script (screenplay) |  | 10d | 2009-11-13 | 2009-11-26 | 7 | 517d | 0d |  |  |
| 115 | 1.5.1.2 | **ActionScript development** |  | 10d | 2009-11-27 | 2009-12-10 |  | 629d |  |  |  |
| 116 | 1.5.1.2.1 | Entities |  | 10d | 2009-11-27 | 2009-12-10 | 114 | 629d |  |  |  |
| 117 | 1.5.1.2.2 | Basic commands |  | 10d | 2009-11-27 | 2009-12-10 | 114 | 629d |  |  |  |
| 118 | 1.5.1.3 | Storyboard (From campus to molecular structure) |  | 25d | 2009-11-27 | 2010-01-04 | 114 | 614d |  |  |  |
| 119 | 1.5.2 | **Development** |  | 70d | 2009-11-27 | 2010-03-08 |  | 517d |  |  |  |
| 120 | 1.5.2.1 | Object design frameworks |  | 10d | 2009-11-27 | 2009-12-10 | 114 | 517d | 0d |  |  |
| 121 | 1.5.2.2 | Object design libraries |  | 45d | 2009-12-11 | 2010-02-15 | 120 | 584d |  |  |  |
| 122 | 1.5.2.3 | complete object designs |  | 45d | 2009-12-11 | 2010-02-15 | 120 | 517d | 0d |  |  |
| 123 | 1.5.2.4 | Stage design |  | 15d | 2010-02-16 | 2010-03-08 | 122 | 517d | 0d |  |  |
| 124 | 1.5.3 | Development Complete - VR Platform | milestone | 0d | 2010-03-08 | 2010-03-08 | 123 | 569d |  |  |  |
| 125 | 1.5.4 | **Quality assurance** |  | 35d | 2010-03-09 | 2010-04-26 |  | 517d |  |  |  |
| 126 | 1.5.4.1 | **Test matrix** |  | 10d | 2010-03-09 | 2010-03-22 |  | 517d |  |  |  |
| 127 | 1.5.4.1.1 | Environment test matrix |  | 5d | 2010-03-09 | 2010-03-15 | 123 | 517d | 0d |  |  |
| 128 | 1.5.4.1.2 | Scientific test matrix |  | 5d | 2010-03-16 | 2010-03-22 | 127 | 517d | 0d |  |  |
| 129 | 1.5.4.2 | **Test period** |  | 25d | 2010-03-23 | 2010-04-26 |  | 517d |  |  |  |
| 130 | 1.5.4.2.1 | Environment test period |  | 25d | 2010-03-23 | 2010-04-26 | 128 | 517d | 0d |  |  |
| 131 | 1.5.4.2.2 | Scientific test period |  | 25d | 2010-03-23 | 2010-04-26 | 128 | 534d |  |  |  |
| 132 | 1.5.5 | Complete First Product Delivery - VR | milestone | 0d | 2010-04-26 | 2010-04-26 | 130 | 517d | 0d |  |  |
| 133 | 1.6 | **WP5 Integration** |  | 80d | 2010-04-06 | 2010-07-26 |  | 455d |  | O2H | 1856h |
| 134 | 1.6.1 | **Mobile - Web integration** |  | 25d | 2010-04-15 | 2010-05-19 |  | 517d |  | FL | 200h |
| 135 | 1.6.1.1 | XML communication |  | 10d | 2010-04-15 | 2010-04-28 | 91 | 517d | 0d |  |  |
| 136 | 1.6.1.2 | Security implementation |  | 10d | 2010-04-15 | 2010-04-28 | 91 | 517d | 0d |  |  |
| 137 | 1.6.1.3 | Mobile to Server communication |  | 10d | 2010-04-15 | 2010-04-28 | 91 | 517d | 0d |  |  |
| 138 | 1.6.1.4 | Server to Mobile communication |  | 10d | 2010-04-15 | 2010-04-28 | 91 | 517d | 0d |  |  |

Notes:
- 116: Not fully deployed to leave it for later
- 117: Not fully deployed to leave it for later
- 136: Described up

| ID | WBS | Task | Type | Duration | Start | Finish | Predecessors | Total slack | Free slack | Resources | Work |
| --- | --- | --- | --- | --- | --- | --- | --- | --- | --- | --- | --- |
| 139 | 1.6.1.5 | **Quality assurance** |  | 15d | 2010-04-29 | 2010-05-19 |  | 517d |  |  |  |
| 140 | 1.6.1.5.1 | Test Matrix |  | 5d | 2010-04-29 | 2010-05-05 | 135, 136, 137, 138 | 517d | 0d |  |  |
| 141 | 1.6.1.5.2 | Test Period |  | 10d | 2010-05-06 | 2010-05-19 | 140 | 517d | 0d |  |  |
| 142 | 1.6.2 | Platform Mobile Integration - Complete | milestone | 0d | 2010-05-19 | 2010-05-19 | 141 | 517d |  |  |  |
| 143 | 1.6.3 | **Social networks** |  | 15d | 2010-04-06 | 2010-04-26 |  | 534d |  |  |  |
| 144 | 1.6.3.1 | Facebook integration |  | 15d | 2010-04-06 | 2010-04-26 | 111 | 534d |  |  |  |
| 145 | 1.6.3.2 | Other networks |  | 15d | 2010-04-06 | 2010-04-26 | 111 | 534d | 0d |  |  |
| 146 | 1.6.4 | Platform Social Networking Integration - Complete | milestone | 0d | 2010-04-26 | 2010-04-26 | 145 | 534d |  |  |  |
| 147 | 1.6.5 | **Virtual 3D - Web integration** |  | 17d | 2010-04-27 | 2010-05-19 |  | 517d |  | O2H | 136h |
| 148 | 1.6.5.1 | **ActionScript - JavaScript** |  | 14d | 2010-04-27 | 2010-05-14 |  | 517d |  |  |  |
| 149 | 1.6.5.1.1 | Demo of integration |  | 14d | 2010-04-27 | 2010-05-14 | 132 | 520d |  |  |  |
| 150 | 1.6.5.1.2 | **Reuse of client side code** |  | 7d | 2010-04-27 | 2010-05-05 |  | 517d |  |  |  |
| 151 | 1.6.5.1.2.1 | Reuse of entities |  | 7d | 2010-04-27 | 2010-05-05 | 132 | 527d |  |  |  |
| 152 | 1.6.5.1.2.2 | Reuse of commands |  | 7d | 2010-04-27 | 2010-05-05 | 132 | 517d | 0d |  |  |
| 153 | 1.6.5.2 | **Quality Assurance** |  | 10d | 2010-05-06 | 2010-05-19 |  | 517d |  |  |  |
| 154 | 1.6.5.2.1 | Test matrix |  | 5d | 2010-05-06 | 2010-05-12 | 152 | 517d | 0d |  |  |
| 155 | 1.6.5.2.2 | Test period |  | 5d | 2010-05-13 | 2010-05-19 | 154 | 517d | 0d |  |  |
| 156 | 1.6.6 | Platform VR 3D Integration - Complete | milestone | 0d | 2010-05-19 | 2010-05-19 | 155 | 517d |  |  |  |
| 157 | 1.6.7 | **Semantic Web (HL7)** |  | 30d | 2010-04-06 | 2010-05-17 |  | 519d |  | ISOCO | 240h |
| 158 | 1.6.7.1 | Environment Setting |  | 10d | 2010-04-06 | 2010-04-19 | 110 | 519d | 0d |  |  |
| 159 | 1.6.7.2 | **Quality Assurance** |  | 20d | 2010-04-20 | 2010-05-17 |  | 519d |  |  |  |
| 160 | 1.6.7.2.1 | Test Matrix |  | 5d | 2010-04-20 | 2010-04-26 | 158 | 519d | 0d |  |  |
| 161 | 1.6.7.2.2 | Test Period |  | 15d | 2010-04-27 | 2010-05-17 | 160 | 519d | 0d |  |  |
| 162 | 1.6.8 | Platform Integration - Complete | milestone | 0d | 2010-05-17 | 2010-05-17 | 161 | 519d |  |  |  |

| ID | WBS | Task | Type | Duration | Start | Finish | Predecessors | Total slack | Free slack | Resources | Work |
| --- | --- | --- | --- | --- | --- | --- | --- | --- | --- | --- | --- |
| 163 | 1.6.9 | **WP6 Inference and reasoning** |  | 80d | 2010-04-06 | 2010-07-26 |  | 455d |  | UPF | 640h |
| 164 | 1.6.9.1 | **Analysis** |  | 5d | 2010-04-06 | 2010-04-12 |  | 455d |  |  |  |
| 165 | 1.6.9.1.1 | Database reference document |  | 5d | 2010-04-06 | 2010-04-12 | 110 | 544d |  |  |  |
| 166 | 1.6.9.1.2 | Knoweldge generation document |  | 5d | 2010-04-06 | 2010-04-12 | 110 | 455d | 0d |  |  |
| 167 | 1.6.9.2 | **Development** |  | 35d | 2010-04-13 | 2010-05-31 |  | 455d |  |  |  |
| 168 | 1.6.9.2.1 | Integration of databases |  | 5d | 2010-04-13 | 2010-04-19 | 166 | 455d | 0d |  |  |
| 169 | 1.6.9.2.2 | Interface for accessing information |  | 15d | 2010-04-20 | 2010-05-10 | 168 | 455d | 0d |  |  |
| 170 | 1.6.9.2.3 | Integration of new results |  | 15d | 2010-05-11 | 2010-05-31 | 169 | 455d | 0d |  |  |
| 171 | 1.6.9.2.4 | Development Complete - Inference Platform | milestone | 0d | 2010-05-31 | 2010-05-31 | 170 | 455d | 0d |  |  |
| 172 | 1.6.9.3 | **Quality Assurance** |  | 40d | 2010-06-01 | 2010-07-26 |  | 455d |  |  |  |
| 173 | 1.6.9.3.1 | **Test Matrix** |  | 10d | 2010-06-01 | 2010-06-14 |  | 455d |  |  |  |
| 174 | 1.6.9.3.1.1 | Clinician test matrix |  | 5d | 2010-06-01 | 2010-06-07 | 171 | 455d | 0d |  |  |
| 175 | 1.6.9.3.1.2 | Researcher test matrix |  | 5d | 2010-06-08 | 2010-06-14 | 174 | 455d | 0d |  |  |
| 176 | 1.6.9.3.1.3 | Platform Integration - Complete | milestone | 0d | 2010-06-14 | 2010-06-14 | 175 | 455d | 0d |  |  |
| 177 | 1.6.9.3.2 | **Test Period** |  | 30d | 2010-06-15 | 2010-07-26 |  | 455d |  |  |  |
| 178 | 1.6.9.3.2.1 | Clinician test period |  | 15d | 2010-06-15 | 2010-07-05 | 176 | 455d | 0d |  |  |
| 179 | 1.6.9.3.2.2 | Researcher test period |  | 15d | 2010-07-06 | 2010-07-26 | 178 | 455d | 0d |  |  |
| 180 | 1.7 | Platform Version 1 - Complete | milestone | 0d | 2010-07-26 | 2010-07-26 | 179 | 455d |  |  |  |
| 181 | 1.8 | Code versioning |  | 14d | 2010-07-27 | 2010-08-13 | 180 | 455d |  |  |  |
| 182 | 1.9 | **WP6 Patient management** |  | 287d | 2009-11-13 | 2010-12-22 |  | 107d |  | AMFQ | 2296h |
| 183 | 1.9.1 | **Preparation** |  | 127d | 2009-11-13 | 2010-05-12 |  | 107d |  |  |  |
| 184 | 1.9.1.1 | Protocol document |  | 25d | 2009-11-13 | 2009-12-17 | 7 | 624d |  |  |  |
| 185 | 1.9.1.2 | Clinician training |  | 20d | 2010-04-15 | 2010-05-12 | 90 | 522d |  |  |  |
| 186 | 1.9.1.3 | Condifentiality agreement |  | 20d | 2010-04-15 | 2010-05-12 | 90 | 0d |  |  |  |

Notes:
- 181: Installment of SVN or CVS

| ID | WBS | Task | Type | Duration | Start | Finish | Predecessors | Total slack | Resources | Work |
| --- | --- | --- | --- | --- | --- | --- | --- | --- | --- | --- |
| 187 | 1.9.2 | **Development** |  | 70d | 2010-05-13 | 2010-08-18 |  | 0d |  |  |
| 188 | 1.9.2.1 | Educational training |  | 15d | 2010-05-13 | 2010-06-02 | 186 | 507d |  |  |
| 189 | 1.9.2.2 | Patient selection |  | 15d | 2010-05-13 | 2010-06-02 | 186 | 0d |  |  |
| 190 | 1.9.2.3 | Patient observation |  | 40d | 2010-06-03 | 2010-07-28 | 189 | 0d |  |  |
| 191 | 1.9.2.4 | Patient post observation |  | 15d | 2010-07-29 | 2010-08-18 | 190 | 0d |  |  |
| 192 | 1.9.3 | **Evaluation and control** |  | 90d | 2010-08-19 | 2010-12-22 |  | 0d |  |  |
| 193 | 1.9.3.1 | Scientific treatment of data |  | 60d | 2010-08-19 | 2010-11-10 | 191 | 0d |  |  |
| 194 | 1.9.3.2 | Clinician treatment of data |  | 30d | 2010-11-11 | 2010-12-22 | 193 | 0d |  |  |
| 195 | 1.9.3.3 | Platform Version 1.1 - Complete | milestone | 0d | 2010-12-22 | 2010-12-22 | 194 | 0d |  |  |
| 196 | 2 | **GP 1B Version 1.1 (revision)** |  | 362d | 2010-12-23 | 2012-05-11 |  | 0d |  | 2896h |
| 197 | 2.1 | **WP7 (revision)** |  | 90d | 2010-12-23 | 2011-04-27 |  | 0d | O2H | 720h |
| 198 | 2.1.1 | **Analysis** |  | 20d | 2010-12-23 | 2011-01-19 |  | 0d |  |  |
| 199 | 2.1.1.1 | Modification Requests |  | 10d | 2010-12-23 | 2011-01-05 | 195 | 0d |  |  |
| 200 | 2.1.1.2 | Knoweldge generation document |  | 10d | 2011-01-06 | 2011-01-19 | 199 | 0d |  |  |
| 201 | 2.1.2 | **Development** |  | 30d | 2011-01-20 | 2011-03-02 |  | 0d |  |  |
| 202 | 2.1.2.1 | Modification Development |  | 15d | 2011-01-20 | 2011-02-09 | 200 | 0d |  |  |
| 203 | 2.1.2.2 | Integration of new results |  | 15d | 2011-02-10 | 2011-03-02 | 202 | 0d |  |  |
| 204 | 2.1.2.3 | Development Complete - VR Platform | milestone | 0d | 2011-03-02 | 2011-03-02 | 203 | 0d |  |  |
| 205 | 2.1.3 | **Quality Assurance** |  | 40d | 2011-03-03 | 2011-04-27 |  | 0d |  |  |
| 206 | 2.1.3.1 | **Test Matrix** |  | 10d | 2011-03-03 | 2011-03-16 |  | 0d |  |  |
| 207 | 2.1.3.1.1 | Clinician test matrix |  | 5d | 2011-03-03 | 2011-03-09 | 204 | 0d |  |  |
| 208 | 2.1.3.1.2 | Researcher test matrix |  | 5d | 2011-03-10 | 2011-03-16 | 207 | 0d |  |  |
| 209 | 2.1.3.2 | Platform Integration - Complete | milestone | 0d | 2011-03-16 | 2011-03-16 | 208 | 0d |  |  |
| 210 | 2.1.3.3 | **Test Period** |  | 30d | 2011-03-17 | 2011-04-27 |  | 0d |  |  |
| 211 | 2.1.3.3.1 | Clinician test period |  | 15d | 2011-03-17 | 2011-04-06 | 209 | 0d |  |  |
| 212 | 2.1.3.3.2 | Researcher test period |  | 15d | 2011-04-07 | 2011-04-27 | 211 | 0d |  |  |
| 213 | 2.1.4 | Platform Version 1.1 - Complete | milestone | 0d | 2011-04-27 | 2011-04-27 | 212 | 0d |  |  |

| ID | WBS | Task | Duration | Start | Finish | Predecessors | Total slack | Free slack | Constraint | Resources | Work |
| --- | --- | --- | --- | --- | --- | --- | --- | --- | --- | --- | --- |
| 214 | 2.2 | **WP8 Patient management** | 270d | 2011-04-28 | 2012-05-09 |  | 0d |  |  | AMFQ | 2160h |
| 215 | 2.2.1 | **Preparation** | 180d | 2011-04-28 | 2012-01-04 |  | 0d |  |  |  |  |
| 216 | 2.2.1.1 | Protocol document | 25d | 2011-04-28 | 2011-06-01 | 213 | 247d |  |  |  |  |
| 217 | 2.2.1.2 | Clinician training | 20d | 2011-04-28 | 2011-05-25 | 213 | 252d |  |  |  |  |
| 218 | 2.2.1.3 | Condifentiality agreement | 20d | 2011-04-28 | 2011-05-25 | 213 | 0d |  |  |  |  |
| 219 | 2.2.1.4 | **Development** | 70d | 2011-05-26 | 2011-08-31 |  | 0d |  |  |  |  |
| 220 | 2.2.1.4.1 | Educational training | 15d | 2011-05-26 | 2011-06-15 | 218 | 237d |  |  |  |  |
| 221 | 2.2.1.4.2 | Patient selection | 15d | 2011-05-26 | 2011-06-15 | 218 | 0d |  |  |  |  |
| 222 | 2.2.1.4.3 | Patient observation | 40d | 2011-06-16 | 2011-08-10 | 221 | 0d |  |  |  |  |
| 223 | 2.2.1.4.4 | Patient post observation | 15d | 2011-08-11 | 2011-08-31 | 222 | 0d |  |  |  |  |
| 224 | 2.2.1.5 | **Evaluation and control** | 90d | 2011-09-01 | 2012-01-04 |  | 0d |  |  |  |  |
| 225 | 2.2.1.5.1 | Scientific treatment of data | 60d | 2011-09-01 | 2011-11-23 | 223 | 0d |  |  |  |  |
| 226 | 2.2.1.5.2 | Clinician treatment of data | 30d | 2011-11-24 | 2012-01-04 | 225 | 0d |  |  |  |  |
| 227 | 2.2.2 | **Evaluation and control** | 90d | 2012-01-05 | 2012-05-09 |  | 0d |  |  |  |  |
| 228 | 2.2.2.1 | Scientific treatment of data | 60d | 2012-01-05 | 2012-03-28 | 226 | 0d |  |  |  |  |
| 229 | 2.2.2.2 | Clinician treatment of data | 30d | 2012-03-29 | 2012-05-09 | 228 | 0d |  |  |  |  |
| 230 | 2.3 | **Version 1.1 - Demonstration** | 2d | 2012-05-10 | 2012-05-11 |  | 0d |  |  | O2H | 16h |
| 231 | 2.3.1 | Internal Demonstration | 1d | 2012-05-10 | 2012-05-10 | 229 | 0d |  |  |  |  |
| 232 | 2.3.2 | Congress Demonstration | 1d | 2012-05-11 | 2012-05-11 | 231 | 0d |  |  |  |  |
| 233 | 3 | **GP Administrative** | 159d | 2009-08-07 | 2010-03-19 |  | 0d |  |  | O2H | 1272h |
| 234 | 3.1 | Initial Study | 60d | 2009-08-07 | 2009-10-29 |  | 0d |  | must finish on 2009-10-29 |  |  |
| 235 | 3.2 | Functional Analysis | 60d | 2009-08-07 | 2009-10-29 |  | 0d |  | must finish on 2009-10-29 |  |  |
| 236 | 3.3 | Business Plan | 60d | 2009-10-29 | 2010-01-22 |  | 560d | 0d |  |  |  |
| 237 | 3.4 | Difusion Plan | 40d | 2010-01-25 | 2010-03-19 | 236 | 560d |  |  |  |  |

| ID | WBS | Task | Duration | Start | Finish | Total slack | Resources | Work |
| --- | --- | --- | --- | --- | --- | --- | --- | --- |
| 238 | 4 | **Documentation management** | 100d | 2009-10-29 | 2010-03-19 | 560d | ASET | 800h |
| 239 | 4.1 | Memoria 1ra | 100d | 2009-10-29 | 2010-03-19 | 560d |  |  |
