# Planning_ActivA

Schedule from MS Project, 2009-08-07 to 2011-02-18.

## Calendars

- Standard: Mon-Fri 08:00-12:00, 13:00-17:00; Sat-Sun off. Exceptions (off unless hours are given): 2009-12-25 (Christmas), 2010-01-01 (New year).

## Resources

| Resource | Group |
| --- | --- |
| Dr. Luis Maiz | HRC |
| Dra. Maite Martinez | H12O |
| Esther Sabando | AMFQ |
| Alfonso Montero | AMFQ |
| Tamara del corral | AMFQ |
| Jordi Villa | UPF |
| Sinan Mutlu | UPF |
| James Dalton | UPF |
| Jordi Blecua | ISOCO |
| Miguel Tsuchiya | FL |
| Joan Plana | ASET |
| Lisbeth Hernández | O2H |
| Miguel Hernández | O2H |
| Jordi Vilaro | O2H |
| Ezequiel Cuesta | O2H |
| Doug Thurber | O2H |
| William Lalinde | O2H |
| FL |  |
| O2H |  |
| ISOCO |  |
| UPF |  |
| AMFQ |  |
| ASET |  |
| FG |  |
| LH |  |
| JV |  |
| MH |  |
| JVL |  |
| JVA |  |

## Schedule

| ID | WBS | Task | Type | Duration | Start | Finish | Predecessors | Total slack | Free slack | Constraint | Resources | Work |
| --- | --- | --- | --- | --- | --- | --- | --- | --- | --- | --- | --- | --- |
| 1 | 1 | **GP 1A Version 1 - ActivA Platform** |  | 322d | 2009-09-01 | 2010-11-26 |  | 0d |  |  |  | 9192h |
| 2 | 1.1 | **Analysis - Entire Platform Complete** |  | 57d | 2009-09-01 | 2009-11-18 |  | 0d |  |  |  |  |
| 3 | 1.1.1 | Specifications |  | 43d | 2009-09-01 | 2009-10-29 |  | 0d |  | start no earlier than 2009-09-01 |  |  |
| 4 | 1.1.2 | Analysis complete Entire Platform - General |  | 14d | 2009-10-30 | 2009-11-18 | 3 | 0d |  |  |  |  |
| 5 | 1.2 | **WP1 Mobile platform** |  | 80d | 2009-10-29 | 2010-02-19 |  | 110d |  |  | FL; O2H | 3152h |
| 6 | 1.2.1 | **Analysis Mobile Applications** |  | 23d | 2009-10-29 | 2009-11-30 |  | 297d |  |  | O2H | 184h |
| 7 | 1.2.1.1 | Specifications |  | 15d | 2009-10-29 | 2009-11-18 |  | 297d | 0d | start no earlier than 2009-10-29 |  |  |
| 8 | 1.2.1.2 | Analysis Mobile Platform |  | 15d | 2009-11-10 | 2009-11-30 |  | 299d | 0d | start no earlier than 2009-11-10 |  |  |
| 9 | 1.2.2 | **Equipment Acquisition** |  | 10d | 2009-11-19 | 2009-12-02 |  | 352d |  |  | FL | 80h |
| 10 | 1.2.2.1 | Acquisition |  | 5d | 2009-11-19 | 2009-11-25 | 4 | 352d | 0d |  |  |  |
| 11 | 1.2.2.2 | Installation |  | 5d | 2009-11-26 | 2009-12-02 | 10 | 352d |  |  |  |  |
| 12 | 1.2.3 | **iPhone development (from other project)** |  | 65d | 2009-11-19 | 2010-02-19 |  | 297d |  |  | FL | 520h |
| 13 | 1.2.3.1 | Smart questionaries |  | 45d | 2009-12-01 | 2010-02-03 | 8 | 304d | 0d |  |  |  |
| 14 | 1.2.3.2 | Measurements |  | 45d | 2009-12-01 | 2010-02-03 | 8 | 304d | 0d |  |  |  |
| 15 | 1.2.3.3 | Calendar and alarm |  | 45d | 2009-12-01 | 2010-02-03 | 8 | 304d | 0d |  |  |  |
| 16 | 1.2.3.4 | Security |  | 14d | 2009-12-01 | 2009-12-18 | 8 | 335d | 31d |  |  |  |
| 17 | 1.2.3.5 | Complete Build Version 1 application |  | 5d | 2010-02-04 | 2010-02-10 | 13, 14, 15, 16 | 304d |  |  |  |  |
| 18 | 1.2.3.6 | Implementation document |  | 50d | 2009-11-19 | 2010-01-29 | 7 | 297d | 0d |  |  |  |
| 19 | 1.2.3.7 | User manual |  | 15d | 2010-02-01 | 2010-02-19 | 18 | 297d |  |  |  |  |
| 20 | 1.2.4 | **Android Development** |  | 58d | 2009-11-19 | 2010-02-10 |  | 304d |  |  | FL | 464h |
| 21 | 1.2.4.1 | Smart questionaries |  | 30d | 2009-12-01 | 2010-01-13 | 8 | 299d | 0d |  |  |  |
| 22 | 1.2.4.2 | Measurements |  | 30d | 2009-12-01 | 2010-01-13 | 8 | 314d | 15d |  |  |  |
| 23 | 1.2.4.3 | Calendar and alarm |  | 15d | 2010-01-14 | 2010-02-03 | 21 | 299d | 0d |  |  |  |
| 24 | 1.2.4.4 | Security |  | 15d | 2010-01-14 | 2010-02-03 | 21 | 299d | 0d |  |  |  |
| 25 | 1.2.4.5 | Complete Build Version 1 application |  | 5d | 2010-02-04 | 2010-02-10 | 21, 22, 23, 24 | 299d | 0d |  |  |  |
| 26 | 1.2.4.6 | Implementation document |  | 50d | 2009-11-19 | 2010-01-29 | 7 | 312d |  |  |  |  |
| 27 | 1.2.4.7 | User manual |  | 15d | 2009-11-19 | 2009-12-09 | 7 | 347d |  |  |  |  |
| 28 | 1.2.4.8 | Development Complete - Mobile Platform | milestone | 0d | 2010-02-10 | 2010-02-10 | 25 | 304d |  |  |  |  |

Notes:
- 1: Although a cascade way is shown, the methodology must be iterative by prototypying
- 4: Documentation, iterative through development

| ID | WBS | Task | Type | Duration | Start | Finish | Predecessors | Total slack | Free slack | Resources | Work |
| --- | --- | --- | --- | --- | --- | --- | --- | --- | --- | --- | --- |
| 29 | 1.2.5 | **Quality assurance** |  | 78d | 2009-10-29 | 2010-02-17 |  | 110d |  | FL | 624h |
| 30 | 1.2.5.1 | Test Matrix |  | 5d | 2010-02-11 | 2010-02-17 | 25 | 299d |  |  |  |
| 31 | 1.2.5.2 | Test Quality assurance iPhone |  | 10d | 2009-10-29 | 2009-11-11 |  | 110d | 0d |  |  |
| 32 | 1.2.5.3 | Test Quality assurance Android |  | 10d | 2009-11-12 | 2009-11-25 | 31 | 110d | 0d |  |  |
| 33 | 1.2.6 | Complete First Product Delivery - MP | milestone | 0d | 2009-11-25 | 2009-11-25 | 31, 32 | 110d | 81d |  |  |
| 34 | 1.3 | **WP2 Web platform** |  | 137d | 2009-10-30 | 2010-05-12 |  | 29d |  |  | 160h |
| 35 | 1.3.1 | **WP2.1 Analysis** |  | 20d | 2009-10-30 | 2009-11-26 |  | 29d | 0d | O2H | 160h |
| 36 | 1.3.1.1 | Architecture document update |  | 15d | 2009-10-30 | 2009-11-19 | 3 | 34d |  |  |  |
| 37 | 1.3.1.2 | Analysis ActivA Platform |  | 15d | 2009-10-30 | 2009-11-19 | 3 | 29d | 0d |  |  |
| 38 | 1.3.1.1 | Test Matrix |  | 5d | 2009-11-20 | 2009-11-26 | 37 | 29d | 10d |  |  |
| 39 | 1.3.2 | **WP2.2 Development** |  | 117d | 2009-11-27 | 2010-05-12 | 35 | 29d |  |  |  |
| 40 | 1.3.2.1 | **WP2.2.1 Hardware** |  | 70d | 2009-11-27 | 2010-03-08 |  | 29d |  |  |  |
| 41 | 1.3.2.1.1 | Demo server installation |  | 10d | 2009-11-27 | 2009-12-10 | 3 | 29d | 0d |  |  |
| 42 | 1.3.2.1.2 | Load balancing servers |  | 30d | 2009-12-11 | 2010-01-25 | 41 | 286d | 0d |  |  |
| 43 | 1.3.2.1.3 | Disperse database |  | 30d | 2010-01-26 | 2010-03-08 | 42 | 286d |  |  |  |
| 44 | 1.3.2.2 | **WP2.2.2 Server side development** |  | 65d | 2009-12-11 | 2010-03-15 | 41 | 29d |  |  |  |
| 45 | 1.3.2.2.1 | Business objects (EJB3 Entities) |  | 20d | 2009-12-11 | 2010-01-11 | 38 | 29d | 0d |  |  |
| 46 | 1.3.2.2.2 | Business methods (EJB3 Sessions) |  | 20d | 2010-01-12 | 2010-02-08 | 45 | 29d | 0d |  |  |
| 47 | 1.3.2.2.3 | Client server communication |  | 20d | 2009-12-11 | 2010-01-11 | 38 | 309d | 40d |  |  |
| 48 | 1.3.2.2.4 | Client side communication (GWT RPC) |  | 20d | 2009-12-11 | 2010-01-11 | 38 | 309d | 40d |  |  |
| 49 | 1.3.2.2.5 | Client side communication (GWT JSON) |  | 20d | 2009-12-11 | 2010-01-11 | 38 | 309d | 40d |  |  |
| 50 | 1.3.2.2.6 | Web services (SOAP XML) |  | 20d | 2010-02-09 | 2010-03-08 | 46 | 29d | 0d |  |  |
| 51 | 1.3.2.2.1 | Test Period |  | 5d | 2010-03-09 | 2010-03-15 | 46, 47, 48, 49, 50 | 269d | 30d |  |  |
| 52 | 1.3.2.3 | **WP2.2.3 Client side development** |  | 106d | 2009-11-27 | 2010-04-27 |  | 44d |  |  |  |
| 53 | 1.3.2.3.1 | Client Business objects |  | 21d | 2009-11-27 | 2009-12-28 | 37 | 68d | 24d |  |  |
| 54 | 1.3.2.3.2 | Client UI Events |  | 20d | 2009-11-27 | 2009-12-24 | 37 | 44d | 0d |  |  |
| 55 | 1.3.2.3.3 | Client widgets |  | 25d | 2009-12-28 | 2010-02-01 | 54 | 44d | 0d |  |  |
| 56 | 1.3.2.3.4 | Client Services |  | 10d | 2010-02-02 | 2010-02-15 | 53, 54, 55 | 44d | 15d |  |  |
| 57 | 1.3.2.3.5 | Web Develpoment end to end consolidation |  | 10d | 2010-03-09 | 2010-03-22 | 50, 56 | 29d | 0d |  |  |
| 58 | 1.3.2.3.6 | Internatioalization and Accesibility |  | 20d | 2010-03-23 | 2010-04-19 | 57 | 239d | 0d |  |  |
| 59 | 1.3.2.3.1 | Test Period |  | 5d | 2010-04-20 | 2010-04-26 | 53, 54, 55, 56, 57, 58 | 239d | 0d |  |  |
| 60 | 1.3.2.3.2 | Document delivery |  | 1d | 2010-04-27 | 2010-04-27 | 59 | 250d |  |  |  |

Notes:
- 30: Test Matrix imust developed with specifications
- 33: Used to take patient measurements
- 36: This architecture document is not constrained only to the web platform.
- 38: Test Matrix imust developed with specifications
- 41: Initially only one server is needed
- 42: For an scalable choice multiple servers must be mounted
- 43: The database must be dispersed as well to avoid being the bottleneck
- 45: Objetos de negocio
- 46: Métodos de negocio
- 49: Additional sites not using RPC
- 51: Test Matrix imust developed with specifications
- 55: Will be replaced by the 3D UI.
- 59: Test Matrix imust developed with specifications

| ID | WBS | Task | Type | Duration | Start | Finish | Predecessors | Total slack | Free slack |
| --- | --- | --- | --- | --- | --- | --- | --- | --- | --- |
| 61 | 1.3.2.4 | **WP2.2.4 e-commerce** |  | 81d | 2009-11-27 | 2010-03-23 |  | 34d |  |
| 62 | 1.3.2.4.1 | 2.2.4.1 Analysis & Update to Arch. Doc |  | 15d | 2009-11-27 | 2009-12-17 | 37 | 34d | 0d |
| 63 | 1.3.2.4.4 | 2.2.4.2 Interface implementation |  | 45d | 2009-12-18 | 2010-02-22 | 62 | 34d | 0d |
| 64 | 1.3.2.4.5 | 2.2.4.3 Transaction |  | 15d | 2010-02-23 | 2010-03-15 | 63 | 34d | 0d |
| 65 | 1.3.2.4.1 | Test Period |  | 5d | 2010-03-16 | 2010-03-22 | 64, 62, 63 | 264d | 0d |
| 66 | 1.3.2.4.2 | Document delivery |  | 1d | 2010-03-23 | 2010-03-23 | 65 | 275d |  |
| 67 | 1.3.2.5 | **WP2.2.5 Security** |  | 82d | 2009-11-27 | 2010-03-24 |  | 33d |  |
| 68 | 1.3.2.5.1 | 2.2.5.1 Analysis & Update Architecture |  | 15d | 2009-11-27 | 2009-12-17 | 37 | 33d | 0d |
| 69 | 1.3.2.5.2 | Document delivery |  | 1d | 2009-12-18 | 2009-12-18 | 68 | 33d | 0d |
| 70 | 1.3.2.5.3 | 2.2.5.2 HTTPS |  | 45d | 2009-12-21 | 2010-02-23 | 69 | 33d | 0d |
| 71 | 1.3.2.5.4 | 2.2.5.3 Captchas |  | 15d | 2010-02-24 | 2010-03-16 | 70 | 33d | 0d |
| 72 | 1.3.2.5.1 | Test Period |  | 5d | 2010-03-17 | 2010-03-23 | 71, 68, 69, 70 | 263d | 0d |
| 73 | 1.3.2.5.2 | Document delivery |  | 1d | 2010-03-24 | 2010-03-24 | 72 | 274d |  |
| 74 | 1.3.2.6 | **WP 2.2.6 HL7** |  | 106d | 2009-11-27 | 2010-04-27 |  | 239d |  |
| 75 | 1.3.2.6.1 | **WP 2.2.6.1 Analysis** |  | 106d | 2009-11-27 | 2010-04-27 |  | 239d |  |
| 76 | 1.3.2.6.1.1 | 2.2.6.1 Architecture |  | 20d | 2009-11-27 | 2009-12-24 | 37 | 239d | 0d |
| 77 | 1.3.2.6.1.2 | 2.2.6.2 Development |  | 20d | 2009-12-28 | 2010-01-25 | 76 | 239d | 0d |
| 78 | 1.3.2.6.1.3 | 2.2.6.2 Web services for interfaces |  | 60d | 2010-01-26 | 2010-04-19 | 77 | 239d | 0d |
| 79 | 1.3.2.6.1.1 | Test Period |  | 5d | 2010-04-20 | 2010-04-26 | 78, 76, 77 | 239d | 0d |
| 80 | 1.3.2.6.1.2 | Document delivery |  | 1d | 2010-04-27 | 2010-04-27 | 79 | 250d |  |
| 81 | 1.3.2.7 | **Quality Assurance** |  | 12d | 2010-04-27 | 2010-05-12 |  | 239d |  |
| 82 | 1.3.2.7.1 | Test Matrix Update |  | 2d | 2010-04-27 | 2010-04-28 | 51, 59, 65, 72, 79 | 239d | 0d |
| 83 | 1.3.2.7.2 | Test Period |  | 10d | 2010-04-29 | 2010-05-12 | 82 | 239d |  |
| 84 | 1.3.3 | Implementation document |  | 110d | 2009-11-20 | 2010-04-26 | 37 | 251d |  |
| 85 | 1.3.4 | Development Complete - Web Platform | milestone | 0d | 2010-03-22 | 2010-03-22 | 50, 57, 64, 71 | 29d | 0d |

Notes:
- 65: Test Matrix imust developed with specifications
- 72: Test Matrix imust developed with specifications
- 79: Test Matrix imust developed with specifications
- 82: Agregar Test Matrix al principio y Text Period al final de todos los bloques en WP2 (integracion al final MH)
- 84: This implementation document is not constrained only to the web platform.

| ID | WBS | Task | Type | Duration | Start | Finish | Predecessors | Total slack | Free slack | Resources | Work |
| --- | --- | --- | --- | --- | --- | --- | --- | --- | --- | --- | --- |
| 86 | 1.4 | **WP3 Social Networking platform** |  | 115d | 2009-10-29 | 2010-04-09 |  | 45d |  | ISOCO | 920h |
| 87 | 1.4.1 | **WP3.1 Analysis** |  | 75d | 2009-11-19 | 2010-03-05 |  | 30d |  |  |  |
| 88 | 1.4.1.1 | 3.1.1 Social Networks |  | 20d | 2009-11-19 | 2009-12-16 | 4 | 30d | 0d |  |  |
| 89 | 1.4.1.2 | 3.1.2 Communication chanels and wikis |  | 10d | 2009-12-17 | 2009-12-31 | 88 | 30d | 0d |  |  |
| 90 | 1.4.1.3 | 3.1.3 Mobile access |  | 10d | 2010-01-04 | 2010-01-15 | 89 | 30d | 0d |  |  |
| 91 | 1.4.1.4 | 3.1.4 RSS |  | 25d | 2010-01-18 | 2010-02-19 | 90 | 30d | 0d |  |  |
| 92 | 1.4.1.5 | 3.1.5 Stadistics |  | 10d | 2010-02-22 | 2010-03-05 | 91 | 267d | 0d |  |  |
| 93 | 1.4.2 | **WP3.2 Development** |  | 110d | 2009-10-29 | 2010-04-02 |  | 110d |  |  |  |
| 94 | 1.4.2.1 | 3.2.1 Social network integration |  | 20d | 2010-03-08 | 2010-04-02 | 92 | 267d |  |  |  |
| 95 | 1.4.2.2 | 3.2.2 Communication chanels and wikis |  | 30d | 2010-02-22 | 2010-04-02 | 91 | 267d |  |  |  |
| 96 | 1.4.2.3 | 3.2.3 Mobile development |  | 20d | 2010-02-22 | 2010-03-19 | 91 | 30d | 0d |  |  |
| 97 | 1.4.2.4 | 3.2.4 RSS interfaces |  | 15d | 2010-02-22 | 2010-03-12 | 91 | 282d |  |  |  |
| 98 | 1.4.2.5 | 3.2.5 Stadistics package |  | 10d | 2009-10-29 | 2009-11-11 |  | 367d |  |  |  |
| 99 | 1.4.3 | Development Complete - SN Platform | milestone | 0d | 2010-03-19 | 2010-03-19 | 96 | 30d | 0d |  |  |
| 100 | 1.4.4 | **WP3.3 Quality assurance** |  | 15d | 2010-03-22 | 2010-04-09 |  | 262d |  |  |  |
| 101 | 1.4.4.1 | **WP3.3.1 Test matrix** |  | 10d | 2010-03-22 | 2010-04-02 |  | 262d |  |  |  |
| 102 | 1.4.4.1.1 | 3.3.1.1 Environment test matrix |  | 5d | 2010-03-22 | 2010-03-26 | 99 | 262d | 0d |  |  |
| 103 | 1.4.4.1.2 | 3.3.1.2 Scientific test matrix |  | 5d | 2010-03-29 | 2010-04-02 | 102 | 262d | 0d |  |  |
| 104 | 1.4.4.2 | **WP3.3.2 Test period** |  | 5d | 2010-04-05 | 2010-04-09 |  | 262d |  |  |  |
| 105 | 1.4.4.2.1 | 3.3.2.1 Environment test period |  | 5d | 2010-04-05 | 2010-04-09 | 103 | 262d |  |  |  |
| 106 | 1.4.4.2.2 | 3.3.2.2 Scientific test period |  | 5d | 2010-04-05 | 2010-04-09 | 103 | 262d | 0d |  |  |
| 107 | 1.4.5 | Complete First Product Delivery - SN | milestone | 0d | 2010-04-09 | 2010-04-09 | 106 | 262d |  |  |  |
| 108 | 1.5 | **WP4 Virtual 3D platform** |  | 115d | 2009-11-19 | 2010-04-30 |  | 0d |  | UPF | 920h |
| 109 | 1.5.1 | **Analysis** |  | 35d | 2009-11-19 | 2010-01-08 |  | 0d |  |  |  |
| 110 | 1.5.1.1 | Animation script (screenplay) |  | 10d | 2009-11-19 | 2009-12-02 | 4 | 0d |  |  |  |

Notes:
- 89: Not fully deployed to leave it for later
- 90: Not fully deployed to leave it for later

| ID | WBS | Task | Type | Duration | Start | Finish | Predecessors | Total slack | Free slack | Resources | Work |
| --- | --- | --- | --- | --- | --- | --- | --- | --- | --- | --- | --- |
| 111 | 1.5.1.2 | **ActionScript development** |  | 10d | 2009-12-03 | 2009-12-16 |  | 342d |  |  |  |
| 112 | 1.5.1.2.1 | Entities |  | 10d | 2009-12-03 | 2009-12-16 | 110 | 342d |  |  |  |
| 113 | 1.5.1.2.2 | Basic commands |  | 10d | 2009-12-03 | 2009-12-16 | 110 | 342d |  |  |  |
| 114 | 1.5.1.3 | Storyboard (From campus to molecular structure) |  | 25d | 2009-12-03 | 2010-01-08 | 110 | 327d |  |  |  |
| 115 | 1.5.2 | **Development** |  | 70d | 2009-12-03 | 2010-03-12 |  | 0d |  |  |  |
| 116 | 1.5.2.1 | Object design frameworks |  | 10d | 2009-12-03 | 2009-12-16 | 110 | 0d |  |  |  |
| 117 | 1.5.2.2 | Object design libraries |  | 45d | 2009-12-17 | 2010-02-19 | 116 | 297d |  |  |  |
| 118 | 1.5.2.3 | complete object designs |  | 45d | 2009-12-17 | 2010-02-19 | 116 | 0d |  |  |  |
| 119 | 1.5.2.4 | Stage design |  | 15d | 2010-02-22 | 2010-03-12 | 118 | 0d |  |  |  |
| 120 | 1.5.3 | Development Complete - VR Platform | milestone | 0d | 2010-03-12 | 2010-03-12 | 119 | 35d |  |  |  |
| 121 | 1.5.4 | **Quality assurance** |  | 35d | 2010-03-15 | 2010-04-30 |  | 0d |  |  |  |
| 122 | 1.5.4.1 | **Test matrix** |  | 10d | 2010-03-15 | 2010-03-26 |  | 0d |  |  |  |
| 123 | 1.5.4.1.1 | Environment test matrix |  | 5d | 2010-03-15 | 2010-03-19 | 119 | 0d |  |  |  |
| 124 | 1.5.4.1.2 | Scientific test matrix |  | 5d | 2010-03-22 | 2010-03-26 | 123 | 0d |  |  |  |
| 125 | 1.5.4.2 | **Test period** |  | 25d | 2010-03-29 | 2010-04-30 |  | 0d |  |  |  |
| 126 | 1.5.4.2.1 | Environment test period |  | 25d | 2010-03-29 | 2010-04-30 | 124 | 0d |  |  |  |
| 127 | 1.5.4.2.2 | Scientific test period |  | 25d | 2010-03-29 | 2010-04-30 | 124 | 247d |  |  |  |
| 128 | 1.5.5 | Complete First Product Delivery - VR | milestone | 0d | 2010-04-30 | 2010-04-30 | 126 | 0d |  |  |  |
| 129 | 1.6 | **WP5 Integration** |  | 55d | 2010-03-23 | 2010-06-07 |  | 143d |  | O2H | 1120h |
| 130 | 1.6.1 | **Mobile - Web integration** |  | 40d | 2010-03-23 | 2010-05-17 |  | 199d |  | FL | 320h |
| 131 | 1.6.1.1 | XML communication |  | 10d | 2010-03-23 | 2010-04-05 | 33, 85 | 236d | 0d |  |  |
| 132 | 1.6.1.2 | Security implementation |  | 10d | 2010-04-06 | 2010-04-19 | 131 | 199d | 0d |  |  |
| 133 | 1.6.1.3 | Mobile to Server communication |  | 10d | 2010-04-20 | 2010-05-03 | 132 | 199d | 0d |  |  |
| 134 | 1.6.1.4 | Server to Mobile communication |  | 10d | 2010-05-04 | 2010-05-17 | 133 | 236d | 0d |  |  |
| 135 | 1.6.2 | Platform Mobile Integration - Complete | milestone | 0d | 2010-05-17 | 2010-05-17 | 134 | 199d | 3d |  |  |

Notes:
- 112: Not fully deployed to leave it for later
- 113: Not fully deployed to leave it for later
- 132: Described up

| ID | WBS | Task | Type | Duration | Start | Finish | Predecessors | Total slack | Free slack | Resources | Work |
| --- | --- | --- | --- | --- | --- | --- | --- | --- | --- | --- | --- |
| 136 | 1.6.3 | **Social networks** |  | 30d | 2010-03-23 | 2010-05-03 |  | 246d |  |  |  |
| 137 | 1.6.3.1 | Facebook integration |  | 15d | 2010-03-23 | 2010-04-12 | 99, 85 | 246d | 0d |  |  |
| 138 | 1.6.3.2 | Other networks |  | 15d | 2010-04-13 | 2010-05-03 | 137 | 246d | 0d |  |  |
| 139 | 1.6.4 | Platform Social Networking Integration - Complete | milestone | 0d | 2010-05-03 | 2010-05-03 | 138 | 246d | 13d |  |  |
| 140 | 1.6.5 | **Virtual 3D - Web integration** |  | 14d | 2010-05-03 | 2010-05-20 |  | 233d |  | O2H | 112h |
| 141 | 1.6.5.1 | **ActionScript - JavaScript** |  | 14d | 2010-05-03 | 2010-05-20 |  | 233d |  |  |  |
| 142 | 1.6.5.1.1 | Reuse of entities |  | 7d | 2010-05-03 | 2010-05-11 | 128 | 240d |  |  |  |
| 143 | 1.6.5.1.2 | Reuse of commands |  | 7d | 2010-05-03 | 2010-05-11 | 128 | 240d |  |  |  |
| 144 | 1.6.5.1.1 | Demo of integration |  | 14d | 2010-05-03 | 2010-05-20 | 128, 85 | 233d | 0d |  |  |
| 145 | 1.6.6 | Platform VR 3D Integration - Complete | milestone | 0d | 2010-05-20 | 2010-05-20 | 144 | 233d | 0d |  |  |
| 146 | 1.6.7 | **Semantic Web (HL7)** |  | 10d | 2010-03-23 | 2010-04-05 |  | 266d |  | ISOCO | 80h |
| 147 | 1.6.7.1 | Environment Setting |  | 10d | 2010-03-23 | 2010-04-05 | 85 | 266d | 33d |  |  |
| 148 | 1.6.8 | Platform Integration - Complete | milestone | 0d | 2010-05-20 | 2010-05-20 | 135, 139, 145, 147 | 196d |  |  |  |
| 149 | 1.6.5 | **Quality assurance** |  | 26d | 2010-05-03 | 2010-06-07 |  | 114d |  |  | 168h |
| 150 | 1.6.5.1 | **Test matrix** |  | 6d | 2010-05-03 | 2010-05-10 |  | 114d |  |  | 168h |
| 151 | 1.6.5.1.1 | Test Matrix Update |  | 1d | 2010-05-03 | 2010-05-03 | 33, 85, 120, 128, 99 | 114d | 0d | FG | 8h |
| 152 | 1.6.5.1.1 | Patient matrix |  | 5d | 2010-05-04 | 2010-05-10 | 151 | 114d | 0d | FG | 40h |
| 153 | 1.6.5.1.2 | Clinician matrix |  | 5d | 2010-05-04 | 2010-05-10 | 151 | 114d | 0d | LH | 40h |
| 154 | 1.6.5.1.3 | Researcher matrix |  | 5d | 2010-05-04 | 2010-05-10 | 151 | 241d |  | JVA | 40h |
| 155 | 1.6.5.1.4 | Technical matrix |  | 5d | 2010-05-04 | 2010-05-10 | 151 | 10d | 0d | MH | 40h |
| 156 | 1.6.5.2 | **Test period** |  | 20d | 2010-05-11 | 2010-06-07 |  | 114d |  |  |  |
| 157 | 1.6.5.2.1 | Patient test |  | 10d | 2010-05-11 | 2010-05-24 | 152 | 114d | 0d |  |  |
| 158 | 1.6.5.2.2 | Clinician test |  | 10d | 2010-05-11 | 2010-05-24 | 153 | 114d | 0d |  |  |
| 159 | 1.6.5.2.3 | Researcher tests |  | 10d | 2010-05-25 | 2010-06-07 | 158, 157 | 114d | 0d |  |  |
| 160 | 1.6.5.2.4 | Technical tests |  | 10d | 2010-05-11 | 2010-05-24 | 155 | 10d |  |  |  |
| 161 | 1.6.6 | Complete First Product Delivery - WP | milestone | 0d | 2010-06-07 | 2010-06-07 | 157, 158, 159, 160 | 114d | 0d |  |  |

Notes:
- 157: Do not mix the testing phase named here with the WP Patient Management, they are not related

| ID | WBS | Task | Type | Duration | Start | Finish | Predecessors | Total slack | Free slack | Resources | Work |
| --- | --- | --- | --- | --- | --- | --- | --- | --- | --- | --- | --- |
| 162 | 1.9 | **WP6 Inference and reasoning** |  | 85d | 2010-05-03 | 2010-08-27 |  | 0d |  | UPF | 680h |
| 163 | 1.9.1 | **Analysis** |  | 10d | 2010-05-03 | 2010-05-14 |  | 0d |  |  |  |
| 164 | 1.9.1.1 | Database reference document |  | 5d | 2010-05-03 | 2010-05-07 | 33, 85, 99, 120, 128 | 0d |  |  |  |
| 165 | 1.9.1.2 | Knoweldge generation document |  | 5d | 2010-05-10 | 2010-05-14 | 164 | 0d |  |  |  |
| 166 | 1.9.2 | **Development** |  | 35d | 2010-05-17 | 2010-07-02 |  | 0d |  |  |  |
| 167 | 1.9.2.1 | Integration of databases |  | 5d | 2010-05-17 | 2010-05-21 | 165 | 0d |  |  |  |
| 168 | 1.9.2.2 | Interface for accessing information |  | 15d | 2010-05-24 | 2010-06-11 | 167 | 0d |  |  |  |
| 169 | 1.9.2.3 | Integration of new results |  | 15d | 2010-06-14 | 2010-07-02 | 168 | 0d |  |  |  |
| 170 | 1.9.2.4 | Development Complete - Inference Platform | milestone | 0d | 2010-07-02 | 2010-07-02 | 169 | 0d |  |  |  |
| 171 | 1.9.3 | **Quality Assurance** |  | 40d | 2010-07-05 | 2010-08-27 |  | 111d |  |  |  |
| 172 | 1.9.3.1 | **Test Matrix** |  | 10d | 2010-07-05 | 2010-07-16 |  | 111d |  |  |  |
| 173 | 1.9.3.1.1 | Clinician test matrix |  | 5d | 2010-07-05 | 2010-07-09 | 170 | 148d | 0d |  |  |
| 174 | 1.9.3.1.2 | Researcher test matrix |  | 5d | 2010-07-12 | 2010-07-16 | 173 | 148d | 0d |  |  |
| 175 | 1.9.3.1.3 | Platform Integration - Complete | milestone | 0d | 2010-07-16 | 2010-07-16 | 174 | 111d | 0d |  |  |
| 176 | 1.9.3.2 | **Test Period** |  | 30d | 2010-07-19 | 2010-08-27 |  | 111d |  |  |  |
| 177 | 1.9.3.2.1 | Clinician test period |  | 15d | 2010-07-19 | 2010-08-06 | 175 | 148d | 0d |  |  |
| 178 | 1.9.3.2.2 | Researcher test period |  | 15d | 2010-08-09 | 2010-08-27 | 177 | 148d | 0d |  |  |
| 179 | 1.7 | Platform Version 1 - Complete | milestone | 0d | 2010-08-27 | 2010-08-27 | 178 | 111d | 0d |  |  |
| 180 | 1.8 | Code versioning |  | 14d | 2010-08-30 | 2010-09-16 | 179 | 148d |  |  |  |
| 181 | 1.9 | **WP7 Patient management** |  | 280d | 2009-10-29 | 2010-11-26 |  | 60d |  | AMFQ | 2240h |
| 182 | 1.9.1 | **Preparation** |  | 140d | 2009-10-29 | 2010-05-14 |  | 130d |  |  |  |
| 183 | 1.9.1.1 | Protocol document |  | 25d | 2009-10-29 | 2009-12-02 |  | 130d | 0d |  |  |
| 184 | 1.9.1.2 | Clinician training |  | 60d | 2009-12-03 | 2010-02-26 | 183 | 130d | 0d |  |  |
| 185 | 1.9.1.3 | Condifentiality agreement |  | 30d | 2010-03-01 | 2010-04-09 | 184 | 130d | 0d |  |  |
| 186 | 1.9.1.4 | Patient selection |  | 15d | 2010-04-12 | 2010-04-30 | 185 | 130d | 0d |  |  |
| 187 | 1.9.1.5 | Prueba completa con unos individuos |  | 10d | 2010-05-03 | 2010-05-14 | 186 | 130d | 16d |  |  |

Notes:
- 180: Installment of SVN or CVS
- 181: Deberia de ser WP7 y arreglar los otros
- 187: Atar antes de Test matrix y period

| ID | WBS | Task | Type | Duration | Start | Finish | Predecessors | Total slack | Free slack | Resources | Work |
| --- | --- | --- | --- | --- | --- | --- | --- | --- | --- | --- | --- |
| 188 | 1.9.2 | **Initiation** |  | 70d | 2010-06-08 | 2010-09-13 |  | 114d |  |  |  |
| 189 | 1.9.2.1 | Educational training |  | 15d | 2010-06-08 | 2010-06-28 | 187, 161 | 114d | 0d |  |  |
| 190 | 1.9.2.2 | Patient observation |  | 40d | 2010-06-29 | 2010-08-23 | 189 | 114d | 0d |  |  |
| 191 | 1.9.2.3 | Patient post observation |  | 15d | 2010-08-24 | 2010-09-13 | 190 | 114d |  |  |  |
| 192 | 1.9.3 | **Evaluation and control** |  | 105d | 2010-07-05 | 2010-11-26 |  | 0d |  |  |  |
| 193 | 1.9.3.1 | Initial Analysis and Scientific treatment of data |  | 15d | 2010-07-05 | 2010-07-23 | 170 | 0d |  |  |  |
| 194 | 1.9.3.2 | Scientific treatment of data |  | 60d | 2010-07-26 | 2010-10-15 | 193 | 0d |  |  |  |
| 195 | 1.9.3.3 | Clinician treatment of data |  | 30d | 2010-10-18 | 2010-11-26 | 194 | 0d |  |  |  |
| 196 | 1.10 | Platform Version 1.1 - Complete | milestone | 0d | 2010-11-26 | 2010-11-26 | 195 | 0d |  |  |  |
| 197 | 2 | **GP 1B Version 1.1 (revision)** |  | 340d | 2009-10-29 | 2011-02-18 |  | 0d |  |  | 4896h |
| 198 | 2.1 | **WP8 (revision)** |  | 340d | 2009-10-29 | 2011-02-18 |  | 0d |  | O2H | 2720h |
| 199 | 2.1.1 | **Analysis** |  | 20d | 2010-11-29 | 2010-12-24 |  | 0d |  |  |  |
| 200 | 2.1.1.1 | Modification Requests |  | 10d | 2010-11-29 | 2010-12-10 | 196 | 0d |  |  |  |
| 201 | 2.1.1.2 | Knoweldge generation document |  | 10d | 2010-12-13 | 2010-12-24 | 200 | 0d |  |  |  |
| 202 | 2.1.2 | **Development** |  | 30d | 2010-12-27 | 2011-02-04 |  | 0d |  |  |  |
| 203 | 2.1.2.1 | Modification Development |  | 15d | 2010-12-27 | 2011-01-14 | 201 | 0d |  |  |  |
| 204 | 2.1.2.2 | Integration of new results |  | 15d | 2011-01-17 | 2011-02-04 | 203 | 0d |  |  |  |
| 205 | 2.1.2.3 | Development Complete - VR Platform | milestone | 0d | 2011-02-04 | 2011-02-04 | 204 | 0d |  |  |  |
| 206 | 2.1.3 | **Quality Assurance** |  | 340d | 2009-10-29 | 2011-02-18 |  | 0d |  |  |  |
| 207 | 2.1.3.1 | **Test Matrix** |  | 10d | 2011-02-07 | 2011-02-18 |  | 0d |  |  |  |
| 208 | 2.1.3.1.1 | Clinician test matrix |  | 5d | 2011-02-07 | 2011-02-11 | 205 | 0d |  |  |  |
| 209 | 2.1.3.1.2 | Researcher test matrix |  | 5d | 2011-02-14 | 2011-02-18 | 208 | 0d |  |  |  |
| 210 | 2.1.3.2 | Platform Integration - Complete | milestone | 0d | 2011-02-18 | 2011-02-18 | 209 | 0d |  |  |  |
| 211 | 2.1.3.3 | **Test Period** |  | 30d | 2009-10-29 | 2009-12-09 |  | 75d |  |  |  |
| 212 | 2.1.3.3.1 | Clinician test period |  | 15d | 2009-10-29 | 2009-11-18 |  | 75d | 0d |  |  |
| 213 | 2.1.3.3.2 | Researcher test period |  | 15d | 2009-11-19 | 2009-12-09 | 212 | 75d | 0d |  |  |
| 214 | 2.2 | Platform Version 1.1 - Complete | milestone | 0d | 2009-12-09 | 2009-12-09 | 213 | 75d | 0d |  |  |

| ID | WBS | Task | Duration | Start | Finish | Predecessors | Total slack | Free slack | Constraint | Resources | Work |
| --- | --- | --- | --- | --- | --- | --- | --- | --- | --- | --- | --- |
| 215 | 2.3 | **WP9 Patient management** | 270d | 2009-12-10 | 2010-12-24 |  | 75d |  |  | AMFQ | 2160h |
| 216 | 2.3.1 | **Preparation** | 180d | 2009-12-10 | 2010-08-20 |  | 75d |  |  |  |  |
| 217 | 2.3.1.1 | Protocol document | 25d | 2009-12-10 | 2010-01-15 | 214 | 322d |  |  |  |  |
| 218 | 2.3.1.2 | Clinician training | 20d | 2009-12-10 | 2010-01-08 | 214 | 327d |  |  |  |  |
| 219 | 2.3.1.3 | Condifentiality agreement | 20d | 2009-12-10 | 2010-01-08 | 214 | 75d | 0d |  |  |  |
| 220 | 2.3.1.4 | **Development** | 70d | 2010-01-11 | 2010-04-16 |  | 75d |  |  |  |  |
| 221 | 2.3.1.4.1 | Educational training | 15d | 2010-01-11 | 2010-01-29 | 219 | 312d |  |  |  |  |
| 222 | 2.3.1.4.2 | Patient selection | 15d | 2010-01-11 | 2010-01-29 | 219 | 75d | 0d |  |  |  |
| 223 | 2.3.1.4.3 | Patient observation | 40d | 2010-02-01 | 2010-03-26 | 222 | 75d | 0d |  |  |  |
| 224 | 2.3.1.4.4 | Patient post observation | 15d | 2010-03-29 | 2010-04-16 | 223 | 75d | 0d |  |  |  |
| 225 | 2.3.1.5 | **Evaluation and control** | 90d | 2010-04-19 | 2010-08-20 |  | 75d |  |  |  |  |
| 226 | 2.3.1.5.1 | Scientific treatment of data | 60d | 2010-04-19 | 2010-07-09 | 224 | 75d | 0d |  |  |  |
| 227 | 2.3.1.5.2 | Clinician treatment of data | 30d | 2010-07-12 | 2010-08-20 | 226 | 75d | 0d |  |  |  |
| 228 | 2.3.2 | **Evaluation and control** | 90d | 2010-08-23 | 2010-12-24 |  | 75d |  |  |  |  |
| 229 | 2.3.2.1 | Scientific treatment of data | 60d | 2010-08-23 | 2010-11-12 | 227 | 75d | 0d |  |  |  |
| 230 | 2.3.2.2 | Clinician treatment of data | 30d | 2010-11-15 | 2010-12-24 | 229 | 75d | 0d |  |  |  |
| 231 | 2.4 | **Version 1.1 - Demonstration** | 2d | 2010-12-27 | 2010-12-28 |  | 75d |  |  | O2H | 16h |
| 232 | 2.4.1 | Internal Demonstration | 1d | 2010-12-27 | 2010-12-27 | 230 | 75d | 0d |  |  |  |
| 233 | 2.4.2 | Congress Demonstration | 1d | 2010-12-28 | 2010-12-28 | 232 | 75d |  |  |  |  |
| 234 | 3 | **GP Administrative** | 159d | 2009-08-07 | 2010-03-19 |  | 0d |  |  | O2H | 1272h |
| 235 | 3.1 | Initial Study | 60d | 2009-08-07 | 2009-10-29 |  | 0d |  | must finish on 2009-10-29 |  |  |
| 236 | 3.2 | Functional Analysis | 60d | 2009-08-07 | 2009-10-29 |  | 0d |  | must finish on 2009-10-29 |  |  |
| 237 | 3.3 | Business Plan | 60d | 2009-10-29 | 2010-01-22 |  | 277d | 0d |  |  |  |
| 238 | 3.4 | Difusion Plan | 40d | 2010-01-25 | 2010-03-19 | 237 | 277d |  |  |  |  |

| ID | WBS | Task | Duration | Start | Finish | Total slack | Resources | Work |
| --- | --- | --- | --- | --- | --- | --- | --- | --- |
| 239 | 4 | **Documentation management** | 100d | 2009-10-29 | 2010-03-19 | 277d | ASET | 800h |
| 240 | 4.1 | Memoria 1ra | 100d | 2009-10-29 | 2010-03-19 | 277d |  |  |
