# Planning_ActivA

Schedule from MS Project, 2009-08-07 to 2011-02-08.

## Calendars

- Standard: Mon-Fri 08:00-12:00, 13:00-17:00; Sat-Sun off. Exceptions (off unless hours are given): 2009-12-25 (Christmas), 2010-01-01 (New year).

## Resources

| Resource | Group |
| --- | --- |
| Dr. Luis Maiz | HRC |
| Dra. Maite Martinez | H12O |
| Esther Sabando | AMFQ |
| Alfonso Montero | AMFQ |
| Tamara del corral | AMFQ |
| Jordi Villa | UPF |
| Sinan Mutlu | UPF |
| James Dalton | UPF |
| Jordi Blecua | ISOCO |
| Miguel Tsuchiya | FL |
| Joan Plana | ASET |
| Lisbeth Hernández | O2H |
| Miguel Hernández | O2H |
| Jordi Vilaro | O2H |
| Ezequiel Cuesta | O2H |
| Doug Thurber | O2H |
| William Lalinde | O2H |
| FL |  |
| O2H |  |
| ISOCO |  |
| UPF |  |
| AMFQ |  |
| ASET |  |
| FG |  |
| LH |  |
| JV |  |
| MH |  |
| JVL |  |
| JVA |  |
| SINAN |  |
| SM |  |
| JD |  |

## Schedule

| ID | WBS | Task | Type | Duration | Start | Finish | Predecessors | Total slack | Free slack | Constraint | Resources | Work |
| --- | --- | --- | --- | --- | --- | --- | --- | --- | --- | --- | --- | --- |
| 1 | 1 | **GP 1A Version 1 - ActivA Platform** |  | 314d | 2009-09-01 | 2010-11-16 |  | 0d |  |  |  | 12272h |
| 2 | 1.1 | **Analysis - Entire Platform Complete** |  | 57d | 2009-09-01 | 2009-11-18 |  | 0d |  |  |  |  |
| 3 | 1.1.1 | Specifications |  | 43d | 2009-09-01 | 2009-10-29 |  | 0d |  | start no earlier than 2009-09-01 |  |  |
| 4 | 1.1.2 | INDEXING RULES |  | 14d | 2009-10-29 | 2009-11-17 |  | 318d |  |  |  |  |
| 5 | 1.1.2 | Integration Specifications |  | 14d | 2009-10-29 | 2009-11-17 |  | 318d |  |  |  |  |
| 6 | 1.1.2 | Analysis complete Entire Platform - General |  | 14d | 2009-10-30 | 2009-11-18 | 3 | 0d |  |  |  |  |
| 7 | 1.2 | **WP1 Mobile platform** |  | 80d | 2009-10-29 | 2010-02-19 |  | 102d |  |  | FL; O2H | 3152h |
| 8 | 1.2.1 | **Analysis Mobile Applications** |  | 23d | 2009-10-29 | 2009-11-30 |  | 252d |  |  | O2H | 184h |
| 9 | 1.2.1.1 | Specifications |  | 15d | 2009-10-29 | 2009-11-18 |  | 252d | 0d | start no earlier than 2009-10-29 |  |  |
| 10 | 1.2.1.2 | Analysis Mobile Platform |  | 15d | 2009-11-10 | 2009-11-30 |  | 254d | 0d | start no earlier than 2009-11-10 |  |  |
| 11 | 1.2.2 | **Equipment Acquisition** |  | 10d | 2009-11-19 | 2009-12-02 |  | 307d |  |  | FL | 80h |
| 12 | 1.2.2.1 | Acquisition |  | 5d | 2009-11-19 | 2009-11-25 | 6 | 307d | 0d |  |  |  |
| 13 | 1.2.2.2 | Installation |  | 5d | 2009-11-26 | 2009-12-02 | 12 | 307d |  |  |  |  |
| 14 | 1.2.3 | **iPhone development (from other project)** |  | 65d | 2009-11-19 | 2010-02-19 |  | 252d |  |  | FL | 520h |
| 15 | 1.2.3.1 | Smart questionaries |  | 45d | 2009-12-01 | 2010-02-03 | 10 | 259d | 0d |  |  |  |
| 16 | 1.2.3.2 | Measurements |  | 45d | 2009-12-01 | 2010-02-03 | 10 | 259d | 0d |  |  |  |
| 17 | 1.2.3.3 | Calendar and alarm |  | 45d | 2009-12-01 | 2010-02-03 | 10 | 259d | 0d |  |  |  |
| 18 | 1.2.3.4 | Security |  | 14d | 2009-12-01 | 2009-12-18 | 10 | 290d | 31d |  |  |  |
| 19 | 1.2.3.5 | Complete Build Version 1 application |  | 5d | 2010-02-04 | 2010-02-10 | 15, 16, 17, 18 | 259d |  |  |  |  |
| 20 | 1.2.3.6 | Implementation document |  | 50d | 2009-11-19 | 2010-01-29 | 9 | 252d | 0d |  |  |  |
| 21 | 1.2.3.7 | User manual |  | 15d | 2010-02-01 | 2010-02-19 | 20 | 252d |  |  |  |  |
| 22 | 1.2.4 | **Android Development** |  | 58d | 2009-11-19 | 2010-02-10 |  | 259d |  |  | FL | 464h |
| 23 | 1.2.4.1 | Smart questionaries |  | 30d | 2009-12-01 | 2010-01-13 | 10 | 254d | 0d |  |  |  |
| 24 | 1.2.4.2 | Measurements |  | 30d | 2009-12-01 | 2010-01-13 | 10 | 269d | 15d |  |  |  |
| 25 | 1.2.4.3 | Calendar and alarm |  | 15d | 2010-01-14 | 2010-02-03 | 23 | 254d | 0d |  |  |  |
| 26 | 1.2.4.4 | Security |  | 15d | 2010-01-14 | 2010-02-03 | 23 | 254d | 0d |  |  |  |
| 27 | 1.2.4.5 | Complete Build Version 1 application |  | 5d | 2010-02-04 | 2010-02-10 | 23, 24, 25, 26 | 254d | 0d |  |  |  |
| 28 | 1.2.4.6 | Implementation document |  | 50d | 2009-11-19 | 2010-01-29 | 9 | 267d |  |  |  |  |
| 29 | 1.2.4.7 | User manual |  | 15d | 2009-11-19 | 2009-12-09 | 9 | 302d |  |  |  |  |
| 30 | 1.2.4.8 | Development Complete - Mobile Platform | milestone | 0d | 2010-02-10 | 2010-02-10 | 27 | 259d |  |  |  |  |

Notes:
- 1: Although a cascade way is shown, the methodology must be iterative by prototypying
- 4: Documentation, iterative through development
- 5: Documentation, iterative through development
- 6: Documentation, iterative through development

| ID | WBS | Task | Type | Duration | Start | Finish | Predecessors | Total slack | Free slack | Resources | Work |
| --- | --- | --- | --- | --- | --- | --- | --- | --- | --- | --- | --- |
| 31 | 1.2.5 | **Quality assurance** |  | 78d | 2009-10-29 | 2010-02-17 |  | 102d |  | FL | 624h |
| 32 | 1.2.5.1 | Test Matrix |  | 5d | 2010-02-11 | 2010-02-17 | 27 | 254d |  |  |  |
| 33 | 1.2.5.2 | Test Quality assurance iPhone |  | 10d | 2009-10-29 | 2009-11-11 |  | 102d | 0d |  |  |
| 34 | 1.2.5.3 | Test Quality assurance Android |  | 10d | 2009-11-12 | 2009-11-25 | 33 | 102d | 0d |  |  |
| 35 | 1.2.6 | Complete First Product Delivery - MP | milestone | 0d | 2009-11-25 | 2009-11-25 | 33, 34 | 102d | 81d |  |  |
| 36 | 1.3 | **WP2 Web platform** |  | 137d | 2009-10-30 | 2010-05-12 |  | 21d |  |  | 160h |
| 37 | 1.3.1 | **WP2.1 Analysis** |  | 20d | 2009-10-30 | 2009-11-26 |  | 21d | 0d | O2H | 160h |
| 38 | 1.3.1.1 | Architecture document update |  | 15d | 2009-10-30 | 2009-11-19 | 3 | 26d |  |  |  |
| 39 | 1.3.1.2 | Analysis ActivA Platform |  | 15d | 2009-10-30 | 2009-11-19 | 3 | 21d | 0d |  |  |
| 40 | 1.3.1.1 | Test Matrix |  | 5d | 2009-11-20 | 2009-11-26 | 39 | 21d | 10d |  |  |
| 41 | 1.3.2 | **WP2.2 Development** |  | 117d | 2009-11-27 | 2010-05-12 | 37 | 21d |  |  |  |
| 42 | 1.3.2.1 | **WP2.2.1 Hardware** |  | 70d | 2009-11-27 | 2010-03-08 |  | 21d |  |  |  |
| 43 | 1.3.2.1.1 | Demo server installation |  | 10d | 2009-11-27 | 2009-12-10 | 3 | 21d | 0d |  |  |
| 44 | 1.3.2.1.2 | Load balancing servers |  | 30d | 2009-12-11 | 2010-01-25 | 43 | 241d | 0d |  |  |
| 45 | 1.3.2.1.3 | Disperse database |  | 30d | 2010-01-26 | 2010-03-08 | 44 | 241d |  |  |  |
| 46 | 1.3.2.2 | **WP2.2.2 Server side development** |  | 65d | 2009-12-11 | 2010-03-15 | 43 | 21d |  |  |  |
| 47 | 1.3.2.2.1 | Business objects (EJB3 Entities) |  | 20d | 2009-12-11 | 2010-01-11 | 40 | 21d | 0d |  |  |
| 48 | 1.3.2.2.2 | Business methods (EJB3 Sessions) |  | 20d | 2010-01-12 | 2010-02-08 | 47 | 21d | 0d |  |  |
| 49 | 1.3.2.2.3 | Client server communication |  | 20d | 2009-12-11 | 2010-01-11 | 40 | 264d | 40d |  |  |
| 50 | 1.3.2.2.4 | Client side communication (GWT RPC) |  | 20d | 2009-12-11 | 2010-01-11 | 40 | 264d | 40d |  |  |
| 51 | 1.3.2.2.5 | Client side communication (GWT JSON) |  | 20d | 2009-12-11 | 2010-01-11 | 40 | 264d | 40d |  |  |
| 52 | 1.3.2.2.6 | Web services (SOAP XML) |  | 20d | 2010-02-09 | 2010-03-08 | 48 | 21d | 0d |  |  |
| 53 | 1.3.2.2.1 | Test Period |  | 5d | 2010-03-09 | 2010-03-15 | 48, 49, 50, 51, 52 | 224d | 30d |  |  |
| 54 | 1.3.2.3 | **WP2.2.3 Client side development** |  | 106d | 2009-11-27 | 2010-04-27 |  | 36d |  |  |  |
| 55 | 1.3.2.3.1 | Client Business objects |  | 21d | 2009-11-27 | 2009-12-28 | 39 | 60d | 24d |  |  |
| 56 | 1.3.2.3.2 | Client UI Events |  | 20d | 2009-11-27 | 2009-12-24 | 39 | 36d | 0d |  |  |
| 57 | 1.3.2.3.3 | Client widgets |  | 25d | 2009-12-28 | 2010-02-01 | 56 | 36d | 0d |  |  |
| 58 | 1.3.2.3.4 | Client Services |  | 10d | 2010-02-02 | 2010-02-15 | 55, 56, 57 | 36d | 15d |  |  |
| 59 | 1.3.2.3.5 | Web Develpoment end to end consolidation |  | 10d | 2010-03-09 | 2010-03-22 | 52, 58 | 21d | 0d |  |  |
| 60 | 1.3.2.3.6 | Internatioalization and Accesibility |  | 20d | 2010-03-23 | 2010-04-19 | 59 | 194d | 0d |  |  |
| 61 | 1.3.2.3.1 | Test Period |  | 5d | 2010-04-20 | 2010-04-26 | 55, 56, 57, 58, 59, 60 | 194d | 0d |  |  |
| 62 | 1.3.2.3.2 | Document delivery |  | 1d | 2010-04-27 | 2010-04-27 | 61 | 205d |  |  |  |

Notes:
- 32: Test Matrix imust developed with specifications
- 35: Used to take patient measurements
- 38: This architecture document is not constrained only to the web platform.
- 40: Test Matrix imust developed with specifications
- 43: Initially only one server is needed
- 44: For an scalable choice multiple servers must be mounted
- 45: The database must be dispersed as well to avoid being the bottleneck
- 47: Objetos de negocio
- 48: Métodos de negocio
- 51: Additional sites not using RPC
- 53: Test Matrix imust developed with specifications
- 57: Will be replaced by the 3D UI.
- 61: Test Matrix imust developed with specifications

| ID | WBS | Task | Type | Duration | Start | Finish | Predecessors | Total slack | Free slack |
| --- | --- | --- | --- | --- | --- | --- | --- | --- | --- |
| 63 | 1.3.2.4 | **WP2.2.4 e-commerce** |  | 81d | 2009-11-27 | 2010-03-23 |  | 26d |  |
| 64 | 1.3.2.4.1 | 2.2.4.1 Analysis & Update to Arch. Doc |  | 15d | 2009-11-27 | 2009-12-17 | 39 | 26d | 0d |
| 65 | 1.3.2.4.4 | 2.2.4.2 Interface implementation |  | 45d | 2009-12-18 | 2010-02-22 | 64 | 26d | 0d |
| 66 | 1.3.2.4.5 | 2.2.4.3 Transaction |  | 15d | 2010-02-23 | 2010-03-15 | 65 | 26d | 0d |
| 67 | 1.3.2.4.1 | Test Period |  | 5d | 2010-03-16 | 2010-03-22 | 66, 64, 65 | 219d | 0d |
| 68 | 1.3.2.4.2 | Document delivery |  | 1d | 2010-03-23 | 2010-03-23 | 67 | 230d |  |
| 69 | 1.3.2.5 | **WP2.2.5 Security** |  | 82d | 2009-11-27 | 2010-03-24 |  | 25d |  |
| 70 | 1.3.2.5.1 | 2.2.5.1 Analysis & Update Architecture |  | 15d | 2009-11-27 | 2009-12-17 | 39 | 25d | 0d |
| 71 | 1.3.2.5.2 | Document delivery |  | 1d | 2009-12-18 | 2009-12-18 | 70 | 25d | 0d |
| 72 | 1.3.2.5.3 | 2.2.5.2 HTTPS |  | 45d | 2009-12-21 | 2010-02-23 | 71 | 25d | 0d |
| 73 | 1.3.2.5.4 | 2.2.5.3 Captchas |  | 15d | 2010-02-24 | 2010-03-16 | 72 | 25d | 0d |
| 74 | 1.3.2.5.1 | Test Period |  | 5d | 2010-03-17 | 2010-03-23 | 73, 70, 71, 72 | 218d | 0d |
| 75 | 1.3.2.5.2 | Document delivery |  | 1d | 2010-03-24 | 2010-03-24 | 74 | 229d |  |
| 76 | 1.3.2.6 | **WP 2.2.6 HL7** |  | 106d | 2009-11-27 | 2010-04-27 |  | 194d |  |
| 77 | 1.3.2.6.1 | **WP 2.2.6.1 Analysis** |  | 106d | 2009-11-27 | 2010-04-27 |  | 194d |  |
| 78 | 1.3.2.6.1.1 | 2.2.6.1 Architecture |  | 20d | 2009-11-27 | 2009-12-24 | 39 | 194d | 0d |
| 79 | 1.3.2.6.1.2 | 2.2.6.2 Development |  | 20d | 2009-12-28 | 2010-01-25 | 78 | 194d | 0d |
| 80 | 1.3.2.6.1.3 | 2.2.6.2 Web services for interfaces |  | 60d | 2010-01-26 | 2010-04-19 | 79 | 194d | 0d |
| 81 | 1.3.2.6.1.1 | Test Period |  | 5d | 2010-04-20 | 2010-04-26 | 80, 78, 79 | 194d | 0d |
| 82 | 1.3.2.6.1.2 | Document delivery |  | 1d | 2010-04-27 | 2010-04-27 | 81 | 205d |  |
| 83 | 1.3.2.7 | **Quality Assurance** |  | 12d | 2010-04-27 | 2010-05-12 |  | 194d |  |
| 84 | 1.3.2.7.1 | Test Matrix Update |  | 2d | 2010-04-27 | 2010-04-28 | 53, 61, 67, 74, 81 | 194d | 0d |
| 85 | 1.3.2.7.2 | Test Period |  | 10d | 2010-04-29 | 2010-05-12 | 84 | 194d |  |
| 86 | 1.3.3 | Implementation document |  | 110d | 2009-11-20 | 2010-04-26 | 39 | 206d |  |
| 87 | 1.3.4 | Development Complete - Web Platform | milestone | 0d | 2010-03-22 | 2010-03-22 | 52, 59, 66, 73 | 21d | 0d |

Notes:
- 67: Test Matrix imust developed with specifications
- 74: Test Matrix imust developed with specifications
- 81: Test Matrix imust developed with specifications
- 84: Agregar Test Matrix al principio y Text Period al final de todos los bloques en WP2 (integracion al final MH)
- 86: This implementation document is not constrained only to the web platform.

| ID | WBS | Task | Type | Duration | Start | Finish | Predecessors | Total slack | Free slack | Resources | Work |
| --- | --- | --- | --- | --- | --- | --- | --- | --- | --- | --- | --- |
| 88 | 1.4 | **WP3 Social Networking platform** |  | 115d | 2009-10-29 | 2010-04-09 |  | 37d |  | ISOCO | 920h |
| 89 | 1.4.1 | **WP3.1 Analysis** |  | 75d | 2009-11-19 | 2010-03-05 |  | 22d |  |  |  |
| 90 | 1.4.1.1 | 3.1.1 Social Networks |  | 20d | 2009-11-19 | 2009-12-16 | 6 | 22d | 0d |  |  |
| 91 | 1.4.1.2 | 3.1.2 Communication chanels and wikis |  | 10d | 2009-12-17 | 2009-12-31 | 90 | 22d | 0d |  |  |
| 92 | 1.4.1.3 | 3.1.3 Mobile access |  | 10d | 2010-01-04 | 2010-01-15 | 91 | 22d | 0d |  |  |
| 93 | 1.4.1.4 | 3.1.4 RSS |  | 25d | 2010-01-18 | 2010-02-19 | 92 | 22d | 0d |  |  |
| 94 | 1.4.1.5 | 3.1.5 Stadistics |  | 10d | 2010-02-22 | 2010-03-05 | 93 | 222d | 0d |  |  |
| 95 | 1.4.2 | **WP3.2 Development** |  | 110d | 2009-10-29 | 2010-04-02 |  | 102d |  |  |  |
| 96 | 1.4.2.1 | 3.2.1 Social network integration |  | 20d | 2010-03-08 | 2010-04-02 | 94 | 222d |  |  |  |
| 97 | 1.4.2.2 | 3.2.2 Communication chanels and wikis |  | 30d | 2010-02-22 | 2010-04-02 | 93 | 222d |  |  |  |
| 98 | 1.4.2.3 | 3.2.3 Mobile development |  | 20d | 2010-02-22 | 2010-03-19 | 93 | 22d | 0d |  |  |
| 99 | 1.4.2.4 | 3.2.4 RSS interfaces |  | 15d | 2010-02-22 | 2010-03-12 | 93 | 237d |  |  |  |
| 100 | 1.4.2.5 | 3.2.5 Stadistics package |  | 10d | 2009-10-29 | 2009-11-11 |  | 322d |  |  |  |
| 101 | 1.4.3 | Development Complete - SN Platform | milestone | 0d | 2010-03-19 | 2010-03-19 | 98 | 22d | 0d |  |  |
| 102 | 1.4.4 | **WP3.3 Quality assurance** |  | 15d | 2010-03-22 | 2010-04-09 |  | 217d |  |  |  |
| 103 | 1.4.4.1 | **WP3.3.1 Test matrix** |  | 10d | 2010-03-22 | 2010-04-02 |  | 217d |  |  |  |
| 104 | 1.4.4.1.1 | 3.3.1.1 Environment test matrix |  | 5d | 2010-03-22 | 2010-03-26 | 101 | 217d | 0d |  |  |
| 105 | 1.4.4.1.2 | 3.3.1.2 Scientific test matrix |  | 5d | 2010-03-29 | 2010-04-02 | 104 | 217d | 0d |  |  |
| 106 | 1.4.4.2 | **WP3.3.2 Test period** |  | 5d | 2010-04-05 | 2010-04-09 |  | 217d |  |  |  |
| 107 | 1.4.4.2.1 | 3.3.2.1 Environment test period |  | 5d | 2010-04-05 | 2010-04-09 | 105 | 217d |  |  |  |
| 108 | 1.4.4.2.2 | 3.3.2.2 Scientific test period |  | 5d | 2010-04-05 | 2010-04-09 | 105 | 217d | 0d |  |  |
| 109 | 1.4.5 | Complete First Product Delivery - SN | milestone | 0d | 2010-04-09 | 2010-04-09 | 108 | 217d |  |  |  |
| 110 | 1.5 | **WP4 Virtual 3D platform** |  | 122d | 2009-10-29 | 2010-04-20 |  | 15d |  | UPF | 4128h |
| 111 | 1.5.1 | **Analysis** |  | 42d | 2009-10-29 | 2009-12-28 |  | 15d |  |  | 3152h |
| 112 | 1.5.1.1 | **Analysis** |  | 2d | 2009-11-19 | 2009-11-20 | 6 | 300d | 0d |  | 32h |
| 113 | 1.5.1.1.1 | Level Rules Definition |  | 2d | 2009-11-19 | 2009-11-20 |  | 300d |  | LH; JVA | 32h |
| 114 | 1.5.1.1 | Animation script (screenplay) |  | 10d | 2009-11-19 | 2009-12-02 | 6 | 307d |  | LH; JVA | 160h |
| 115 | 1.5.1.1 | Test Matrix |  | 2d | 2009-11-19 | 2009-11-20 | 6 | 0d |  | SM; JVA; JD | 48h |

Notes:
- 91: Not fully deployed to leave it for later
- 92: Not fully deployed to leave it for later

| ID | WBS | Task | Type | Duration | Start | Finish | Predecessors | Total slack | Free slack | Resources | Work |
| --- | --- | --- | --- | --- | --- | --- | --- | --- | --- | --- | --- |
| 116 | 1.5.1.4 | **ActionScript development** |  | 42d | 2009-10-29 | 2009-12-28 |  | 290d |  |  | 2912h |
| 117 | 1.5.1.4.1 | **Genomics** |  | 15d | 2009-10-29 | 2009-11-18 |  | 317d |  |  | 120h |
| 118 | 1.5.1.4.1.1 | Genomics - Genotyping 4.1.1 | milestone | 0d | 2009-10-29 | 2009-10-29 |  | 332d |  |  |  |
| 119 | 1.5.1.4.1.2 | **Chromosome** |  | 15d | 2009-10-29 | 2009-11-18 |  | 317d |  |  | 120h |
| 120 | 1.5.1.4.1.2.1 | Rule Details |  | 5d | 2009-10-29 | 2009-11-04 |  | 317d | 0d | MH | 40h |
| 121 | 1.5.1.4.1.2.2 | Rendering |  | 10d | 2009-11-05 | 2009-11-18 | 120 | 317d |  | SM | 80h |
| 122 | 1.5.1.4.2 | **Genotyping CFTR 4.1.1** |  | 32d | 2009-10-29 | 2009-12-11 |  | 300d |  |  | 2032h |
| 123 | 1.5.1.4.2.1 | Rule Details |  | 2d | 2009-10-29 | 2009-10-30 |  | 330d |  | MH | 16h |
| 124 | 1.5.1.4.2.2 | **Data Aquistion** |  | 5d | 2009-10-29 | 2009-11-04 |  | 317d |  | MH | 120h |
| 125 | 1.5.1.4.2.2.1 | Object Profile |  | 5d | 2009-10-29 | 2009-11-04 |  | 317d | 0d | MH; JD | 80h |
| 126 | 1.5.1.4.2.2.2 | Data Links |  | 5d | 2009-10-29 | 2009-11-04 |  | 317d | 0d |  |  |
| 127 | 1.5.1.4.2.3 | Rendering |  | 10d | 2009-11-05 | 2009-11-18 | 125, 126 | 317d |  | SM | 80h |
| 128 | 1.5.1.4.2.4 | **Pro-Inflamatory Genotype** |  | 30d | 2009-10-29 | 2009-12-09 |  | 302d |  |  | 360h |
| 129 | 1.5.1.4.2.4.1 | Rule Details |  | 5d | 2009-10-29 | 2009-11-04 |  | 327d |  | MH | 40h |
| 130 | 1.5.1.4.2.4.2 | **Data Aquistion** |  | 20d | 2009-10-29 | 2009-11-25 |  | 302d |  | MH | 320h |
| 131 | 1.5.1.4.2.4.2.1 | Object Profile |  | 10d | 2009-10-29 | 2009-11-11 |  | 302d | 0d | MH; JD | 160h |
| 132 | 1.5.1.4.2.4.2.2 | Data Links |  | 10d | 2009-11-12 | 2009-11-25 | 131 | 302d | 0d |  |  |
| 133 | 1.5.1.4.2.4.3 | Rendering |  | 10d | 2009-11-26 | 2009-12-09 | 132 | 302d |  |  |  |
| 134 | 1.5.1.4.2.5 | **Chaperones** |  | 30d | 2009-10-29 | 2009-12-09 |  | 302d |  |  | 360h |
| 135 | 1.5.1.4.2.5.1 | Rule Details |  | 5d | 2009-10-29 | 2009-11-04 |  | 327d |  | MH | 40h |
| 136 | 1.5.1.4.2.5.2 | **Data Aquistion** |  | 20d | 2009-10-29 | 2009-11-25 |  | 302d |  | MH | 320h |
| 137 | 1.5.1.4.2.5.2.1 | Object Profile |  | 10d | 2009-10-29 | 2009-11-11 |  | 302d | 0d | MH; JD | 160h |
| 138 | 1.5.1.4.2.5.2.2 | Data Links |  | 10d | 2009-11-12 | 2009-11-25 | 137 | 302d | 0d |  |  |
| 139 | 1.5.1.4.2.5.3 | Rendering |  | 10d | 2009-11-26 | 2009-12-09 | 138 | 302d |  |  |  |

Notes:
- 117: Not fully deployed to leave it for later
- 118: Not fully deployed to leave it for later
- 119: Not fully deployed to leave it for later
- 120: Not fully deployed to leave it for later
- 121: Not fully deployed to leave it for later
- 122: Not fully deployed to leave it for later
- 123: Not fully deployed to leave it for later
- 124: Not fully deployed to leave it for later
- 125: Not fully deployed to leave it for later
- 126: Not fully deployed to leave it for later
- 127: Not fully deployed to leave it for later
- 128: Not fully deployed to leave it for later
- 129: Not fully deployed to leave it for later
- 130: Not fully deployed to leave it for later
- 131: Not fully deployed to leave it for later
- 132: Not fully deployed to leave it for later
- 133: Not fully deployed to leave it for later
- 134: Not fully deployed to leave it for later
- 135: Not fully deployed to leave it for later
- 136: Not fully deployed to leave it for later
- 137: Not fully deployed to leave it for later
- 138: Not fully deployed to leave it for later
- 139: Not fully deployed to leave it for later

| ID | WBS | Task | Type | Duration | Start | Finish | Predecessors | Total slack | Free slack | Resources | Work |
| --- | --- | --- | --- | --- | --- | --- | --- | --- | --- | --- | --- |
| 140 | 1.5.1.4.2.6 | **Gene Regulation** |  | 10d | 2009-10-29 | 2009-11-11 |  | 322d |  |  |  |
| 141 | 1.5.1.4.2.6.1 | Visual Network Rules |  | 10d | 2009-10-29 | 2009-11-11 |  | 322d |  |  |  |
| 142 | 1.5.1.4.2.6.2 | Rule Details |  | 10d | 2009-10-29 | 2009-11-11 |  | 322d |  |  |  |
| 143 | 1.5.1.4.2.6.3 | **Data Aquistion** |  | 10d | 2009-10-29 | 2009-11-11 |  | 322d |  |  |  |
| 144 | 1.5.1.4.2.6.3.1 | Object Profile |  | 10d | 2009-10-29 | 2009-11-11 |  | 322d |  |  |  |
| 145 | 1.5.1.4.2.6.3.2 | Data Links |  | 10d | 2009-10-29 | 2009-11-11 |  | 322d |  |  |  |
| 146 | 1.5.1.4.2.6.4 | Rendering |  | 10d | 2009-10-29 | 2009-11-11 |  | 322d |  |  |  |
| 147 | 1.5.1.4.2.7 | **Functional Genotype** |  | 30d | 2009-10-29 | 2009-12-09 |  | 302d |  |  | 400h |
| 148 | 1.5.1.4.2.7.1 | Visual Network Rules |  | 5d | 2009-10-29 | 2009-11-04 |  | 327d |  | MH | 40h |
| 149 | 1.5.1.4.2.7.2 | Rule Details |  | 5d | 2009-10-29 | 2009-11-04 |  | 327d |  | MH | 40h |
| 150 | 1.5.1.4.2.7.3 | **Data Aquistion** |  | 20d | 2009-10-29 | 2009-11-25 |  | 302d |  | MH | 320h |
| 151 | 1.5.1.4.2.7.3.1 | Object Profile |  | 10d | 2009-10-29 | 2009-11-11 |  | 302d | 0d | MH; JD | 160h |
| 152 | 1.5.1.4.2.7.3.2 | Data Links |  | 10d | 2009-11-12 | 2009-11-25 | 151 | 302d | 0d |  |  |
| 153 | 1.5.1.4.2.7.4 | Rendering |  | 10d | 2009-11-26 | 2009-12-09 | 152 | 302d |  |  |  |
| 154 | 1.5.1.4.2.8 | **Proteomics** |  | 0d | 2009-10-29 | 2009-10-29 |  | 332d |  |  |  |
| 155 | 1.5.1.4.2.8.1 | Genomics - Genotyping 4.1.1 | milestone | 0d | 2009-10-29 | 2009-10-29 |  | 332d |  |  |  |
| 156 | 1.5.1.4.2.9 | **Experimental Information** |  | 15d | 2009-10-29 | 2009-11-18 |  | 317d |  |  | 120h |
| 157 | 1.5.1.4.2.9.1 | Rule Details |  | 5d | 2009-10-29 | 2009-11-04 |  | 317d | 0d | MH | 40h |
| 158 | 1.5.1.4.2.9.2 | Rendering |  | 10d | 2009-11-05 | 2009-11-18 | 157 | 317d |  | SM | 80h |
| 159 | 1.5.1.4.2.10 | **BioInformatics** |  | 15d | 2009-11-23 | 2009-12-11 | 112 | 300d |  |  | 216h |
| 160 | 1.5.1.4.2.10.1 | Rule Details |  | 2d | 2009-11-23 | 2009-11-24 |  | 313d |  | MH | 16h |
| 161 | 1.5.1.4.2.10.2 | **Data Aquistion** |  | 5d | 2009-11-23 | 2009-11-27 |  | 300d |  | MH | 120h |
| 162 | 1.5.1.4.2.10.2.1 | Object Profile |  | 5d | 2009-11-23 | 2009-11-27 |  | 300d | 0d | MH; JD | 80h |
| 163 | 1.5.1.4.2.10.2.2 | Data Links |  | 5d | 2009-11-23 | 2009-11-27 |  | 300d | 0d |  |  |
| 164 | 1.5.1.4.2.10.3 | Rendering |  | 10d | 2009-11-30 | 2009-12-11 | 162, 163 | 300d |  | SM | 80h |

Notes:
- 140: Not fully deployed to leave it for later
- 141: Not fully deployed to leave it for later
- 142: Not fully deployed to leave it for later
- 143: Not fully deployed to leave it for later
- 144: Not fully deployed to leave it for later
- 145: Not fully deployed to leave it for later
- 146: Not fully deployed to leave it for later
- 147: Not fully deployed to leave it for later
- 148: Not fully deployed to leave it for later
- 149: Not fully deployed to leave it for later
- 150: Not fully deployed to leave it for later
- 151: Not fully deployed to leave it for later
- 152: Not fully deployed to leave it for later
- 153: Not fully deployed to leave it for later
- 154: Not fully deployed to leave it for later
- 155: Not fully deployed to leave it for later
- 156: Not fully deployed to leave it for later
- 157: Not fully deployed to leave it for later
- 158: Not fully deployed to leave it for later
- 159: Not fully deployed to leave it for later
- 160: Not fully deployed to leave it for later
- 161: Not fully deployed to leave it for later
- 162: Not fully deployed to leave it for later
- 163: Not fully deployed to leave it for later
- 164: Not fully deployed to leave it for later

| ID | WBS | Task | Duration | Start | Finish | Predecessors | Total slack | Free slack | Resources | Work |
| --- | --- | --- | --- | --- | --- | --- | --- | --- | --- | --- |
| 165 | 1.5.1.4.2.11 | **Metabolomics** | 30d | 2009-10-29 | 2009-12-09 |  | 302d |  |  | 360h |
| 166 | 1.5.1.4.2.11.1 | Rule Details | 5d | 2009-10-29 | 2009-11-04 |  | 327d |  | MH | 40h |
| 167 | 1.5.1.4.2.11.2 | **Data Aquistion** | 20d | 2009-10-29 | 2009-11-25 |  | 302d |  | MH | 320h |
| 168 | 1.5.1.4.2.11.2.1 | Object Profile | 10d | 2009-10-29 | 2009-11-11 |  | 302d | 0d | MH; JD | 160h |
| 169 | 1.5.1.4.2.11.2.2 | Data Links | 10d | 2009-11-12 | 2009-11-25 | 168 | 302d | 0d |  |  |
| 170 | 1.5.1.4.2.11.3 | Rendering | 10d | 2009-11-26 | 2009-12-09 | 169 | 302d |  |  |  |
| 171 | 1.5.1.4.3 | **Structural Bioinformatics** | 42d | 2009-10-29 | 2009-12-28 |  | 290d |  |  | 760h |
| 172 | 1.5.1.4.3.1 | Rule Details | 5d | 2009-10-29 | 2009-11-04 |  | 327d |  | MH | 40h |
| 173 | 1.5.1.4.3.2 | **Data Aquistion** | 20d | 2009-10-29 | 2009-11-25 |  | 302d |  | MH | 320h |
| 174 | 1.5.1.4.3.2.1 | Object Profile | 10d | 2009-10-29 | 2009-11-11 |  | 302d | 0d | MH; JD | 160h |
| 175 | 1.5.1.4.3.2.2 | Data Links | 10d | 2009-11-12 | 2009-11-25 | 174 | 302d | 0d |  |  |
| 176 | 1.5.1.4.3.3 | Rendering | 10d | 2009-11-26 | 2009-12-09 | 175 | 302d |  |  |  |
| 177 | 1.5.1.4.3.4 | **Gene Regulation** | 10d | 2009-10-29 | 2009-11-11 |  | 322d |  |  |  |
| 178 | 1.5.1.4.3.4.1 | Visual Network Rules | 10d | 2009-10-29 | 2009-11-11 |  | 322d |  |  |  |
| 179 | 1.5.1.4.3.4.2 | Rule Details | 10d | 2009-10-29 | 2009-11-11 |  | 322d |  |  |  |
| 180 | 1.5.1.4.3.4.3 | **Data Aquistion** | 10d | 2009-10-29 | 2009-11-11 |  | 322d |  |  |  |
| 181 | 1.5.1.4.3.4.3.1 | Object Profile | 10d | 2009-10-29 | 2009-11-11 |  | 322d |  |  |  |
| 182 | 1.5.1.4.3.4.3.2 | Data Links | 10d | 2009-10-29 | 2009-11-11 |  | 322d |  |  |  |
| 183 | 1.5.1.4.3.4.4 | Rendering | 10d | 2009-10-29 | 2009-11-11 |  | 322d |  |  |  |
| 184 | 1.5.1.4.3.5 | **Functional Genotype** | 42d | 2009-10-29 | 2009-12-28 |  | 290d |  |  | 400h |
| 185 | 1.5.1.4.3.5.1 | Visual Network Rules | 5d | 2009-10-29 | 2009-11-04 |  | 327d |  | MH | 40h |
| 186 | 1.5.1.4.3.5.2 | Rule Details | 5d | 2009-10-29 | 2009-11-04 |  | 327d |  | MH | 40h |
| 187 | 1.5.1.4.3.5.3 | **Data Aquistion** | 20d | 2009-10-29 | 2009-11-25 |  | 302d |  | MH | 320h |
| 188 | 1.5.1.4.3.5.3.1 | Object Profile | 10d | 2009-10-29 | 2009-11-11 |  | 302d | 0d | MH; JD | 160h |
| 189 | 1.5.1.4.3.5.3.2 | Data Links | 10d | 2009-11-12 | 2009-11-25 | 188 | 302d | 0d |  |  |
| 190 | 1.5.1.4.3.5.4 | Rendering | 10d | 2009-11-26 | 2009-12-09 | 189 | 302d |  |  |  |
| 193 | 1.5.1.4.3.5.5 | Entities | 10d | 2009-10-29 | 2009-11-11 |  | 322d |  |  |  |
| 194 | 1.5.1.4.3.5.6 | Basic commands | 10d | 2009-10-29 | 2009-11-11 |  | 322d |  |  |  |
| 195 | 1.5.1.4.3.5.7 | Entities | 10d | 2009-10-29 | 2009-11-11 |  | 322d |  |  |  |
| 196 | 1.5.1.4.3.5.8 | Basic commands | 10d | 2009-10-29 | 2009-11-11 |  | 322d |  |  |  |
| 197 | 1.5.1.4.3.5.9 | Entities | 10d | 2009-10-29 | 2009-11-11 |  | 322d |  |  |  |
| 198 | 1.5.1.4.3.5.10 | Basic commands | 10d | 2009-10-29 | 2009-11-11 |  | 322d |  |  |  |
| 199 | 1.5.1.4.3.5.11 | Entities | 10d | 2009-10-29 | 2009-11-11 |  | 322d |  |  |  |
| 200 | 1.5.1.4.3.5.12 | Basic commands | 10d | 2009-10-29 | 2009-11-11 |  | 322d |  |  |  |
| 201 | 1.5.1.4.3.5.13 | Entities | 10d | 2009-11-23 | 2009-12-04 | 115 | 305d |  |  |  |
| 202 | 1.5.1.4.3.5.14 | Basic commands | 10d | 2009-11-23 | 2009-12-04 | 115 | 305d |  |  |  |
| 203 | 3 | Storyboard (From campus to molecular structure) | 25d | 2009-11-23 | 2009-12-28 | 115 | 290d |  |  |  |

Notes:
- 165: Not fully deployed to leave it for later
- 166: Not fully deployed to leave it for later
- 167: Not fully deployed to leave it for later
- 168: Not fully deployed to leave it for later
- 169: Not fully deployed to leave it for later
- 170: Not fully deployed to leave it for later
- 171: Not fully deployed to leave it for later
- 172: Not fully deployed to leave it for later
- 173: Not fully deployed to leave it for later
- 174: Not fully deployed to leave it for later
- 175: Not fully deployed to leave it for later
- 176: Not fully deployed to leave it for later
- 177: Not fully deployed to leave it for later
- 178: Not fully deployed to leave it for later
- 179: Not fully deployed to leave it for later
- 180: Not fully deployed to leave it for later
- 181: Not fully deployed to leave it for later
- 182: Not fully deployed to leave it for later
- 183: Not fully deployed to leave it for later
- 184: Not fully deployed to leave it for later
- 185: Not fully deployed to leave it for later
- 186: Not fully deployed to leave it for later
- 187: Not fully deployed to leave it for later
- 188: Not fully deployed to leave it for later
- 189: Not fully deployed to leave it for later
- 190: Not fully deployed to leave it for later
- 193: Not fully deployed to leave it for later
- 194: Not fully deployed to leave it for later
- 195: Not fully deployed to leave it for later
- 196: Not fully deployed to leave it for later
- 197: Not fully deployed to leave it for later
- 198: Not fully deployed to leave it for later
- 199: Not fully deployed to leave it for later
- 200: Not fully deployed to leave it for later
- 201: Not fully deployed to leave it for later
- 202: Not fully deployed to leave it for later

| ID | WBS | Task | Type | Duration | Start | Finish | Predecessors | Total slack | Free slack | Resources | Work |
| --- | --- | --- | --- | --- | --- | --- | --- | --- | --- | --- | --- |
| 204 | 1.5.2 | **Development** |  | 70d | 2009-11-23 | 2010-03-02 |  | 0d |  |  |  |
| 205 | 1.5.2.1 | Object design frameworks |  | 10d | 2009-11-23 | 2009-12-04 | 115 | 0d |  |  |  |
| 206 | 1.5.2.2 | Object design libraries |  | 45d | 2009-12-07 | 2010-02-09 | 205 | 260d |  |  |  |
| 207 | 1.5.2.3 | complete object designs |  | 45d | 2009-12-07 | 2010-02-09 | 205 | 0d |  |  |  |
| 208 | 1.5.2.4 | Stage design |  | 15d | 2010-02-10 | 2010-03-02 | 207 | 0d |  |  |  |
| 209 | 1.5.3 | Development Complete - VR Platform | milestone | 0d | 2010-03-02 | 2010-03-02 | 208 | 35d |  |  |  |
| 210 | 1.5.4 | **Quality assurance** |  | 35d | 2010-03-03 | 2010-04-20 |  | 0d |  |  |  |
| 211 | 1.5.4.1 | **Test matrix** |  | 10d | 2010-03-03 | 2010-03-16 |  | 0d |  |  |  |
| 212 | 1.5.4.1.1 | Environment test matrix |  | 5d | 2010-03-03 | 2010-03-09 | 208 | 0d |  |  |  |
| 213 | 1.5.4.1.2 | Scientific test matrix |  | 5d | 2010-03-10 | 2010-03-16 | 212 | 0d |  |  |  |
| 214 | 1.5.4.2 | **Test period** |  | 25d | 2010-03-17 | 2010-04-20 |  | 0d |  |  |  |
| 215 | 1.5.4.2.1 | Environment test period |  | 25d | 2010-03-17 | 2010-04-20 | 213 | 0d |  |  |  |
| 216 | 1.5.4.2.2 | Scientific test period |  | 25d | 2010-03-17 | 2010-04-20 | 213 | 210d |  |  |  |
| 217 | 1.5.5 | Complete First Product Delivery - VR | milestone | 0d | 2010-04-20 | 2010-04-20 | 215 | 0d |  |  |  |
| 218 | 1.6 | **WP5 Integration** |  | 47d | 2010-03-23 | 2010-05-26 |  | 135d |  | O2H | 1056h |
| 219 | 1.6.1 | **Mobile - Web integration** |  | 40d | 2010-03-23 | 2010-05-17 |  | 191d |  | FL | 320h |
| 220 | 1.6.1.1 | XML communication |  | 10d | 2010-03-23 | 2010-04-05 | 35, 87 | 191d | 0d |  |  |
| 221 | 1.6.1.2 | Security implementation |  | 10d | 2010-04-06 | 2010-04-19 | 220 | 191d | 0d |  |  |
| 222 | 1.6.1.3 | Mobile to Server communication |  | 10d | 2010-04-20 | 2010-05-03 | 221 | 191d | 0d |  |  |
| 223 | 1.6.1.4 | Server to Mobile communication |  | 10d | 2010-05-04 | 2010-05-17 | 222 | 191d | 0d |  |  |
| 224 | 1.6.2 | Platform Mobile Integration - Complete | milestone | 0d | 2010-05-17 | 2010-05-17 | 223 | 191d | 0d |  |  |
| 225 | 1.6.3 | **Social networks** |  | 30d | 2010-03-23 | 2010-05-03 |  | 201d |  |  |  |
| 226 | 1.6.3.1 | Facebook integration |  | 15d | 2010-03-23 | 2010-04-12 | 101, 87 | 201d | 0d |  |  |
| 227 | 1.6.3.2 | Other networks |  | 15d | 2010-04-13 | 2010-05-03 | 226 | 201d | 0d |  |  |
| 228 | 1.6.4 | Platform Social Networking Integration - Complete | milestone | 0d | 2010-05-03 | 2010-05-03 | 227 | 201d | 10d |  |  |

Notes:
- 221: Described up

| ID | WBS | Task | Type | Duration | Start | Finish | Predecessors | Total slack | Free slack | Resources | Work |
| --- | --- | --- | --- | --- | --- | --- | --- | --- | --- | --- | --- |
| 229 | 1.6.5 | **Virtual 3D - Web integration** |  | 14d | 2010-04-21 | 2010-05-10 |  | 196d |  | O2H | 112h |
| 230 | 1.6.5.1 | **ActionScript - JavaScript** |  | 14d | 2010-04-21 | 2010-05-10 |  | 196d |  |  |  |
| 231 | 1.6.5.1.1 | Reuse of entities |  | 7d | 2010-04-21 | 2010-04-29 | 217 | 203d |  |  |  |
| 232 | 1.6.5.1.2 | Reuse of commands |  | 7d | 2010-04-21 | 2010-04-29 | 217 | 203d |  |  |  |
| 233 | 1.6.5.1.1 | Demo of integration |  | 14d | 2010-04-21 | 2010-05-10 | 217, 87 | 196d | 0d |  |  |
| 234 | 1.6.6 | Platform VR 3D Integration - Complete | milestone | 0d | 2010-05-10 | 2010-05-10 | 233 | 196d | 5d |  |  |
| 235 | 1.6.7 | **Semantic Web (HL7)** |  | 10d | 2010-03-23 | 2010-04-05 |  | 221d |  | ISOCO | 80h |
| 236 | 1.6.7.1 | Environment Setting |  | 10d | 2010-03-23 | 2010-04-05 | 87 | 221d | 30d |  |  |
| 237 | 1.6.8 | Platform Integration - Complete | milestone | 0d | 2010-05-17 | 2010-05-17 | 224, 228, 234, 236 | 191d |  |  |  |
| 238 | 1.6.5 | **Quality assurance** |  | 26d | 2010-04-21 | 2010-05-26 |  | 114d |  |  | 168h |
| 239 | 1.6.5.1 | **Test matrix** |  | 6d | 2010-04-21 | 2010-04-28 |  | 114d |  |  | 168h |
| 240 | 1.6.5.1.1 | Test Matrix Update |  | 1d | 2010-04-21 | 2010-04-21 | 35, 87, 209, 217, 101 | 114d | 0d | FG | 8h |
| 241 | 1.6.5.1.1 | Patient matrix |  | 5d | 2010-04-22 | 2010-04-28 | 240 | 114d | 0d | FG | 40h |
| 242 | 1.6.5.1.2 | Clinician matrix |  | 5d | 2010-04-22 | 2010-04-28 | 240 | 114d | 0d | LH | 40h |
| 243 | 1.6.5.1.3 | Researcher matrix |  | 5d | 2010-04-22 | 2010-04-28 | 240 | 204d |  | JVA | 40h |
| 244 | 1.6.5.1.4 | Technical matrix |  | 5d | 2010-04-22 | 2010-04-28 | 240 | 124d | 0d | MH | 40h |
| 245 | 1.6.5.2 | **Test period** |  | 20d | 2010-04-29 | 2010-05-26 |  | 114d |  |  |  |
| 246 | 1.6.5.2.1 | Patient test |  | 10d | 2010-04-29 | 2010-05-12 | 241 | 114d | 0d |  |  |
| 247 | 1.6.5.2.2 | Clinician test |  | 10d | 2010-04-29 | 2010-05-12 | 242 | 114d | 0d |  |  |
| 248 | 1.6.5.2.3 | Researcher tests |  | 10d | 2010-05-13 | 2010-05-26 | 247, 246 | 114d | 0d |  |  |
| 249 | 1.6.5.2.4 | Technical tests |  | 10d | 2010-04-29 | 2010-05-12 | 244 | 124d | 10d |  |  |
| 250 | 1.6.6 | Complete First Product Delivery - WP | milestone | 0d | 2010-05-26 | 2010-05-26 | 246, 247, 248, 249 | 114d | 0d |  |  |
| 251 | 1.9 | **WP6 Inference and reasoning** |  | 85d | 2010-04-21 | 2010-08-17 |  | 0d |  | UPF | 680h |
| 252 | 1.9.1 | **Analysis** |  | 10d | 2010-04-21 | 2010-05-04 |  | 0d |  |  |  |
| 253 | 1.9.1.1 | Database reference document |  | 5d | 2010-04-21 | 2010-04-27 | 35, 87, 101, 209, 217 | 0d |  |  |  |
| 254 | 1.9.1.2 | Knoweldge generation document |  | 5d | 2010-04-28 | 2010-05-04 | 253 | 0d |  |  |  |

Notes:
- 246: Do not mix the testing phase named here with the WP Patient Management, they are not related

| ID | WBS | Task | Type | Duration | Start | Finish | Predecessors | Total slack | Free slack | Resources | Work |
| --- | --- | --- | --- | --- | --- | --- | --- | --- | --- | --- | --- |
| 255 | 1.9.2 | **Development** |  | 35d | 2010-05-05 | 2010-06-22 |  | 0d |  |  |  |
| 256 | 1.9.2.1 | Integration of databases |  | 5d | 2010-05-05 | 2010-05-11 | 254 | 0d |  |  |  |
| 257 | 1.9.2.2 | Interface for accessing information |  | 15d | 2010-05-12 | 2010-06-01 | 256 | 0d |  |  |  |
| 258 | 1.9.2.3 | Integration of new results |  | 15d | 2010-06-02 | 2010-06-22 | 257 | 0d |  |  |  |
| 259 | 1.9.2.4 | Development Complete - Inference Platform | milestone | 0d | 2010-06-22 | 2010-06-22 | 258 | 0d |  |  |  |
| 260 | 1.9.3 | **Quality Assurance** |  | 40d | 2010-06-23 | 2010-08-17 |  | 111d |  |  |  |
| 261 | 1.9.3.1 | **Test Matrix** |  | 10d | 2010-06-23 | 2010-07-06 |  | 111d |  |  |  |
| 262 | 1.9.3.1.1 | Clinician test matrix |  | 5d | 2010-06-23 | 2010-06-29 | 259 | 111d | 0d |  |  |
| 263 | 1.9.3.1.2 | Researcher test matrix |  | 5d | 2010-06-30 | 2010-07-06 | 262 | 111d | 0d |  |  |
| 264 | 1.9.3.1.3 | Platform Integration - Complete | milestone | 0d | 2010-07-06 | 2010-07-06 | 263 | 111d | 0d |  |  |
| 265 | 1.9.3.2 | **Test Period** |  | 30d | 2010-07-07 | 2010-08-17 |  | 111d |  |  |  |
| 266 | 1.9.3.2.1 | Clinician test period |  | 15d | 2010-07-07 | 2010-07-27 | 264 | 111d | 0d |  |  |
| 267 | 1.9.3.2.2 | Researcher test period |  | 15d | 2010-07-28 | 2010-08-17 | 266 | 111d | 0d |  |  |
| 268 | 1.7 | Platform Version 1 - Complete | milestone | 0d | 2010-08-17 | 2010-08-17 | 267 | 111d | 0d |  |  |
| 269 | 1.8 | Code versioning |  | 14d | 2010-08-18 | 2010-09-06 | 268 | 111d |  |  |  |
| 270 | 1.9 | **WP7 Patient management** |  | 272d | 2009-10-29 | 2010-11-16 |  | 60d |  | AMFQ | 2176h |
| 271 | 1.9.1 | **Preparation** |  | 140d | 2009-10-29 | 2010-05-14 |  | 122d |  |  |  |
| 272 | 1.9.1.1 | Protocol document |  | 25d | 2009-10-29 | 2009-12-02 |  | 122d | 0d |  |  |
| 273 | 1.9.1.2 | Clinician training |  | 60d | 2009-12-03 | 2010-02-26 | 272 | 122d | 0d |  |  |
| 274 | 1.9.1.3 | Condifentiality agreement |  | 30d | 2010-03-01 | 2010-04-09 | 273 | 122d | 0d |  |  |
| 275 | 1.9.1.4 | Patient selection |  | 15d | 2010-04-12 | 2010-04-30 | 274 | 122d | 0d |  |  |
| 276 | 1.9.1.5 | Prueba completa con unos individuos |  | 10d | 2010-05-03 | 2010-05-14 | 275 | 122d | 8d |  |  |
| 277 | 1.9.2 | **Initiation** |  | 70d | 2010-05-27 | 2010-09-01 |  | 114d |  |  |  |
| 278 | 1.9.2.1 | Educational training |  | 15d | 2010-05-27 | 2010-06-16 | 276, 250 | 114d | 0d |  |  |
| 279 | 1.9.2.2 | Patient observation |  | 40d | 2010-06-17 | 2010-08-11 | 278 | 114d | 0d |  |  |
| 280 | 1.9.2.3 | Patient post observation |  | 15d | 2010-08-12 | 2010-09-01 | 279 | 114d |  |  |  |

Notes:
- 269: Installment of SVN or CVS
- 270: Deberia de ser WP7 y arreglar los otros
- 276: Atar antes de Test matrix y period

| ID | WBS | Task | Type | Duration | Start | Finish | Predecessors | Total slack | Free slack | Resources | Work |
| --- | --- | --- | --- | --- | --- | --- | --- | --- | --- | --- | --- |
| 281 | 1.9.3 | **Evaluation and control** |  | 105d | 2010-06-23 | 2010-11-16 |  | 0d |  |  |  |
| 282 | 1.9.3.1 | Initial Analysis and Scientific treatment of data |  | 15d | 2010-06-23 | 2010-07-13 | 259 | 0d |  |  |  |
| 283 | 1.9.3.2 | Scientific treatment of data |  | 60d | 2010-07-14 | 2010-10-05 | 282 | 0d |  |  |  |
| 284 | 1.9.3.3 | Clinician treatment of data |  | 30d | 2010-10-06 | 2010-11-16 | 283 | 0d |  |  |  |
| 285 | 1.10 | Platform Version 1.1 - Complete | milestone | 0d | 2010-11-16 | 2010-11-16 | 284 | 0d |  |  |  |
| 286 | 2 | **GP 1B Version 1.1 (revision)** |  | 332d | 2009-10-29 | 2011-02-08 |  | 0d |  |  | 4832h |
| 287 | 2.1 | **WP8 (revision)** |  | 332d | 2009-10-29 | 2011-02-08 |  | 0d |  | O2H | 2656h |
| 288 | 2.1.1 | **Analysis** |  | 20d | 2010-11-17 | 2010-12-14 |  | 0d |  |  |  |
| 289 | 2.1.1.1 | Modification Requests |  | 10d | 2010-11-17 | 2010-11-30 | 285 | 0d |  |  |  |
| 290 | 2.1.1.2 | Knoweldge generation document |  | 10d | 2010-12-01 | 2010-12-14 | 289 | 0d |  |  |  |
| 291 | 2.1.2 | **Development** |  | 30d | 2010-12-15 | 2011-01-25 |  | 0d |  |  |  |
| 292 | 2.1.2.1 | Modification Development |  | 15d | 2010-12-15 | 2011-01-04 | 290 | 0d |  |  |  |
| 293 | 2.1.2.2 | Integration of new results |  | 15d | 2011-01-05 | 2011-01-25 | 292 | 0d |  |  |  |
| 294 | 2.1.2.3 | Development Complete - VR Platform | milestone | 0d | 2011-01-25 | 2011-01-25 | 293 | 0d |  |  |  |
| 295 | 2.1.3 | **Quality Assurance** |  | 332d | 2009-10-29 | 2011-02-08 |  | 0d |  |  |  |
| 296 | 2.1.3.1 | **Test Matrix** |  | 10d | 2011-01-26 | 2011-02-08 |  | 0d |  |  |  |
| 297 | 2.1.3.1.1 | Clinician test matrix |  | 5d | 2011-01-26 | 2011-02-01 | 294 | 0d |  |  |  |
| 298 | 2.1.3.1.2 | Researcher test matrix |  | 5d | 2011-02-02 | 2011-02-08 | 297 | 0d |  |  |  |
| 299 | 2.1.3.2 | Platform Integration - Complete | milestone | 0d | 2011-02-08 | 2011-02-08 | 298 | 0d |  |  |  |
| 300 | 2.1.3.3 | **Test Period** |  | 30d | 2009-10-29 | 2009-12-09 |  | 30d |  |  |  |
| 301 | 2.1.3.3.1 | Clinician test period |  | 15d | 2009-10-29 | 2009-11-18 |  | 30d | 0d |  |  |
| 302 | 2.1.3.3.2 | Researcher test period |  | 15d | 2009-11-19 | 2009-12-09 | 301 | 30d | 0d |  |  |
| 303 | 2.2 | Platform Version 1.1 - Complete | milestone | 0d | 2009-12-09 | 2009-12-09 | 302 | 30d | 0d |  |  |
| 304 | 2.3 | **WP9 Patient management** |  | 270d | 2009-12-10 | 2010-12-24 |  | 30d |  | AMFQ | 2160h |
| 305 | 2.3.1 | **Preparation** |  | 180d | 2009-12-10 | 2010-08-20 |  | 30d |  |  |  |
| 306 | 2.3.1.1 | Protocol document |  | 25d | 2009-12-10 | 2010-01-15 | 303 | 277d |  |  |  |
| 307 | 2.3.1.2 | Clinician training |  | 20d | 2009-12-10 | 2010-01-08 | 303 | 282d |  |  |  |
| 308 | 2.3.1.3 | Condifentiality agreement |  | 20d | 2009-12-10 | 2010-01-08 | 303 | 30d | 0d |  |  |

| ID | WBS | Task | Duration | Start | Finish | Predecessors | Total slack | Free slack | Constraint | Resources | Work |
| --- | --- | --- | --- | --- | --- | --- | --- | --- | --- | --- | --- |
| 309 | 2.3.1.4 | **Development** | 70d | 2010-01-11 | 2010-04-16 |  | 30d |  |  |  |  |
| 310 | 2.3.1.4.1 | Educational training | 15d | 2010-01-11 | 2010-01-29 | 308 | 267d |  |  |  |  |
| 311 | 2.3.1.4.2 | Patient selection | 15d | 2010-01-11 | 2010-01-29 | 308 | 30d | 0d |  |  |  |
| 312 | 2.3.1.4.3 | Patient observation | 40d | 2010-02-01 | 2010-03-26 | 311 | 30d | 0d |  |  |  |
| 313 | 2.3.1.4.4 | Patient post observation | 15d | 2010-03-29 | 2010-04-16 | 312 | 30d | 0d |  |  |  |
| 314 | 2.3.1.5 | **Evaluation and control** | 90d | 2010-04-19 | 2010-08-20 |  | 30d |  |  |  |  |
| 315 | 2.3.1.5.1 | Scientific treatment of data | 60d | 2010-04-19 | 2010-07-09 | 313 | 30d | 0d |  |  |  |
| 316 | 2.3.1.5.2 | Clinician treatment of data | 30d | 2010-07-12 | 2010-08-20 | 315 | 30d | 0d |  |  |  |
| 317 | 2.3.2 | **Evaluation and control** | 90d | 2010-08-23 | 2010-12-24 |  | 30d |  |  |  |  |
| 318 | 2.3.2.1 | Scientific treatment of data | 60d | 2010-08-23 | 2010-11-12 | 316 | 30d | 0d |  |  |  |
| 319 | 2.3.2.2 | Clinician treatment of data | 30d | 2010-11-15 | 2010-12-24 | 318 | 30d | 0d |  |  |  |
| 320 | 2.4 | **Version 1.1 - Demonstration** | 2d | 2010-12-27 | 2010-12-28 |  | 30d |  |  | O2H | 16h |
| 321 | 2.4.1 | Internal Demonstration | 1d | 2010-12-27 | 2010-12-27 | 319 | 30d | 0d |  |  |  |
| 322 | 2.4.2 | Congress Demonstration | 1d | 2010-12-28 | 2010-12-28 | 321 | 30d |  |  |  |  |
| 323 | 3 | **GP Administrative** | 159d | 2009-08-07 | 2010-03-19 |  | 0d |  |  | O2H | 1272h |
| 324 | 3.1 | Initial Study | 60d | 2009-08-07 | 2009-10-29 |  | 0d |  | must finish on 2009-10-29 |  |  |
| 325 | 3.2 | Functional Analysis | 60d | 2009-08-07 | 2009-10-29 |  | 0d |  | must finish on 2009-10-29 |  |  |
| 326 | 3.3 | Business Plan | 60d | 2009-10-29 | 2010-01-22 |  | 232d | 0d |  |  |  |
| 327 | 3.4 | Difusion Plan | 40d | 2010-01-25 | 2010-03-19 | 326 | 232d |  |  |  |  |
| 328 | 4 | **Documentation management** | 100d | 2009-10-29 | 2010-03-19 |  | 232d |  |  | ASET | 800h |
| 329 | 4.1 | Memoria 1ra | 100d | 2009-10-29 | 2010-03-19 |  | 232d |  |  |  |  |
