# Planning_ActivA

Schedule from MS Project, 2009-08-07 to 2011-02-22.

## Calendars

- Standard: Mon-Fri 08:00-12:00, 13:00-17:00; Sat-Sun off. Exceptions (off unless hours are given): 2009-12-25 to 2010-01-02 (Christmas).

## Resources

| Resource | Group |
| --- | --- |
| Dr. Luis Maiz | HRC |
| Dra. Maite Martinez | H12O |
| Esther Sabando | AMFQ |
| Alfonso Montero | AMFQ |
| Tamara del corral | AMFQ |
| Jordi Villa | UPF |
| Sinan Mutlu | UPF |
| James Dalton | UPF |
| Jordi Blecua | ISOCO |
| Miguel Tsuchiya | FL |
| Joan Plana | ASET |
| Lisbeth Hernández | O2H |
| Miguel Hernández | O2H |
| Jordi Vilaro | O2H |
| Ezequiel Cuesta | O2H |
| Doug Thurber | O2H |
| William Lalinde | O2H |
| FL |  |
| O2H |  |
| ISOCO |  |
| UPF |  |
| AMFQ |  |
| ASET |  |
| FG |  |
| LH |  |
| JV |  |
| MH |  |
| JVL |  |
| JVA |  |
| SINAN |  |
| SM |  |
| JD |  |
| JVF |  |

## Schedule

| ID | WBS | Task | Type | Duration | Start | Finish | Predecessors | Total slack | Free slack | Constraint | Resources | Work |
| --- | --- | --- | --- | --- | --- | --- | --- | --- | --- | --- | --- | --- |
| 1 | 1 | **GP 1A Version 1 - ActivA Platform** |  | 320d? | 2009-09-01 | 2010-11-30 |  | 0d |  |  |  | 12444h |
| 2 | 1.1 | **Analysis - Entire Platform Complete** |  | 57d | 2009-09-01 | 2009-11-18 |  | 0d |  |  |  |  |
| 3 | 1.1.1 | Specifications |  | 43d | 2009-09-01 | 2009-10-29 |  | 0d |  | start no earlier than 2009-09-01 |  |  |
| 4 | 1.1.2 | INDEXING RULES |  | 14d | 2009-10-29 | 2009-11-17 |  | 324d |  |  |  |  |
| 5 | 1.1.2 | Integration Specifications |  | 14d | 2009-10-29 | 2009-11-17 |  | 324d |  |  |  |  |
| 6 | 1.1.2 | Analysis complete Entire Platform - General |  | 14d | 2009-10-30 | 2009-11-18 | 3 | 0d |  |  |  |  |
| 7 | 1.2 | **WP1 Mobile platform** |  | 80d | 2009-10-29 | 2010-02-25 |  | 108d |  |  | FL; O2H | 3152h |
| 8 | 1.2.1 | **Analysis Mobile Applications** |  | 23d | 2009-10-29 | 2009-11-30 |  | 258d |  |  | O2H | 184h |
| 9 | 1.2.1.1 | Specifications |  | 15d | 2009-10-29 | 2009-11-18 |  | 258d | 0d | start no earlier than 2009-10-29 |  |  |
| 10 | 1.2.1.2 | Analysis Mobile Platform |  | 15d | 2009-11-10 | 2009-11-30 |  | 260d | 0d | start no earlier than 2009-11-10 |  |  |
| 11 | 1.2.2 | **Equipment Acquisition** |  | 10d | 2009-11-19 | 2009-12-02 |  | 313d |  |  | FL | 80h |
| 12 | 1.2.2.1 | Acquisition |  | 5d | 2009-11-19 | 2009-11-25 | 6 | 313d | 0d |  |  |  |
| 13 | 1.2.2.2 | Installation |  | 5d | 2009-11-26 | 2009-12-02 | 12 | 313d |  |  |  |  |
| 14 | 1.2.3 | **iPhone development (from other project)** |  | 65d | 2009-11-19 | 2010-02-25 |  | 258d |  |  | FL | 520h |
| 15 | 1.2.3.1 | Smart questionaries |  | 45d | 2009-12-01 | 2010-02-09 | 10 | 265d | 0d |  |  |  |
| 16 | 1.2.3.2 | Measurements |  | 45d | 2009-12-01 | 2010-02-09 | 10 | 265d | 0d |  |  |  |
| 17 | 1.2.3.3 | Calendar and alarm |  | 45d | 2009-12-01 | 2010-02-09 | 10 | 265d | 0d |  |  |  |
| 18 | 1.2.3.4 | Security |  | 14d | 2009-12-01 | 2009-12-18 | 10 | 296d | 31d |  |  |  |
| 19 | 1.2.3.5 | Complete Build Version 1 application |  | 5d | 2010-02-10 | 2010-02-16 | 15, 16, 17, 18 | 265d |  |  |  |  |
| 20 | 1.2.3.6 | Implementation document |  | 50d | 2009-11-19 | 2010-02-04 | 9 | 258d | 0d |  |  |  |
| 21 | 1.2.3.7 | User manual |  | 15d | 2010-02-05 | 2010-02-25 | 20 | 258d |  |  |  |  |
| 22 | 1.2.4 | **Android Development** |  | 58d | 2009-11-19 | 2010-02-16 |  | 265d |  |  | FL | 464h |
| 23 | 1.2.4.1 | Smart questionaries |  | 30d | 2009-12-01 | 2010-01-19 | 10 | 260d | 0d |  |  |  |
| 24 | 1.2.4.2 | Measurements |  | 30d | 2009-12-01 | 2010-01-19 | 10 | 275d | 15d |  |  |  |
| 25 | 1.2.4.3 | Calendar and alarm |  | 15d | 2010-01-20 | 2010-02-09 | 23 | 260d | 0d |  |  |  |
| 26 | 1.2.4.4 | Security |  | 15d | 2010-01-20 | 2010-02-09 | 23 | 260d | 0d |  |  |  |
| 27 | 1.2.4.5 | Complete Build Version 1 application |  | 5d | 2010-02-10 | 2010-02-16 | 23, 24, 25, 26 | 260d | 0d |  |  |  |
| 28 | 1.2.4.6 | Implementation document |  | 50d | 2009-11-19 | 2010-02-04 | 9 | 273d |  |  |  |  |
| 29 | 1.2.4.7 | User manual |  | 15d | 2009-11-19 | 2009-12-09 | 9 | 308d |  |  |  |  |
| 30 | 1.2.4.8 | Development Complete - Mobile Platform | milestone | 0d | 2010-02-16 | 2010-02-16 | 27 | 265d |  |  |  |  |

Notes:
- 1: Although a cascade way is shown, the methodology must be iterative by prototypying
- 4: Documentation, iterative through development
- 5: Documentation, iterative through development
- 6: Documentation, iterative through development

| ID | WBS | Task | Type | Duration | Start | Finish | Predecessors | Total slack | Free slack | Resources | Work |
| --- | --- | --- | --- | --- | --- | --- | --- | --- | --- | --- | --- |
| 31 | 1.2.5 | **Quality assurance** |  | 78d | 2009-10-29 | 2010-02-23 |  | 108d |  | FL | 624h |
| 32 | 1.2.5.1 | Test Matrix |  | 5d | 2010-02-17 | 2010-02-23 | 27 | 260d |  |  |  |
| 33 | 1.2.5.2 | Test Quality assurance iPhone |  | 10d | 2009-10-29 | 2009-11-11 |  | 108d | 0d |  |  |
| 34 | 1.2.5.3 | Test Quality assurance Android |  | 10d | 2009-11-12 | 2009-11-25 | 33 | 108d | 0d |  |  |
| 35 | 1.2.6 | Complete First Product Delivery - MP | milestone | 0d | 2009-11-25 | 2009-11-25 | 33, 34 | 108d | 81d |  |  |
| 36 | 1.3 | **WP2 Web platform** |  | 137d | 2009-10-30 | 2010-05-18 |  | 27d |  |  | 160h |
| 37 | 1.3.1 | **WP2.1 Analysis** |  | 20d | 2009-10-30 | 2009-11-26 |  | 27d | 0d | O2H | 160h |
| 38 | 1.3.1.1 | Architecture document update |  | 15d | 2009-10-30 | 2009-11-19 | 3 | 32d |  |  |  |
| 39 | 1.3.1.2 | Analysis ActivA Platform |  | 15d | 2009-10-30 | 2009-11-19 | 3 | 27d | 0d |  |  |
| 40 | 1.3.1.1 | Test Matrix |  | 5d | 2009-11-20 | 2009-11-26 | 39 | 27d | 10d |  |  |
| 41 | 1.3.2 | **WP2.2 Development** |  | 117d | 2009-11-27 | 2010-05-18 | 37 | 27d |  |  |  |
| 42 | 1.3.2.1 | **WP2.2.1 Hardware** |  | 70d | 2009-11-27 | 2010-03-12 |  | 27d |  |  |  |
| 43 | 1.3.2.1.1 | Demo server installation |  | 10d | 2009-11-27 | 2009-12-10 | 3 | 27d | 0d |  |  |
| 44 | 1.3.2.1.2 | Load balancing servers |  | 30d | 2009-12-11 | 2010-01-29 | 43 | 247d | 0d |  |  |
| 45 | 1.3.2.1.3 | Disperse database |  | 30d | 2010-02-01 | 2010-03-12 | 44 | 247d |  |  |  |
| 46 | 1.3.2.2 | **WP2.2.2 Server side development** |  | 65d | 2009-12-11 | 2010-03-19 | 43 | 27d |  |  |  |
| 47 | 1.3.2.2.1 | Business objects (EJB3 Entities) |  | 20d | 2009-12-11 | 2010-01-15 | 40 | 27d | 0d |  |  |
| 48 | 1.3.2.2.2 | Business methods (EJB3 Sessions) |  | 20d | 2010-01-18 | 2010-02-12 | 47 | 27d | 0d |  |  |
| 49 | 1.3.2.2.3 | Client server communication |  | 20d | 2009-12-11 | 2010-01-15 | 40 | 270d | 40d |  |  |
| 50 | 1.3.2.2.4 | Client side communication (GWT RPC) |  | 20d | 2009-12-11 | 2010-01-15 | 40 | 270d | 40d |  |  |
| 51 | 1.3.2.2.5 | Client side communication (GWT JSON) |  | 20d | 2009-12-11 | 2010-01-15 | 40 | 270d | 40d |  |  |
| 52 | 1.3.2.2.6 | Web services (SOAP XML) |  | 20d | 2010-02-15 | 2010-03-12 | 48 | 27d | 0d |  |  |
| 53 | 1.3.2.2.1 | Test Period |  | 5d | 2010-03-15 | 2010-03-19 | 48, 49, 50, 51, 52 | 230d | 30d |  |  |
| 54 | 1.3.2.3 | **WP2.2.3 Client side development** |  | 106d | 2009-11-27 | 2010-05-03 |  | 42d |  |  |  |
| 55 | 1.3.2.3.1 | Client Business objects |  | 21d | 2009-11-27 | 2010-01-04 | 39 | 66d | 24d |  |  |
| 56 | 1.3.2.3.2 | Client UI Events |  | 20d | 2009-11-27 | 2009-12-24 | 39 | 42d | 0d |  |  |
| 57 | 1.3.2.3.3 | Client widgets |  | 25d | 2010-01-04 | 2010-02-05 | 56 | 42d | 0d |  |  |
| 58 | 1.3.2.3.4 | Client Services |  | 10d | 2010-02-08 | 2010-02-19 | 55, 56, 57 | 42d | 15d |  |  |
| 59 | 1.3.2.3.5 | Web Develpoment end to end consolidation |  | 10d | 2010-03-15 | 2010-03-26 | 52, 58 | 27d | 0d |  |  |
| 60 | 1.3.2.3.6 | Internatioalization and Accesibility |  | 20d | 2010-03-29 | 2010-04-23 | 59 | 200d | 0d |  |  |
| 61 | 1.3.2.3.1 | Test Period |  | 5d | 2010-04-26 | 2010-04-30 | 55, 56, 57, 58, 59, 60 | 200d | 0d |  |  |
| 62 | 1.3.2.3.2 | Document delivery |  | 1d | 2010-05-03 | 2010-05-03 | 61 | 211d |  |  |  |

Notes:
- 32: Test Matrix imust developed with specifications
- 35: Used to take patient measurements
- 38: This architecture document is not constrained only to the web platform.
- 40: Test Matrix imust developed with specifications
- 43: Initially only one server is needed
- 44: For an scalable choice multiple servers must be mounted
- 45: The database must be dispersed as well to avoid being the bottleneck
- 47: Objetos de negocio
- 48: Métodos de negocio
- 51: Additional sites not using RPC
- 53: Test Matrix imust developed with specifications
- 57: Will be replaced by the 3D UI.
- 61: Test Matrix imust developed with specifications

| ID | WBS | Task | Type | Duration | Start | Finish | Predecessors | Total slack | Free slack |
| --- | --- | --- | --- | --- | --- | --- | --- | --- | --- |
| 63 | 1.3.2.4 | **WP2.2.4 e-commerce** |  | 81d | 2009-11-27 | 2010-03-29 |  | 32d |  |
| 64 | 1.3.2.4.1 | 2.2.4.1 Analysis & Update to Arch. Doc |  | 15d | 2009-11-27 | 2009-12-17 | 39 | 32d | 0d |
| 65 | 1.3.2.4.4 | 2.2.4.2 Interface implementation |  | 45d | 2009-12-18 | 2010-02-26 | 64 | 32d | 0d |
| 66 | 1.3.2.4.5 | 2.2.4.3 Transaction |  | 15d | 2010-03-01 | 2010-03-19 | 65 | 32d | 0d |
| 67 | 1.3.2.4.1 | Test Period |  | 5d | 2010-03-22 | 2010-03-26 | 66, 64, 65 | 225d | 0d |
| 68 | 1.3.2.4.2 | Document delivery |  | 1d | 2010-03-29 | 2010-03-29 | 67 | 236d |  |
| 69 | 1.3.2.5 | **WP2.2.5 Security** |  | 82d | 2009-11-27 | 2010-03-30 |  | 31d |  |
| 70 | 1.3.2.5.1 | 2.2.5.1 Analysis & Update Architecture |  | 15d | 2009-11-27 | 2009-12-17 | 39 | 31d | 0d |
| 71 | 1.3.2.5.2 | Document delivery |  | 1d | 2009-12-18 | 2009-12-18 | 70 | 31d | 0d |
| 72 | 1.3.2.5.3 | 2.2.5.2 HTTPS |  | 45d | 2009-12-21 | 2010-03-01 | 71 | 31d | 0d |
| 73 | 1.3.2.5.4 | 2.2.5.3 Captchas |  | 15d | 2010-03-02 | 2010-03-22 | 72 | 31d | 0d |
| 74 | 1.3.2.5.1 | Test Period |  | 5d | 2010-03-23 | 2010-03-29 | 73, 70, 71, 72 | 224d | 0d |
| 75 | 1.3.2.5.2 | Document delivery |  | 1d | 2010-03-30 | 2010-03-30 | 74 | 235d |  |
| 76 | 1.3.2.6 | **WP 2.2.6 HL7** |  | 106d | 2009-11-27 | 2010-05-03 |  | 200d |  |
| 77 | 1.3.2.6.1 | **WP 2.2.6.1 Analysis** |  | 106d | 2009-11-27 | 2010-05-03 |  | 200d |  |
| 78 | 1.3.2.6.1.1 | 2.2.6.1 Architecture |  | 20d | 2009-11-27 | 2009-12-24 | 39 | 200d | 0d |
| 79 | 1.3.2.6.1.2 | 2.2.6.2 Development |  | 20d | 2010-01-04 | 2010-01-29 | 78 | 200d | 0d |
| 80 | 1.3.2.6.1.3 | 2.2.6.2 Web services for interfaces |  | 60d | 2010-02-01 | 2010-04-23 | 79 | 200d | 0d |
| 81 | 1.3.2.6.1.1 | Test Period |  | 5d | 2010-04-26 | 2010-04-30 | 80, 78, 79 | 200d | 0d |
| 82 | 1.3.2.6.1.2 | Document delivery |  | 1d | 2010-05-03 | 2010-05-03 | 81 | 211d |  |
| 83 | 1.3.2.7 | **Quality Assurance** |  | 12d | 2010-05-03 | 2010-05-18 |  | 200d |  |
| 84 | 1.3.2.7.1 | Test Matrix Update |  | 2d | 2010-05-03 | 2010-05-04 | 53, 61, 67, 74, 81 | 200d | 0d |
| 85 | 1.3.2.7.2 | Test Period |  | 10d | 2010-05-05 | 2010-05-18 | 84 | 200d |  |
| 86 | 1.3.3 | Implementation document |  | 110d | 2009-11-20 | 2010-04-30 | 39 | 212d |  |
| 87 | 1.3.4 | Development Complete - Web Platform | milestone | 0d | 2010-03-26 | 2010-03-26 | 52, 59, 66, 73 | 27d | 0d |

Notes:
- 67: Test Matrix imust developed with specifications
- 74: Test Matrix imust developed with specifications
- 81: Test Matrix imust developed with specifications
- 84: Agregar Test Matrix al principio y Text Period al final de todos los bloques en WP2 (integracion al final MH)
- 86: This implementation document is not constrained only to the web platform.

| ID | WBS | Task | Type | Duration | Start | Finish | Predecessors | Total slack | Free slack | Resources | Work |
| --- | --- | --- | --- | --- | --- | --- | --- | --- | --- | --- | --- |
| 88 | 1.4 | **WP3 Social Networking platform** |  | 115d | 2009-10-29 | 2010-04-15 |  | 43d |  | ISOCO | 920h |
| 89 | 1.4.1 | **WP3.1 Analysis** |  | 75d | 2009-11-19 | 2010-03-11 |  | 28d |  |  |  |
| 90 | 1.4.1.1 | 3.1.1 Social Networks |  | 20d | 2009-11-19 | 2009-12-16 | 6 | 28d | 0d |  |  |
| 91 | 1.4.1.2 | 3.1.2 Communication chanels and wikis |  | 10d | 2009-12-17 | 2010-01-07 | 90 | 28d | 0d |  |  |
| 92 | 1.4.1.3 | 3.1.3 Mobile access |  | 10d | 2010-01-08 | 2010-01-21 | 91 | 28d | 0d |  |  |
| 93 | 1.4.1.4 | 3.1.4 RSS |  | 25d | 2010-01-22 | 2010-02-25 | 92 | 28d | 0d |  |  |
| 94 | 1.4.1.5 | 3.1.5 Stadistics |  | 10d | 2010-02-26 | 2010-03-11 | 93 | 228d | 0d |  |  |
| 95 | 1.4.2 | **WP3.2 Development** |  | 110d | 2009-10-29 | 2010-04-08 |  | 108d |  |  |  |
| 96 | 1.4.2.1 | 3.2.1 Social network integration |  | 20d | 2010-03-12 | 2010-04-08 | 94 | 228d |  |  |  |
| 97 | 1.4.2.2 | 3.2.2 Communication chanels and wikis |  | 30d | 2010-02-26 | 2010-04-08 | 93 | 228d |  |  |  |
| 98 | 1.4.2.3 | 3.2.3 Mobile development |  | 20d | 2010-02-26 | 2010-03-25 | 93 | 28d | 0d |  |  |
| 99 | 1.4.2.4 | 3.2.4 RSS interfaces |  | 15d | 2010-02-26 | 2010-03-18 | 93 | 243d |  |  |  |
| 100 | 1.4.2.5 | 3.2.5 Stadistics package |  | 10d | 2009-10-29 | 2009-11-11 |  | 328d |  |  |  |
| 101 | 1.4.3 | Development Complete - SN Platform | milestone | 0d | 2010-03-25 | 2010-03-25 | 98 | 28d | 0d |  |  |
| 102 | 1.4.4 | **WP3.3 Quality assurance** |  | 15d | 2010-03-26 | 2010-04-15 |  | 223d |  |  |  |
| 103 | 1.4.4.1 | **WP3.3.1 Test matrix** |  | 10d | 2010-03-26 | 2010-04-08 |  | 223d |  |  |  |
| 104 | 1.4.4.1.1 | 3.3.1.1 Environment test matrix |  | 5d | 2010-03-26 | 2010-04-01 | 101 | 223d | 0d |  |  |
| 105 | 1.4.4.1.2 | 3.3.1.2 Scientific test matrix |  | 5d | 2010-04-02 | 2010-04-08 | 104 | 223d | 0d |  |  |
| 106 | 1.4.4.2 | **WP3.3.2 Test period** |  | 5d | 2010-04-09 | 2010-04-15 |  | 223d |  |  |  |
| 107 | 1.4.4.2.1 | 3.3.2.1 Environment test period |  | 5d | 2010-04-09 | 2010-04-15 | 105 | 223d |  |  |  |
| 108 | 1.4.4.2.2 | 3.3.2.2 Scientific test period |  | 5d | 2010-04-09 | 2010-04-15 | 105 | 223d | 0d |  |  |
| 109 | 1.4.5 | Complete First Product Delivery - SN | milestone | 0d | 2010-04-15 | 2010-04-15 | 108 | 223d |  |  |  |
| 110 | 1.5 | **WP4 Virtual 3D platform** |  | 113d? | 2009-11-19 | 2010-05-04 |  | 0d |  | UPF | 4204h |
| 111 | 1.5.1 | **WP4.1 Analysis** |  | 70d? | 2009-11-19 | 2010-03-04 |  | 0d |  |  | 3300h |
| 112 | 1.5.1.1 | **WP4.1.1 Functional Definitions for Cell level** |  | 8d | 2009-11-19 | 2009-11-30 | 6 | 0d |  | JVF | 388h |
| 113 | 1.5.1.1.1 | WP4.1.1.2 Matrix - Tools Sets |  | 5d | 2009-11-19 | 2009-11-25 | 6 | 256d | 3d | JD; MH; SM; JVF [50%] | 140h |
| 114 | 1.5.1.1.2 | WP4.1.1.3 Functional definitions for General Level |  | 3d | 2009-11-19 | 2009-11-23 | 6 | 0d |  | LH; JVA | 48h |
| 115 | 1.5.1.1.3 | WP4.1.1.4 Animation script Cell level (screenplay) |  | 3d | 2009-11-24 | 2009-11-26 | 114 | 255d |  | JD [50%]; JVF [50%] | 24h |
| 116 | 1.5.1.1.4 | WP4.1.1.5 Animation script general level (screenplay) |  | 3d | 2009-11-24 | 2009-11-26 | 114 | 0d |  | LH; JVA | 48h |
| 117 | 1.5.1.1.5 | WP4.1.1.6 End User Visualization Guidelines |  | 2d | 2009-11-27 | 2009-11-30 | 116 | 0d |  | SM; JVA; JD; LH | 64h |

Notes:
- 91: Not fully deployed to leave it for later
- 92: Not fully deployed to leave it for later
- 112: Defeinition of what to expect from the researcher's side / what do we expect from thye 3D platform from the research point of view? What information should be visualized with it? what underlying (extended) information should be accessible? How different pieces of information are interlinked?
- 113: matrix of tools to be linked to the 3D environment (JVF and JD) / matrix for tools to be used in the 3D environment development (all but JD)
- 114: Definition of what to expect from the clinician side
- 115: Definition of a typical session from the researchers point of view
- 116: Description of a real time sitiuation from the point of view of the clinician and the patient
- 117: Compilation of matrix, functional definitions and screenplays as reference for development of the 3D platform

| ID | WBS | Task | Duration | Start | Finish | Predecessors | Total slack | Free slack | Resources | Work |
| --- | --- | --- | --- | --- | --- | --- | --- | --- | --- | --- |
| 118 | 1.5.1.2 | **WP4.1.2 ActionScript development** | 62d? | 2009-12-01 | 2010-03-04 |  | 253d |  |  | 2912h |
| 119 | 1.5.1.2.1 | **WP4.1.2.1 General objects description** | 22d | 2009-12-01 | 2010-01-07 | 112 | 253d | 0d |  | 56h |
| 120 | 1.5.1.2.1.1 | data | 5d | 2009-12-01 | 2009-12-07 |  | 270d |  |  |  |
| 121 | 1.5.1.2.1.2 | 3D objects | 15d | 2009-12-01 | 2009-12-21 | 113 | 253d | 0d |  |  |
| 122 | 1.5.1.2.1.3 | **3D Initial Tool Test** | 7d | 2009-12-22 | 2010-01-07 | 121 | 253d |  |  | 56h |
| 123 | 1.5.1.2.1.3.1 | Rule Details | 5d | 2009-12-22 | 2010-01-05 | 6 | 255d | 2d | MH | 40h |
| 124 | 1.5.1.2.1.3.2 | Initial Component Rendering | 2d | 2009-12-22 | 2009-12-23 | 6 | 258d |  | SM | 16h |
| 125 | 1.5.1.2.1.3.3 | Visualization - 3D Initial Rules/Guidelines | 2d | 2009-12-22 | 2009-12-23 | 6 | 253d | 0d |  |  |
| 126 | 1.5.1.2.1.3.4 | Object Profile - 3D Enviroment | 2d | 2009-12-24 | 2010-01-04 | 125 | 253d | 0d |  |  |
| 127 | 1.5.1.2.1.3.5 | Visualization & Interaction (basic) - 3D object | 3d | 2010-01-05 | 2010-01-07 | 126 | 253d |  |  |  |
| 128 | 1.5.1.2.2 | **WP4.1.2.2 Genome level scenario** | 17d? | 2010-01-08 | 2010-02-01 | 119 | 261d | 8d |  | 512h |
| 129 | 1.5.1.2.2.1 | Rule Details | 12d | 2010-01-08 | 2010-01-25 |  | 266d |  | MH | 96h |
| 130 | 1.5.1.2.2.2 | **Data Aquisition (Info/Links)** | 17d? | 2010-01-08 | 2010-02-01 |  | 261d |  | MH | 376h |
| 131 | 1.5.1.2.2.2.1 | CFTR genotyping | 15d | 2010-01-08 | 2010-01-28 | 114 | 263d |  | JD; JVF | 240h |
| 132 | 1.5.1.2.2.2.2 | chaperone genotyping | 1d? | 2010-01-08 | 2010-01-08 |  | 277d |  |  |  |
| 133 | 1.5.1.2.2.2.3 | pro-inflammatory genes genotyping | 17d | 2010-01-08 | 2010-02-01 |  | 261d |  |  |  |
| 134 | 1.5.1.2.2.3 | Component Rendering | 5d | 2010-01-08 | 2010-01-14 |  | 273d |  | SM | 40h |
| 135 | 1.5.1.2.2.4 | Object Profile - 3D Enviroment | 2d | 2010-01-08 | 2010-01-11 |  | 276d |  |  |  |
| 136 | 1.5.1.2.2.5 | Visualization & Interaction - 3D object | 3d | 2010-01-08 | 2010-01-12 |  | 275d |  |  |  |
| 137 | 1.5.1.2.3 | **WP4.1.2.3 Gene regulatory scenario** | 17d? | 2010-01-08 | 2010-02-01 | 119 | 253d | 8d |  | 512h |
| 138 | 1.5.1.2.3.1 | Rule Details | 12d | 2010-01-08 | 2010-01-25 | 123 | 266d |  | MH | 96h |
| 139 | 1.5.1.2.3.2 | **Data Aquisition (Info/Links)** | 17d? | 2010-01-08 | 2010-02-01 |  | 261d |  | MH | 376h |
| 140 | 1.5.1.2.3.2.1 | CFTR genotyping | 15d | 2010-01-08 | 2010-01-28 |  | 263d |  | JD; JVF | 240h |
| 141 | 1.5.1.2.3.2.2 | chaperone genotyping | 1d? | 2010-01-08 | 2010-01-08 |  | 277d |  |  |  |
| 142 | 1.5.1.2.3.2.3 | pro-inflammatory genes genotyping | 17d | 2010-01-08 | 2010-02-01 |  | 261d |  |  |  |
| 143 | 1.5.1.2.3.3 | Component Rendering | 5d | 2010-01-08 | 2010-01-14 |  | 253d | 0d | SM | 40h |
| 144 | 1.5.1.2.3.4 | Object Profile - 3D Enviroment | 2d | 2010-01-08 | 2010-01-11 |  | 276d |  |  |  |
| 145 | 1.5.1.2.3.5 | Visualization & Interaction - 3D object | 3d | 2010-01-08 | 2010-01-12 |  | 275d |  |  |  |

Notes:
- 122: Not fully deployed to leave it for later
- 123: Not fully deployed to leave it for later
- 124: Not fully deployed to leave it for later
- 129: Not fully deployed to leave it for later
- 130: Not fully deployed to leave it for later
- 131: Not fully deployed to leave it for later
- 133: Not fully deployed to leave it for later
- 134: Not fully deployed to leave it for later
- 137: Not fully deployed to leave it for later
- 138: Not fully deployed to leave it for later
- 139: Not fully deployed to leave it for later
- 140: Not fully deployed to leave it for later
- 142: Not fully deployed to leave it for later
- 143: Not fully deployed to leave it for later

| ID | WBS | Task | Duration | Start | Finish | Predecessors | Total slack | Free slack | Resources | Work |
| --- | --- | --- | --- | --- | --- | --- | --- | --- | --- | --- |
| 146 | 1.5.1.2.4 | **WP4.1.2.4 CFTR translation and maturation scenario** | 20d? | 2010-01-08 | 2010-02-04 | 119 | 258d | 5d |  | 472h |
| 147 | 1.5.1.2.4.1 | Rule Details | 2d | 2010-01-08 | 2010-01-11 | 123 | 276d |  | MH | 16h |
| 148 | 1.5.1.2.4.2 | **Data Aquisition (Info/Links)** | 17d? | 2010-01-08 | 2010-02-01 |  | 261d |  | MH | 376h |
| 149 | 1.5.1.2.4.2.1 | CFTR genotyping | 15d | 2010-01-08 | 2010-01-28 |  | 263d |  | JD; JVF | 240h |
| 150 | 1.5.1.2.4.2.2 | chaperone genotyping | 1d? | 2010-01-08 | 2010-01-08 |  | 277d |  |  |  |
| 151 | 1.5.1.2.4.2.3 | pro-inflammatory genes genotyping | 17d | 2010-01-08 | 2010-02-01 |  | 261d |  |  |  |
| 152 | 1.5.1.2.4.3 | Component Rendering | 5d | 2010-01-22 | 2010-01-28 | 170 | 253d | 0d | MH; JD | 80h |
| 153 | 1.5.1.2.4.4 | Object Profile - 3D Enviroment | 2d | 2010-01-29 | 2010-02-01 | 152 | 258d | 0d |  |  |
| 154 | 1.5.1.2.4.5 | Visualization & Interaction - 3D object | 3d | 2010-02-02 | 2010-02-04 | 153 | 258d |  |  |  |
| 155 | 1.5.1.2.5 | **WP4.1.2.5 CFTR function and interactions scenario** | 25d? | 2010-01-08 | 2010-02-11 | 119 | 253d | 0d |  | 376h |
| 156 | 1.5.1.2.5.1 | Rule Details | 2d | 2010-01-08 | 2010-01-11 | 123 | 276d |  |  |  |
| 157 | 1.5.1.2.5.2 | **Data Aquisition (Info/Links)** | 17d? | 2010-01-08 | 2010-02-01 |  | 261d |  | MH | 376h |
| 158 | 1.5.1.2.5.2.1 | CFTR genotyping | 15d | 2010-01-08 | 2010-01-28 |  | 263d |  | JD; JVF | 240h |
| 159 | 1.5.1.2.5.2.2 | chaperone genotyping | 1d? | 2010-01-08 | 2010-01-08 |  | 277d |  |  |  |
| 160 | 1.5.1.2.5.2.3 | pro-inflammatory genes genotyping | 17d | 2010-01-08 | 2010-02-01 |  | 261d |  |  |  |
| 161 | 1.5.1.2.5.3 | Component Rendering | 5d | 2010-01-29 | 2010-02-04 | 152 | 253d | 0d |  |  |
| 162 | 1.5.1.2.5.4 | Object Profile - 3D Enviroment | 2d | 2010-02-05 | 2010-02-08 | 161 | 253d | 0d |  |  |
| 163 | 1.5.1.2.5.5 | Visualization - 3D object | 3d | 2010-02-09 | 2010-02-11 | 162 | 253d |  |  |  |
| 164 | 1.5.1.2.6 | **WP4.1.2.6 Cell surface scenario** | 17d? | 2010-01-08 | 2010-02-01 | 119 | 258d | 8d |  | 432h |
| 165 | 1.5.1.2.6.1 | Rule Details | 2d | 2010-01-08 | 2010-01-11 | 123 | 276d |  | MH | 16h |
| 166 | 1.5.1.2.6.2 | **Data Aquisition (Info/Links)** | 17d? | 2010-01-08 | 2010-02-01 |  | 261d |  | MH | 376h |
| 167 | 1.5.1.2.6.2.1 | CFTR genotyping | 15d | 2010-01-08 | 2010-01-28 |  | 263d |  | JD; JVF | 240h |
| 168 | 1.5.1.2.6.2.2 | chaperone genotyping | 1d? | 2010-01-08 | 2010-01-08 |  | 277d |  |  |  |
| 169 | 1.5.1.2.6.2.3 | pro-inflammatory genes genotyping | 17d | 2010-01-08 | 2010-02-01 |  | 261d |  |  |  |
| 170 | 1.5.1.2.6.3 | Component Rendering | 5d | 2010-01-15 | 2010-01-21 | 143 | 253d | 0d | SM | 40h |
| 171 | 1.5.1.2.6.4 | Object Profile - 3D Enviroment | 2d | 2010-01-22 | 2010-01-25 | 170 | 263d | 0d |  |  |
| 172 | 1.5.1.2.6.5 | Visualization & Interaction - 3D object | 3d | 2010-01-26 | 2010-01-28 | 171 | 263d |  |  |  |

Notes:
- 146: Not fully deployed to leave it for later
- 147: Not fully deployed to leave it for later
- 148: Not fully deployed to leave it for later
- 149: Not fully deployed to leave it for later
- 151: Not fully deployed to leave it for later
- 152: Not fully deployed to leave it for later
- 153: Not fully deployed to leave it for later
- 154: Not fully deployed to leave it for later
- 155: Not fully deployed to leave it for later
- 156: Not fully deployed to leave it for later
- 157: Not fully deployed to leave it for later
- 158: Not fully deployed to leave it for later
- 160: Not fully deployed to leave it for later
- 161: Not fully deployed to leave it for later
- 162: Not fully deployed to leave it for later
- 163: Not fully deployed to leave it for later
- 164: Not fully deployed to leave it for later
- 165: Not fully deployed to leave it for later
- 166: Not fully deployed to leave it for later
- 167: Not fully deployed to leave it for later
- 169: Not fully deployed to leave it for later
- 170: Not fully deployed to leave it for later

| ID | WBS | Task | Type | Duration | Start | Finish | Predecessors | Total slack | Free slack | Resources | Work |
| --- | --- | --- | --- | --- | --- | --- | --- | --- | --- | --- | --- |
| 173 | 1.5.1.2.7 | **WP4.1.2.7 Abstract networks scenario** |  | 17d? | 2010-01-08 | 2010-02-01 | 119 | 261d | 8d |  | 552h |
| 174 | 1.5.1.2.7.1 | Rule Details |  | 17d | 2010-01-08 | 2010-02-01 |  | 261d |  | MH | 136h |
| 175 | 1.5.1.2.7.2 | **Data Aquisition (Info/Links)** |  | 17d? | 2010-01-08 | 2010-02-01 |  | 261d |  | MH | 376h |
| 176 | 1.5.1.2.7.2.1 | CFTR genotyping |  | 15d | 2010-01-08 | 2010-01-28 |  | 263d |  | JD; JVF | 240h |
| 177 | 1.5.1.2.7.2.2 | chaperone genotyping |  | 1d? | 2010-01-08 | 2010-01-08 |  | 277d |  |  |  |
| 178 | 1.5.1.2.7.2.3 | pro-inflammatory genes genotyping |  | 17d | 2010-01-08 | 2010-02-01 |  | 261d |  |  |  |
| 179 | 1.5.1.2.7.3 | Component Rendering |  | 5d | 2010-01-08 | 2010-01-14 |  | 268d | 0d | SM | 40h |
| 180 | 1.5.1.2.7.4 | Object Profile - 3D Enviroment |  | 2d | 2010-01-15 | 2010-01-18 | 179 | 268d | 0d |  |  |
| 181 | 1.5.1.2.7.5 | Visualization & Interaction - 3D object |  | 3d | 2010-01-19 | 2010-01-21 | 180 | 268d |  |  |  |
| 182 | 1.5.1.2.8 | WP4.1.2.8 Patient-clinician scenario |  | 1d? | 2010-01-08 | 2010-01-08 | 119 | 277d | 24d |  |  |
| 183 | 1.5.1.2.9 | **WP4.1.2.9 3D Environment Consolidation** |  | 15d | 2010-02-12 | 2010-03-04 | 128, 137, 146, 155, 164, 173, 182 | 253d |  |  |  |
| 184 | 1.5.1.2.9.1 | Combined 3D Object Environments |  | 5d | 2010-02-12 | 2010-02-18 |  | 253d | 0d |  |  |
| 185 | 1.5.1.2.9.2 | Combined Visualization |  | 5d | 2010-02-19 | 2010-02-25 | 184 | 253d | 0d |  |  |
| 186 | 1.5.1.2.9.3 | Combined Interaction |  | 5d | 2010-02-26 | 2010-03-04 | 185 | 253d |  |  |  |
| 187 | 1.5.2 | **WP4.2 Development** |  | 70d | 2009-12-01 | 2010-03-16 |  | 0d |  |  |  |
| 188 | 1.5.2.1 | Object design frameworks |  | 10d | 2009-12-01 | 2009-12-14 | 117 | 0d |  |  |  |
| 189 | 1.5.2.2 | Object design libraries |  | 45d | 2009-12-15 | 2010-02-23 | 188 | 260d |  |  |  |
| 190 | 1.5.2.3 | complete object designs |  | 45d | 2009-12-15 | 2010-02-23 | 188 | 0d |  |  |  |
| 191 | 1.5.2.4 | Stage design |  | 15d | 2010-02-24 | 2010-03-16 | 190 | 0d |  |  |  |
| 192 | 1.5.3 | Development Complete - VR Platform | milestone | 0d | 2010-03-16 | 2010-03-16 | 191 | 35d |  |  |  |
| 193 | 1.5.4 | **WP4.3 Quality assurance** |  | 35d | 2010-03-17 | 2010-05-04 |  | 0d |  |  |  |
| 194 | 1.5.4.1 | **Test matrix** |  | 10d | 2010-03-17 | 2010-03-30 |  | 0d |  |  |  |
| 195 | 1.5.4.1.1 | Environment test matrix |  | 5d | 2010-03-17 | 2010-03-23 | 191 | 0d |  |  |  |
| 196 | 1.5.4.1.2 | Scientific test matrix |  | 5d | 2010-03-24 | 2010-03-30 | 195 | 0d |  |  |  |

Notes:
- 174: Not fully deployed to leave it for later
- 175: Not fully deployed to leave it for later
- 176: Not fully deployed to leave it for later
- 178: Not fully deployed to leave it for later
- 179: Not fully deployed to leave it for later
- 183: Not fully deployed to leave it for later
- 184: Not fully deployed to leave it for later
- 185: Not fully deployed to leave it for later
- 186: Not fully deployed to leave it for later

| ID | WBS | Task | Type | Duration | Start | Finish | Predecessors | Total slack | Free slack | Resources | Work |
| --- | --- | --- | --- | --- | --- | --- | --- | --- | --- | --- | --- |
| 197 | 1.5.4.2 | **Test period** |  | 25d | 2010-03-31 | 2010-05-04 |  | 0d |  |  |  |
| 198 | 1.5.4.2.1 | Environment test period |  | 25d | 2010-03-31 | 2010-05-04 | 196 | 0d |  |  |  |
| 199 | 1.5.4.2.2 | Scientific test period |  | 25d | 2010-03-31 | 2010-05-04 | 196 | 210d |  |  |  |
| 200 | 1.5.5 | Complete First Product Delivery - VR | milestone | 0d | 2010-05-04 | 2010-05-04 | 198 | 0d |  |  |  |
| 201 | 1.6 | **WP5 Integration** |  | 53d | 2010-03-29 | 2010-06-09 |  | 141d |  | O2H | 1104h |
| 202 | 1.6.1 | **Mobile - Web integration** |  | 40d | 2010-03-29 | 2010-05-21 |  | 197d |  | FL | 320h |
| 203 | 1.6.1.1 | XML communication |  | 10d | 2010-03-29 | 2010-04-09 | 35, 87 | 197d | 0d |  |  |
| 204 | 1.6.1.2 | Security implementation |  | 10d | 2010-04-12 | 2010-04-23 | 203 | 197d | 0d |  |  |
| 205 | 1.6.1.3 | Mobile to Server communication |  | 10d | 2010-04-26 | 2010-05-07 | 204 | 197d | 0d |  |  |
| 206 | 1.6.1.4 | Server to Mobile communication |  | 10d | 2010-05-10 | 2010-05-21 | 205 | 197d | 0d |  |  |
| 207 | 1.6.2 | Platform Mobile Integration - Complete | milestone | 0d | 2010-05-21 | 2010-05-21 | 206 | 197d | 1d |  |  |
| 208 | 1.6.3 | **Social networks** |  | 30d | 2010-03-29 | 2010-05-07 |  | 207d |  |  |  |
| 209 | 1.6.3.1 | Facebook integration |  | 15d | 2010-03-29 | 2010-04-16 | 101, 87 | 207d | 0d |  |  |
| 210 | 1.6.3.2 | Other networks |  | 15d | 2010-04-19 | 2010-05-07 | 209 | 207d | 0d |  |  |
| 211 | 1.6.4 | Platform Social Networking Integration - Complete | milestone | 0d | 2010-05-07 | 2010-05-07 | 210 | 207d | 11d |  |  |
| 212 | 1.6.5 | **Virtual 3D - Web integration** |  | 14d | 2010-05-05 | 2010-05-24 |  | 196d |  | O2H | 112h |
| 213 | 1.6.5.1 | **ActionScript - JavaScript** |  | 14d | 2010-05-05 | 2010-05-24 |  | 196d |  |  |  |
| 214 | 1.6.5.1.1 | Reuse of entities |  | 7d | 2010-05-05 | 2010-05-13 | 200 | 203d |  |  |  |
| 215 | 1.6.5.1.2 | Reuse of commands |  | 7d | 2010-05-05 | 2010-05-13 | 200 | 203d |  |  |  |
| 216 | 1.6.5.1.1 | Demo of integration |  | 14d | 2010-05-05 | 2010-05-24 | 200, 87 | 196d | 0d |  |  |
| 217 | 1.6.6 | Platform VR 3D Integration - Complete | milestone | 0d | 2010-05-24 | 2010-05-24 | 216 | 196d | 0d |  |  |
| 218 | 1.6.7 | **Semantic Web (HL7)** |  | 10d | 2010-03-29 | 2010-04-09 |  | 227d |  | ISOCO | 80h |
| 219 | 1.6.7.1 | Environment Setting |  | 10d | 2010-03-29 | 2010-04-09 | 87 | 227d | 31d |  |  |
| 220 | 1.6.8 | Platform Integration - Complete | milestone | 0d | 2010-05-24 | 2010-05-24 | 207, 211, 217, 219 | 196d |  |  |  |

Notes:
- 204: Described up

| ID | WBS | Task | Type | Duration | Start | Finish | Predecessors | Total slack | Free slack | Resources | Work |
| --- | --- | --- | --- | --- | --- | --- | --- | --- | --- | --- | --- |
| 221 | 1.6.5 | **Quality assurance** |  | 26d | 2010-05-05 | 2010-06-09 |  | 114d |  |  | 168h |
| 222 | 1.6.5.1 | **Test matrix** |  | 6d | 2010-05-05 | 2010-05-12 |  | 114d |  |  | 168h |
| 223 | 1.6.5.1.1 | Test Matrix Update |  | 1d | 2010-05-05 | 2010-05-05 | 35, 87, 192, 200, 101 | 114d | 0d | FG | 8h |
| 224 | 1.6.5.1.1 | Patient matrix |  | 5d | 2010-05-06 | 2010-05-12 | 223 | 114d | 0d | FG | 40h |
| 225 | 1.6.5.1.2 | Clinician matrix |  | 5d | 2010-05-06 | 2010-05-12 | 223 | 114d | 0d | LH | 40h |
| 226 | 1.6.5.1.3 | Researcher matrix |  | 5d | 2010-05-06 | 2010-05-12 | 223 | 204d |  | JVA | 40h |
| 227 | 1.6.5.1.4 | Technical matrix |  | 5d | 2010-05-06 | 2010-05-12 | 223 | 124d | 0d | MH | 40h |
| 228 | 1.6.5.2 | **Test period** |  | 20d | 2010-05-13 | 2010-06-09 |  | 114d |  |  |  |
| 229 | 1.6.5.2.1 | Patient test |  | 10d | 2010-05-13 | 2010-05-26 | 224 | 114d | 0d |  |  |
| 230 | 1.6.5.2.2 | Clinician test |  | 10d | 2010-05-13 | 2010-05-26 | 225 | 114d | 0d |  |  |
| 231 | 1.6.5.2.3 | Researcher tests |  | 10d | 2010-05-27 | 2010-06-09 | 230, 229 | 114d | 0d |  |  |
| 232 | 1.6.5.2.4 | Technical tests |  | 10d | 2010-05-13 | 2010-05-26 | 227 | 124d | 10d |  |  |
| 233 | 1.6.6 | Complete First Product Delivery - WP | milestone | 0d | 2010-06-09 | 2010-06-09 | 229, 230, 231, 232 | 114d | 0d |  |  |
| 234 | 1.9 | **WP6 Inference and reasoning** |  | 85d | 2010-05-05 | 2010-08-31 |  | 0d |  | UPF | 680h |
| 235 | 1.9.1 | **Analysis** |  | 10d | 2010-05-05 | 2010-05-18 |  | 0d |  |  |  |
| 236 | 1.9.1.1 | Database reference document |  | 5d | 2010-05-05 | 2010-05-11 | 35, 87, 101, 192, 200 | 0d |  |  |  |
| 237 | 1.9.1.2 | Knoweldge generation document |  | 5d | 2010-05-12 | 2010-05-18 | 236 | 0d |  |  |  |
| 238 | 1.9.2 | **Development** |  | 35d | 2010-05-19 | 2010-07-06 |  | 0d |  |  |  |
| 239 | 1.9.2.1 | Integration of databases |  | 5d | 2010-05-19 | 2010-05-25 | 237 | 0d |  |  |  |
| 240 | 1.9.2.2 | Interface for accessing information |  | 15d | 2010-05-26 | 2010-06-15 | 239 | 0d |  |  |  |
| 241 | 1.9.2.3 | Integration of new results |  | 15d | 2010-06-16 | 2010-07-06 | 240 | 0d |  |  |  |
| 242 | 1.9.2.4 | Development Complete - Inference Platform | milestone | 0d | 2010-07-06 | 2010-07-06 | 241 | 0d |  |  |  |
| 243 | 1.9.3 | **Quality Assurance** |  | 40d | 2010-07-07 | 2010-08-31 |  | 111d |  |  |  |
| 244 | 1.9.3.1 | **Test Matrix** |  | 10d | 2010-07-07 | 2010-07-20 |  | 111d |  |  |  |
| 245 | 1.9.3.1.1 | Clinician test matrix |  | 5d | 2010-07-07 | 2010-07-13 | 242 | 111d | 0d |  |  |
| 246 | 1.9.3.1.2 | Researcher test matrix |  | 5d | 2010-07-14 | 2010-07-20 | 245 | 111d | 0d |  |  |
| 247 | 1.9.3.1.3 | Platform Integration - Complete | milestone | 0d | 2010-07-20 | 2010-07-20 | 246 | 111d | 0d |  |  |

Notes:
- 229: Do not mix the testing phase named here with the WP Patient Management, they are not related

| ID | WBS | Task | Type | Duration | Start | Finish | Predecessors | Total slack | Free slack | Resources | Work |
| --- | --- | --- | --- | --- | --- | --- | --- | --- | --- | --- | --- |
| 248 | 1.9.3.2 | **Test Period** |  | 30d | 2010-07-21 | 2010-08-31 |  | 111d |  |  |  |
| 249 | 1.9.3.2.1 | Clinician test period |  | 15d | 2010-07-21 | 2010-08-10 | 247 | 111d | 0d |  |  |
| 250 | 1.9.3.2.2 | Researcher test period |  | 15d | 2010-08-11 | 2010-08-31 | 249 | 111d | 0d |  |  |
| 251 | 1.7 | Platform Version 1 - Complete | milestone | 0d | 2010-08-31 | 2010-08-31 | 250 | 111d | 0d |  |  |
| 252 | 1.8 | Code versioning |  | 14d | 2010-09-01 | 2010-09-20 | 251 | 111d |  |  |  |
| 253 | 1.9 | **WP7 Patient management** |  | 278d | 2009-10-29 | 2010-11-30 |  | 60d |  | AMFQ | 2224h |
| 254 | 1.9.1 | **Preparation** |  | 140d | 2009-10-29 | 2010-05-20 |  | 128d |  |  |  |
| 255 | 1.9.1.1 | Protocol document |  | 25d | 2009-10-29 | 2009-12-02 |  | 128d | 0d |  |  |
| 256 | 1.9.1.2 | Clinician training |  | 60d | 2009-12-03 | 2010-03-04 | 255 | 128d | 0d |  |  |
| 257 | 1.9.1.3 | Condifentiality agreement |  | 30d | 2010-03-05 | 2010-04-15 | 256 | 128d | 0d |  |  |
| 258 | 1.9.1.4 | Patient selection |  | 15d | 2010-04-16 | 2010-05-06 | 257 | 128d | 0d |  |  |
| 259 | 1.9.1.5 | Prueba completa con unos individuos |  | 10d | 2010-05-07 | 2010-05-20 | 258 | 128d | 14d |  |  |
| 260 | 1.9.2 | **Initiation** |  | 70d | 2010-06-10 | 2010-09-15 |  | 114d |  |  |  |
| 261 | 1.9.2.1 | Educational training |  | 15d | 2010-06-10 | 2010-06-30 | 259, 233 | 114d | 0d |  |  |
| 262 | 1.9.2.2 | Patient observation |  | 40d | 2010-07-01 | 2010-08-25 | 261 | 114d | 0d |  |  |
| 263 | 1.9.2.3 | Patient post observation |  | 15d | 2010-08-26 | 2010-09-15 | 262 | 114d |  |  |  |
| 264 | 1.9.3 | **Evaluation and control** |  | 105d | 2010-07-07 | 2010-11-30 |  | 0d |  |  |  |
| 265 | 1.9.3.1 | Initial Analysis and Scientific treatment of data |  | 15d | 2010-07-07 | 2010-07-27 | 242 | 0d |  |  |  |
| 266 | 1.9.3.2 | Scientific treatment of data |  | 60d | 2010-07-28 | 2010-10-19 | 265 | 0d |  |  |  |
| 267 | 1.9.3.3 | Clinician treatment of data |  | 30d | 2010-10-20 | 2010-11-30 | 266 | 0d |  |  |  |
| 268 | 1.10 | Platform Version 1.1 - Complete | milestone | 0d | 2010-11-30 | 2010-11-30 | 267 | 0d |  |  |  |
| 269 | 2 | **GP 1B Version 1.1 (revision)** |  | 338d | 2009-10-29 | 2011-02-22 |  | 0d |  |  | 4880h |
| 270 | 2.1 | **WP8 (revision)** |  | 338d | 2009-10-29 | 2011-02-22 |  | 0d |  | O2H | 2704h |
| 271 | 2.1.1 | **Analysis** |  | 20d | 2010-12-01 | 2010-12-28 |  | 0d |  |  |  |
| 272 | 2.1.1.1 | Modification Requests |  | 10d | 2010-12-01 | 2010-12-14 | 268 | 0d |  |  |  |
| 273 | 2.1.1.2 | Knoweldge generation document |  | 10d | 2010-12-15 | 2010-12-28 | 272 | 0d |  |  |  |

Notes:
- 252: Installment of SVN or CVS
- 253: Deberia de ser WP7 y arreglar los otros
- 259: Atar antes de Test matrix y period

| ID | WBS | Task | Type | Duration | Start | Finish | Predecessors | Total slack | Free slack | Resources | Work |
| --- | --- | --- | --- | --- | --- | --- | --- | --- | --- | --- | --- |
| 274 | 2.1.2 | **Development** |  | 30d | 2010-12-29 | 2011-02-08 |  | 0d |  |  |  |
| 275 | 2.1.2.1 | Modification Development |  | 15d | 2010-12-29 | 2011-01-18 | 273 | 0d |  |  |  |
| 276 | 2.1.2.2 | Integration of new results |  | 15d | 2011-01-19 | 2011-02-08 | 275 | 0d |  |  |  |
| 277 | 2.1.2.3 | Development Complete - VR Platform | milestone | 0d | 2011-02-08 | 2011-02-08 | 276 | 0d |  |  |  |
| 278 | 2.1.3 | **Quality Assurance** |  | 338d | 2009-10-29 | 2011-02-22 |  | 0d |  |  |  |
| 279 | 2.1.3.1 | **Test Matrix** |  | 10d | 2011-02-09 | 2011-02-22 |  | 0d |  |  |  |
| 280 | 2.1.3.1.1 | Clinician test matrix |  | 5d | 2011-02-09 | 2011-02-15 | 277 | 0d |  |  |  |
| 281 | 2.1.3.1.2 | Researcher test matrix |  | 5d | 2011-02-16 | 2011-02-22 | 280 | 0d |  |  |  |
| 282 | 2.1.3.2 | Platform Integration - Complete | milestone | 0d | 2011-02-22 | 2011-02-22 | 281 | 0d |  |  |  |
| 283 | 2.1.3.3 | **Test Period** |  | 30d | 2009-10-29 | 2009-12-09 |  | 36d |  |  |  |
| 284 | 2.1.3.3.1 | Clinician test period |  | 15d | 2009-10-29 | 2009-11-18 |  | 36d | 0d |  |  |
| 285 | 2.1.3.3.2 | Researcher test period |  | 15d | 2009-11-19 | 2009-12-09 | 284 | 36d | 0d |  |  |
| 286 | 2.2 | Platform Version 1.1 - Complete | milestone | 0d | 2009-12-09 | 2009-12-09 | 285 | 36d | 0d |  |  |
| 287 | 2.3 | **WP9 Patient management** |  | 270d | 2009-12-10 | 2010-12-30 |  | 36d |  | AMFQ | 2160h |
| 288 | 2.3.1 | **Preparation** |  | 180d | 2009-12-10 | 2010-08-26 |  | 36d |  |  |  |
| 289 | 2.3.1.1 | Protocol document |  | 25d | 2009-12-10 | 2010-01-21 | 286 | 283d |  |  |  |
| 290 | 2.3.1.2 | Clinician training |  | 20d | 2009-12-10 | 2010-01-14 | 286 | 288d |  |  |  |
| 291 | 2.3.1.3 | Condifentiality agreement |  | 20d | 2009-12-10 | 2010-01-14 | 286 | 36d | 0d |  |  |
| 292 | 2.3.1.4 | **Development** |  | 70d | 2010-01-15 | 2010-04-22 |  | 36d |  |  |  |
| 293 | 2.3.1.4.1 | Educational training |  | 15d | 2010-01-15 | 2010-02-04 | 291 | 273d |  |  |  |
| 294 | 2.3.1.4.2 | Patient selection |  | 15d | 2010-01-15 | 2010-02-04 | 291 | 36d | 0d |  |  |
| 295 | 2.3.1.4.3 | Patient observation |  | 40d | 2010-02-05 | 2010-04-01 | 294 | 36d | 0d |  |  |
| 296 | 2.3.1.4.4 | Patient post observation |  | 15d | 2010-04-02 | 2010-04-22 | 295 | 36d | 0d |  |  |
| 297 | 2.3.1.5 | **Evaluation and control** |  | 90d | 2010-04-23 | 2010-08-26 |  | 36d |  |  |  |
| 298 | 2.3.1.5.1 | Scientific treatment of data |  | 60d | 2010-04-23 | 2010-07-15 | 296 | 36d | 0d |  |  |
| 299 | 2.3.1.5.2 | Clinician treatment of data |  | 30d | 2010-07-16 | 2010-08-26 | 298 | 36d | 0d |  |  |

| ID | WBS | Task | Duration | Start | Finish | Predecessors | Total slack | Free slack | Constraint | Resources | Work |
| --- | --- | --- | --- | --- | --- | --- | --- | --- | --- | --- | --- |
| 300 | 2.3.2 | **Evaluation and control** | 90d | 2010-08-27 | 2010-12-30 |  | 36d |  |  |  |  |
| 301 | 2.3.2.1 | Scientific treatment of data | 60d | 2010-08-27 | 2010-11-18 | 299 | 36d | 0d |  |  |  |
| 302 | 2.3.2.2 | Clinician treatment of data | 30d | 2010-11-19 | 2010-12-30 | 301 | 36d | 0d |  |  |  |
| 303 | 2.4 | **Version 1.1 - Demonstration** | 2d | 2010-12-31 | 2011-01-03 |  | 36d |  |  | O2H | 16h |
| 304 | 2.4.1 | Internal Demonstration | 1d | 2010-12-31 | 2010-12-31 | 302 | 36d | 0d |  |  |  |
| 305 | 2.4.2 | Congress Demonstration | 1d | 2011-01-03 | 2011-01-03 | 304 | 36d |  |  |  |  |
| 306 | 3 | **GP Administrative** | 159d | 2009-08-07 | 2010-03-25 |  | 0d |  |  | O2H | 1272h |
| 307 | 3.1 | Initial Study | 60d | 2009-08-07 | 2009-10-29 |  | 0d |  | must finish on 2009-10-29 |  |  |
| 308 | 3.2 | Functional Analysis | 60d | 2009-08-07 | 2009-10-29 |  | 0d |  | must finish on 2009-10-29 |  |  |
| 309 | 3.3 | Business Plan | 60d | 2009-10-29 | 2010-01-28 |  | 238d | 0d |  |  |  |
| 310 | 3.4 | Difusion Plan | 40d | 2010-01-29 | 2010-03-25 | 309 | 238d |  |  |  |  |
| 311 | 4 | **Documentation management** | 100d | 2009-10-29 | 2010-03-25 |  | 238d |  |  | ASET | 800h |
| 312 | 4.1 | Memoria 1ra | 100d | 2009-10-29 | 2010-03-25 |  | 238d |  |  |  |  |
