# Planning_ActivA

Schedule from MS Project, 2009-08-07 to 2011-03-03.

## Calendars

- Standard: Mon-Fri 08:00-12:00, 13:00-17:00; Sat-Sun off. Exceptions (off unless hours are given): 2009-12-25 (Christmas), 2010-01-01 (New year).

## Resources

| Resource | Group |
| --- | --- |
| Dr. Luis Maiz | HRC |
| Dra. Maite Martinez | H12O |
| Esther Sabando | AMFQ |
| Alfonso Montero | AMFQ |
| Tamara del corral | AMFQ |
| Jordi Villa | UPF |
| Sinan Mutlu | UPF |
| James Dalton | UPF |
| Jordi Blecua | ISOCO |
| Miguel Tsuchiya | FL |
| Joan Plana | ASET |
| Lisbeth Hernández | O2H |
| Miguel Hernández | O2H |
| Jordi Vilaro | O2H |
| Ezequiel Cuesta | O2H |
| Doug Thurber | O2H |
| William Lalinde | O2H |
| FL |  |
| O2H |  |
| ISOCO |  |
| UPF |  |
| AMFQ |  |
| ASET |  |
| FG |  |
| LH |  |
| JV |  |
| MH |  |
| JVL |  |
| JVA |  |
| SINAN |  |
| SM |  |
| JD |  |

## Schedule

| ID | WBS | Task | Type | Duration | Start | Finish | Predecessors | Total slack | Free slack | Constraint | Resources | Work |
| --- | --- | --- | --- | --- | --- | --- | --- | --- | --- | --- | --- | --- |
| 1 | 1 | **GP 1A Version 1 - ActivA Platform** |  | 331d | 2009-09-01 | 2010-12-09 |  | 0d |  |  |  | 17504h |
| 2 | 1.1 | **Analysis - Entire Platform Complete** |  | 57d | 2009-09-01 | 2009-11-18 |  | 0d |  |  |  |  |
| 3 | 1.1.1 | Specifications |  | 43d | 2009-09-01 | 2009-10-29 |  | 0d |  | start no earlier than 2009-09-01 |  |  |
| 4 | 1.1.2 | INDEXING RULES |  | 14d | 2009-10-29 | 2009-11-17 |  | 335d |  |  |  |  |
| 5 | 1.1.2 | Integration Specifications |  | 14d | 2009-10-29 | 2009-11-17 |  | 335d |  |  |  |  |
| 6 | 1.1.2 | Analysis complete Entire Platform - General |  | 14d | 2009-10-30 | 2009-11-18 | 3 | 0d |  |  |  |  |
| 7 | 1.2 | **WP1 Mobile platform** |  | 80d | 2009-10-29 | 2010-02-19 |  | 119d |  |  | FL; O2H | 3152h |
| 8 | 1.2.1 | **Analysis Mobile Applications** |  | 23d | 2009-10-29 | 2009-11-30 |  | 269d |  |  | O2H | 184h |
| 9 | 1.2.1.1 | Specifications |  | 15d | 2009-10-29 | 2009-11-18 |  | 252d | 0d | start no earlier than 2009-10-29 |  |  |
| 10 | 1.2.1.2 | Analysis Mobile Platform |  | 15d | 2009-11-10 | 2009-11-30 |  | 271d | 0d | start no earlier than 2009-11-10 |  |  |
| 11 | 1.2.2 | **Equipment Acquisition** |  | 10d | 2009-11-19 | 2009-12-02 |  | 324d |  |  | FL | 80h |
| 12 | 1.2.2.1 | Acquisition |  | 5d | 2009-11-19 | 2009-11-25 | 6 | 307d | 0d |  |  |  |
| 13 | 1.2.2.2 | Installation |  | 5d | 2009-11-26 | 2009-12-02 | 12 | 307d |  |  |  |  |
| 14 | 1.2.3 | **iPhone development (from other project)** |  | 65d | 2009-11-19 | 2010-02-19 |  | 269d |  |  | FL | 520h |
| 15 | 1.2.3.1 | Smart questionaries |  | 45d | 2009-12-01 | 2010-02-03 | 10 | 259d | 0d |  |  |  |
| 16 | 1.2.3.2 | Measurements |  | 45d | 2009-12-01 | 2010-02-03 | 10 | 259d | 0d |  |  |  |
| 17 | 1.2.3.3 | Calendar and alarm |  | 45d | 2009-12-01 | 2010-02-03 | 10 | 259d | 0d |  |  |  |
| 18 | 1.2.3.4 | Security |  | 14d | 2009-12-01 | 2009-12-18 | 10 | 290d | 31d |  |  |  |
| 19 | 1.2.3.5 | Complete Build Version 1 application |  | 5d | 2010-02-04 | 2010-02-10 | 15, 16, 17, 18 | 259d |  |  |  |  |
| 20 | 1.2.3.6 | Implementation document |  | 50d | 2009-11-19 | 2010-01-29 | 9 | 252d | 0d |  |  |  |
| 21 | 1.2.3.7 | User manual |  | 15d | 2010-02-01 | 2010-02-19 | 20 | 252d |  |  |  |  |
| 22 | 1.2.4 | **Android Development** |  | 58d | 2009-11-19 | 2010-02-10 |  | 276d |  |  | FL | 464h |
| 23 | 1.2.4.1 | Smart questionaries |  | 30d | 2009-12-01 | 2010-01-13 | 10 | 254d | 0d |  |  |  |
| 24 | 1.2.4.2 | Measurements |  | 30d | 2009-12-01 | 2010-01-13 | 10 | 269d | 15d |  |  |  |
| 25 | 1.2.4.3 | Calendar and alarm |  | 15d | 2010-01-14 | 2010-02-03 | 23 | 254d | 0d |  |  |  |
| 26 | 1.2.4.4 | Security |  | 15d | 2010-01-14 | 2010-02-03 | 23 | 254d | 0d |  |  |  |
| 27 | 1.2.4.5 | Complete Build Version 1 application |  | 5d | 2010-02-04 | 2010-02-10 | 23, 24, 25, 26 | 254d | 0d |  |  |  |
| 28 | 1.2.4.6 | Implementation document |  | 50d | 2009-11-19 | 2010-01-29 | 9 | 267d |  |  |  |  |
| 29 | 1.2.4.7 | User manual |  | 15d | 2009-11-19 | 2009-12-09 | 9 | 302d |  |  |  |  |
| 30 | 1.2.4.8 | Development Complete - Mobile Platform | milestone | 0d | 2010-02-10 | 2010-02-10 | 27 | 276d |  |  |  |  |

Notes:
- 1: Although a cascade way is shown, the methodology must be iterative by prototypying
- 4: Documentation, iterative through development
- 5: Documentation, iterative through development
- 6: Documentation, iterative through development

| ID | WBS | Task | Type | Duration | Start | Finish | Predecessors | Total slack | Free slack | Resources | Work |
| --- | --- | --- | --- | --- | --- | --- | --- | --- | --- | --- | --- |
| 31 | 1.2.5 | **Quality assurance** |  | 78d | 2009-10-29 | 2010-02-17 |  | 119d |  | FL | 624h |
| 32 | 1.2.5.1 | Test Matrix |  | 5d | 2010-02-11 | 2010-02-17 | 27 | 254d |  |  |  |
| 33 | 1.2.5.2 | Test Quality assurance iPhone |  | 10d | 2009-10-29 | 2009-11-11 |  | 119d | 0d |  |  |
| 34 | 1.2.5.3 | Test Quality assurance Android |  | 10d | 2009-11-12 | 2009-11-25 | 33 | 102d | 0d |  |  |
| 35 | 1.2.6 | Complete First Product Delivery - MP | milestone | 0d | 2009-11-25 | 2009-11-25 | 33, 34 | 119d | 81d |  |  |
| 36 | 1.3 | **WP2 Web platform** |  | 137d | 2009-10-30 | 2010-05-12 |  | 38d |  |  | 160h |
| 37 | 1.3.1 | **WP2.1 Analysis** |  | 20d | 2009-10-30 | 2009-11-26 |  | 38d | 0d | O2H | 160h |
| 38 | 1.3.1.1 | Architecture document update |  | 15d | 2009-10-30 | 2009-11-19 | 3 | 26d |  |  |  |
| 39 | 1.3.1.2 | Analysis ActivA Platform |  | 15d | 2009-10-30 | 2009-11-19 | 3 | 21d | 0d |  |  |
| 40 | 1.3.1.1 | Test Matrix |  | 5d | 2009-11-20 | 2009-11-26 | 39 | 21d | 10d |  |  |
| 41 | 1.3.2 | **WP2.2 Development** |  | 117d | 2009-11-27 | 2010-05-12 | 37 | 38d |  |  |  |
| 42 | 1.3.2.1 | **WP2.2.1 Hardware** |  | 70d | 2009-11-27 | 2010-03-08 |  | 38d |  |  |  |
| 43 | 1.3.2.1.1 | Demo server installation |  | 10d | 2009-11-27 | 2009-12-10 | 3 | 21d | 0d |  |  |
| 44 | 1.3.2.1.2 | Load balancing servers |  | 30d | 2009-12-11 | 2010-01-25 | 43 | 241d | 0d |  |  |
| 45 | 1.3.2.1.3 | Disperse database |  | 30d | 2010-01-26 | 2010-03-08 | 44 | 241d |  |  |  |
| 46 | 1.3.2.2 | **WP2.2.2 Server side development** |  | 65d | 2009-12-11 | 2010-03-15 | 43 | 38d |  |  |  |
| 47 | 1.3.2.2.1 | Business objects (EJB3 Entities) |  | 20d | 2009-12-11 | 2010-01-11 | 40 | 21d | 0d |  |  |
| 48 | 1.3.2.2.2 | Business methods (EJB3 Sessions) |  | 20d | 2010-01-12 | 2010-02-08 | 47 | 21d | 0d |  |  |
| 49 | 1.3.2.2.3 | Client server communication |  | 20d | 2009-12-11 | 2010-01-11 | 40 | 281d | 40d |  |  |
| 50 | 1.3.2.2.4 | Client side communication (GWT RPC) |  | 20d | 2009-12-11 | 2010-01-11 | 40 | 281d | 40d |  |  |
| 51 | 1.3.2.2.5 | Client side communication (GWT JSON) |  | 20d | 2009-12-11 | 2010-01-11 | 40 | 281d | 40d |  |  |
| 52 | 1.3.2.2.6 | Web services (SOAP XML) |  | 20d | 2010-02-09 | 2010-03-08 | 48 | 21d | 0d |  |  |
| 53 | 1.3.2.2.1 | Test Period |  | 5d | 2010-03-09 | 2010-03-15 | 48, 49, 50, 51, 52 | 224d | 30d |  |  |
| 54 | 1.3.2.3 | **WP2.2.3 Client side development** |  | 106d | 2009-11-27 | 2010-04-27 |  | 53d |  |  |  |
| 55 | 1.3.2.3.1 | Client Business objects |  | 21d | 2009-11-27 | 2009-12-28 | 39 | 77d | 24d |  |  |
| 56 | 1.3.2.3.2 | Client UI Events |  | 20d | 2009-11-27 | 2009-12-24 | 39 | 53d | 0d |  |  |
| 57 | 1.3.2.3.3 | Client widgets |  | 25d | 2009-12-28 | 2010-02-01 | 56 | 36d | 0d |  |  |
| 58 | 1.3.2.3.4 | Client Services |  | 10d | 2010-02-02 | 2010-02-15 | 55, 56, 57 | 36d | 15d |  |  |
| 59 | 1.3.2.3.5 | Web Develpoment end to end consolidation |  | 10d | 2010-03-09 | 2010-03-22 | 52, 58 | 21d | 0d |  |  |
| 60 | 1.3.2.3.6 | Internatioalization and Accesibility |  | 20d | 2010-03-23 | 2010-04-19 | 59 | 194d | 0d |  |  |
| 61 | 1.3.2.3.1 | Test Period |  | 5d | 2010-04-20 | 2010-04-26 | 55, 56, 57, 58, 59, 60 | 194d | 0d |  |  |
| 62 | 1.3.2.3.2 | Document delivery |  | 1d | 2010-04-27 | 2010-04-27 | 61 | 205d |  |  |  |

Notes:
- 32: Test Matrix imust developed with specifications
- 35: Used to take patient measurements
- 38: This architecture document is not constrained only to the web platform.
- 40: Test Matrix imust developed with specifications
- 43: Initially only one server is needed
- 44: For an scalable choice multiple servers must be mounted
- 45: The database must be dispersed as well to avoid being the bottleneck
- 47: Objetos de negocio
- 48: Métodos de negocio
- 51: Additional sites not using RPC
- 53: Test Matrix imust developed with specifications
- 57: Will be replaced by the 3D UI.
- 61: Test Matrix imust developed with specifications

| ID | WBS | Task | Type | Duration | Start | Finish | Predecessors | Total slack | Free slack |
| --- | --- | --- | --- | --- | --- | --- | --- | --- | --- |
| 63 | 1.3.2.4 | **WP2.2.4 e-commerce** |  | 81d | 2009-11-27 | 2010-03-23 |  | 43d |  |
| 64 | 1.3.2.4.1 | 2.2.4.1 Analysis & Update to Arch. Doc |  | 15d | 2009-11-27 | 2009-12-17 | 39 | 43d | 0d |
| 65 | 1.3.2.4.4 | 2.2.4.2 Interface implementation |  | 45d | 2009-12-18 | 2010-02-22 | 64 | 26d | 0d |
| 66 | 1.3.2.4.5 | 2.2.4.3 Transaction |  | 15d | 2010-02-23 | 2010-03-15 | 65 | 26d | 0d |
| 67 | 1.3.2.4.1 | Test Period |  | 5d | 2010-03-16 | 2010-03-22 | 66, 64, 65 | 219d | 0d |
| 68 | 1.3.2.4.2 | Document delivery |  | 1d | 2010-03-23 | 2010-03-23 | 67 | 230d |  |
| 69 | 1.3.2.5 | **WP2.2.5 Security** |  | 82d | 2009-11-27 | 2010-03-24 |  | 42d |  |
| 70 | 1.3.2.5.1 | 2.2.5.1 Analysis & Update Architecture |  | 15d | 2009-11-27 | 2009-12-17 | 39 | 42d | 0d |
| 71 | 1.3.2.5.2 | Document delivery |  | 1d | 2009-12-18 | 2009-12-18 | 70 | 25d | 0d |
| 72 | 1.3.2.5.3 | 2.2.5.2 HTTPS |  | 45d | 2009-12-21 | 2010-02-23 | 71 | 25d | 0d |
| 73 | 1.3.2.5.4 | 2.2.5.3 Captchas |  | 15d | 2010-02-24 | 2010-03-16 | 72 | 25d | 0d |
| 74 | 1.3.2.5.1 | Test Period |  | 5d | 2010-03-17 | 2010-03-23 | 73, 70, 71, 72 | 218d | 0d |
| 75 | 1.3.2.5.2 | Document delivery |  | 1d | 2010-03-24 | 2010-03-24 | 74 | 229d |  |
| 76 | 1.3.2.6 | **WP 2.2.6 HL7** |  | 106d | 2009-11-27 | 2010-04-27 |  | 211d |  |
| 77 | 1.3.2.6.1 | **WP 2.2.6.1 Analysis** |  | 106d | 2009-11-27 | 2010-04-27 |  | 211d |  |
| 78 | 1.3.2.6.1.1 | 2.2.6.1 Architecture |  | 20d | 2009-11-27 | 2009-12-24 | 39 | 194d | 0d |
| 79 | 1.3.2.6.1.2 | 2.2.6.2 Development |  | 20d | 2009-12-28 | 2010-01-25 | 78 | 211d | 0d |
| 80 | 1.3.2.6.1.3 | 2.2.6.2 Web services for interfaces |  | 60d | 2010-01-26 | 2010-04-19 | 79 | 194d | 0d |
| 81 | 1.3.2.6.1.1 | Test Period |  | 5d | 2010-04-20 | 2010-04-26 | 80, 78, 79 | 194d | 0d |
| 82 | 1.3.2.6.1.2 | Document delivery |  | 1d | 2010-04-27 | 2010-04-27 | 81 | 205d |  |
| 83 | 1.3.2.7 | **Quality Assurance** |  | 12d | 2010-04-27 | 2010-05-12 |  | 211d |  |
| 84 | 1.3.2.7.1 | Test Matrix Update |  | 2d | 2010-04-27 | 2010-04-28 | 53, 61, 67, 74, 81 | 194d | 0d |
| 85 | 1.3.2.7.2 | Test Period |  | 10d | 2010-04-29 | 2010-05-12 | 84 | 194d |  |
| 86 | 1.3.3 | Implementation document |  | 110d | 2009-11-20 | 2010-04-26 | 39 | 206d |  |
| 87 | 1.3.4 | Development Complete - Web Platform | milestone | 0d | 2010-03-22 | 2010-03-22 | 52, 59, 66, 73 | 38d | 0d |

Notes:
- 67: Test Matrix imust developed with specifications
- 74: Test Matrix imust developed with specifications
- 81: Test Matrix imust developed with specifications
- 84: Agregar Test Matrix al principio y Text Period al final de todos los bloques en WP2 (integracion al final MH)
- 86: This implementation document is not constrained only to the web platform.

| ID | WBS | Task | Type | Duration | Start | Finish | Predecessors | Total slack | Free slack | Resources | Work |
| --- | --- | --- | --- | --- | --- | --- | --- | --- | --- | --- | --- |
| 88 | 1.4 | **WP3 Social Networking platform** |  | 115d | 2009-10-29 | 2010-04-09 |  | 54d |  | ISOCO | 920h |
| 89 | 1.4.1 | **WP3.1 Analysis** |  | 75d | 2009-11-19 | 2010-03-05 |  | 39d |  |  |  |
| 90 | 1.4.1.1 | 3.1.1 Social Networks |  | 20d | 2009-11-19 | 2009-12-16 | 6 | 22d | 0d |  |  |
| 91 | 1.4.1.2 | 3.1.2 Communication chanels and wikis |  | 10d | 2009-12-17 | 2009-12-31 | 90 | 22d | 0d |  |  |
| 92 | 1.4.1.3 | 3.1.3 Mobile access |  | 10d | 2010-01-04 | 2010-01-15 | 91 | 22d | 0d |  |  |
| 93 | 1.4.1.4 | 3.1.4 RSS |  | 25d | 2010-01-18 | 2010-02-19 | 92 | 22d | 0d |  |  |
| 94 | 1.4.1.5 | 3.1.5 Stadistics |  | 10d | 2010-02-22 | 2010-03-05 | 93 | 222d | 0d |  |  |
| 95 | 1.4.2 | **WP3.2 Development** |  | 110d | 2009-10-29 | 2010-04-02 |  | 119d |  |  |  |
| 96 | 1.4.2.1 | 3.2.1 Social network integration |  | 20d | 2010-03-08 | 2010-04-02 | 94 | 222d |  |  |  |
| 97 | 1.4.2.2 | 3.2.2 Communication chanels and wikis |  | 30d | 2010-02-22 | 2010-04-02 | 93 | 222d |  |  |  |
| 98 | 1.4.2.3 | 3.2.3 Mobile development |  | 20d | 2010-02-22 | 2010-03-19 | 93 | 22d | 0d |  |  |
| 99 | 1.4.2.4 | 3.2.4 RSS interfaces |  | 15d | 2010-02-22 | 2010-03-12 | 93 | 237d |  |  |  |
| 100 | 1.4.2.5 | 3.2.5 Stadistics package |  | 10d | 2009-10-29 | 2009-11-11 |  | 322d |  |  |  |
| 101 | 1.4.3 | Development Complete - SN Platform | milestone | 0d | 2010-03-19 | 2010-03-19 | 98 | 39d | 0d |  |  |
| 102 | 1.4.4 | **WP3.3 Quality assurance** |  | 15d | 2010-03-22 | 2010-04-09 |  | 234d |  |  |  |
| 103 | 1.4.4.1 | **WP3.3.1 Test matrix** |  | 10d | 2010-03-22 | 2010-04-02 |  | 234d |  |  |  |
| 104 | 1.4.4.1.1 | 3.3.1.1 Environment test matrix |  | 5d | 2010-03-22 | 2010-03-26 | 101 | 217d | 0d |  |  |
| 105 | 1.4.4.1.2 | 3.3.1.2 Scientific test matrix |  | 5d | 2010-03-29 | 2010-04-02 | 104 | 217d | 0d |  |  |
| 106 | 1.4.4.2 | **WP3.3.2 Test period** |  | 5d | 2010-04-05 | 2010-04-09 |  | 234d |  |  |  |
| 107 | 1.4.4.2.1 | 3.3.2.1 Environment test period |  | 5d | 2010-04-05 | 2010-04-09 | 105 | 217d |  |  |  |
| 108 | 1.4.4.2.2 | 3.3.2.2 Scientific test period |  | 5d | 2010-04-05 | 2010-04-09 | 105 | 217d | 0d |  |  |
| 109 | 1.4.5 | Complete First Product Delivery - SN | milestone | 0d | 2010-04-09 | 2010-04-09 | 108 | 234d |  |  |  |
| 110 | 1.5 | **WP4 Virtual 3D platform** |  | 139d | 2009-10-29 | 2010-05-13 |  | 15d |  | UPF | 9088h |
| 111 | 1.5.1 | **Analysis** |  | 97d | 2009-10-29 | 2010-03-16 |  | 15d |  |  | 7976h |
| 112 | 1.5.1.1 | Functional Definitions |  | 5d | 2009-11-19 | 2009-11-25 | 6 | 329d |  | JV | 40h |
| 113 | 1.5.1.2 | Matrix - Tools Sets |  | 5d | 2009-11-19 | 2009-11-25 | 6 | 0d |  | JV; JD; MH; SM | 160h |
| 114 | 1.5.1.3 | General Level Rules Definition |  | 2d | 2009-11-26 | 2009-11-27 | 113 | 0d |  | LH; JVA | 32h |
| 115 | 1.5.1.1 | Animation script (screenplay) |  | 10d | 2009-11-30 | 2009-12-11 | 114 | 0d |  | LH; JVA | 160h |
| 116 | 1.5.1.1 | End User Visualization Guidelines |  | 2d | 2009-12-14 | 2009-12-15 | 115 | 0d |  | SM; JVA; JD | 48h |

Notes:
- 91: Not fully deployed to leave it for later
- 92: Not fully deployed to leave it for later

| ID | WBS | Task | Duration | Start | Finish | Predecessors | Total slack | Free slack | Resources | Work |
| --- | --- | --- | --- | --- | --- | --- | --- | --- | --- | --- |
| 117 | 1.5.1.6 | **ActionScript development** | 97d | 2009-10-29 | 2010-03-16 |  | 252d |  |  | 7536h |
| 118 | 1.5.1.6.1 | **Genomics** | 60d | 2009-10-29 | 2010-01-22 |  | 259d |  |  | 6392h |
| 119 | 1.5.1.6.1.1 | Genomics - Genotyping 4.1.1 | 15d | 2009-11-30 | 2009-12-18 | 114 | 312d |  | JD; JV | 240h |
| 120 | 1.5.1.6.1.2 | Chromosome Model and Visual Source | 15d | 2009-10-29 | 2009-11-18 |  | 259d | 7d | JD; JV | 240h |
| 121 | 1.5.1.6.1.3 | CFTR Gene Model and Visual Sources | 15d | 2009-10-29 | 2009-11-18 |  | 289d | 12d | JD; JV | 240h |
| 122 | 1.5.1.6.1.4 | Chaperone | 30d | 2009-10-29 | 2009-12-09 |  | 317d | 0d | JD; JV | 480h |
| 123 | 1.5.1.6.1.5 | Regulation | 30d | 2009-10-29 | 2009-12-09 |  | 317d | 0d | JD; JV | 480h |
| 124 | 1.5.1.6.1.6 | Pro Inflamatory Model and Visual Sources | 30d | 2009-10-29 | 2009-12-09 |  | 317d | 0d | JD; JV | 480h |
| 125 | 1.5.1.6.1.7 | Functional Genotype Model and Visual Sources | 45d | 2009-10-29 | 2009-12-31 |  | 279d | 2d | JD; JV | 720h |
| 126 | 1.5.1.6.1.8 | Proteomics Data and Visual Sources | 45d | 2009-10-29 | 2009-12-31 |  | 284d | 7d | JD; JV | 720h |
| 127 | 1.5.1.6.1.9 | Bioinformatics Data and Visual Sources | 45d | 2009-10-29 | 2009-12-31 |  | 289d | 12d | JD; JV | 720h |
| 128 | 1.5.1.6.1.10 | Metabolomics Data and Visual Sources | 60d | 2009-10-29 | 2010-01-22 |  | 279d | 2d | JD; JV | 960h |
| 129 | 1.5.1.6.1.11 | Structural Data and Visual Sources | 60d | 2009-10-29 | 2010-01-22 |  | 284d | 7d | JD; JV | 960h |
| 130 | 1.5.1.6.1.12 | **3D Initial Tool Test** | 7d | 2009-11-19 | 2009-11-27 |  | 252d |  |  | 56h |
| 131 | 1.5.1.6.1.12.1 | Rule Details | 5d | 2009-11-19 | 2009-11-25 | 6 | 252d | 0d | MH | 40h |
| 132 | 1.5.1.6.1.12.2 | Initial Component Rendering | 2d | 2009-11-19 | 2009-11-20 | 6 | 332d |  | SM | 16h |
| 133 | 1.5.1.6.1.12.3 | Visualization - 3D Initial Rules/Guidelines | 2d | 2009-11-19 | 2009-11-20 | 6 | 327d | 0d |  |  |
| 134 | 1.5.1.6.1.12.4 | Object Profile - 3D Enviroment | 2d | 2009-11-23 | 2009-11-24 | 133 | 327d | 0d |  |  |
| 135 | 1.5.1.6.1.12.5 | Visualization & Interaction (basic) - 3D object | 3d | 2009-11-25 | 2009-11-27 | 134 | 327d |  |  |  |
| 136 | 1.5.1.6.1.13 | **Chromosome** | 17d | 2009-11-26 | 2009-12-18 |  | 252d |  |  | 96h |
| 137 | 1.5.1.6.1.13.1 | Rule Details | 2d | 2009-11-26 | 2009-11-27 | 131 | 252d | 0d | MH | 16h |
| 138 | 1.5.1.6.1.13.2 | Data Aquisition (Info/Links) | 5d | 2009-11-30 | 2009-12-04 | 137, 120 | 252d | 0d | MH | 40h |
| 139 | 1.5.1.6.1.13.3 | Component Rendering | 5d | 2009-12-07 | 2009-12-11 | 138 | 252d | 0d | SM | 40h |
| 140 | 1.5.1.6.1.13.4 | Object Profile - 3D Enviroment | 2d | 2009-12-14 | 2009-12-15 | 139 | 310d | 0d |  |  |
| 141 | 1.5.1.6.1.13.5 | Visualization & Interaction - 3D object | 3d | 2009-12-16 | 2009-12-18 | 140 | 312d |  |  |  |

Notes:
- 119: Not fully deployed to leave it for later
- 130: Not fully deployed to leave it for later
- 131: Not fully deployed to leave it for later
- 132: Not fully deployed to leave it for later
- 136: Not fully deployed to leave it for later
- 137: Not fully deployed to leave it for later
- 138: Not fully deployed to leave it for later
- 139: Not fully deployed to leave it for later

| ID | WBS | Task | Duration | Start | Finish | Predecessors | Total slack | Free slack | Resources | Work |
| --- | --- | --- | --- | --- | --- | --- | --- | --- | --- | --- |
| 142 | 1.5.1.6.2 | **Genotyping CFTR 4.1.1** | 62d | 2009-11-26 | 2010-02-23 |  | 264d |  |  | 1144h |
| 143 | 1.5.1.6.2.1 | **Rule Details** | 19d | 2009-11-26 | 2009-12-22 |  | 264d |  | MH | 248h |
| 144 | 1.5.1.6.2.1.1 | Rule Details | 2d | 2009-11-26 | 2009-11-27 | 131 | 327d |  | MH | 16h |
| 145 | 1.5.1.6.2.1.2 | Data Aquisition (Info/Links) | 5d | 2009-12-07 | 2009-12-11 | 138, 121 | 277d | 0d | MH | 40h |
| 146 | 1.5.1.6.2.1.3 | Component Rendering | 5d | 2009-12-14 | 2009-12-18 | 139 | 252d |  | SM | 40h |
| 147 | 1.5.1.6.2.1.4 | Object Profile - 3D Enviroment | 2d | 2009-12-16 | 2009-12-17 | 140 | 310d | 0d |  |  |
| 148 | 1.5.1.6.2.1.5 | Visualization & Interaction - 3D object | 3d | 2009-12-18 | 2009-12-22 | 147 | 310d |  |  |  |
| 149 | 1.5.1.6.2.2 | **Chaperones** | 22d | 2009-12-10 | 2010-01-12 |  | 264d |  |  | 136h |
| 150 | 1.5.1.6.2.2.1 | Rule Details | 2d | 2009-12-10 | 2009-12-11 | 131, 122 | 317d |  | MH | 16h |
| 151 | 1.5.1.6.2.2.2 | Data Aquisition (Info/Links) | 5d | 2009-12-21 | 2009-12-28 | 163 | 277d | 0d | MH | 40h |
| 152 | 1.5.1.6.2.2.3 | Component Rendering | 5d | 2009-12-29 | 2010-01-05 | 164 | 252d | 0d | MH; JD | 80h |
| 153 | 1.5.1.6.2.2.4 | Object Profile - 3D Enviroment | 2d | 2010-01-06 | 2010-01-07 | 152 | 297d | 0d |  |  |
| 154 | 1.5.1.6.2.2.5 | Visualization & Interaction - 3D object | 3d | 2010-01-08 | 2010-01-12 | 153 | 297d |  |  |  |
| 155 | 1.5.1.6.2.3 | **Gene Regulation** | 27d | 2009-12-10 | 2010-01-19 |  | 269d |  |  |  |
| 156 | 1.5.1.6.2.3.1 | Rule Details | 2d | 2009-12-10 | 2009-12-11 | 131, 123 | 317d |  |  |  |
| 157 | 1.5.1.6.2.3.2 | Data Aquisition (Info/Links) | 5d | 2009-12-29 | 2010-01-05 | 151 | 277d | 0d |  |  |
| 158 | 1.5.1.6.2.3.3 | Component Rendering | 5d | 2010-01-06 | 2010-01-12 | 152 | 252d | 0d |  |  |
| 159 | 1.5.1.6.2.3.4 | Object Profile - 3D Enviroment | 2d | 2010-01-13 | 2010-01-14 | 158 | 292d | 0d |  |  |
| 160 | 1.5.1.6.2.3.5 | Visualization - 3D object | 3d | 2010-01-15 | 2010-01-19 | 159 | 292d |  |  |  |
| 161 | 1.5.1.6.2.4 | **Pro-Inflamatory Genotype** | 17d | 2009-12-10 | 2010-01-05 |  | 259d |  |  | 96h |
| 162 | 1.5.1.6.2.4.1 | Rule Details | 2d | 2009-12-10 | 2009-12-11 | 131, 124 | 317d |  | MH | 16h |
| 163 | 1.5.1.6.2.4.2 | Data Aquisition (Info/Links) | 5d | 2009-12-14 | 2009-12-18 | 145 | 277d | 0d | MH | 40h |
| 164 | 1.5.1.6.2.4.3 | Component Rendering | 5d | 2009-12-21 | 2009-12-28 | 146 | 252d | 0d | SM | 40h |
| 165 | 1.5.1.6.2.4.4 | Object Profile - 3D Enviroment | 2d | 2009-12-29 | 2009-12-30 | 164 | 302d | 0d |  |  |
| 166 | 1.5.1.6.2.4.5 | Visualization & Interaction - 3D object | 3d | 2009-12-31 | 2010-01-05 | 165 | 302d |  |  |  |

Notes:
- 142: Not fully deployed to leave it for later
- 143: Not fully deployed to leave it for later
- 144: Not fully deployed to leave it for later
- 145: Not fully deployed to leave it for later
- 146: Not fully deployed to leave it for later
- 149: Not fully deployed to leave it for later
- 150: Not fully deployed to leave it for later
- 151: Not fully deployed to leave it for later
- 152: Not fully deployed to leave it for later
- 153: Not fully deployed to leave it for later
- 154: Not fully deployed to leave it for later
- 155: Not fully deployed to leave it for later
- 156: Not fully deployed to leave it for later
- 157: Not fully deployed to leave it for later
- 158: Not fully deployed to leave it for later
- 159: Not fully deployed to leave it for later
- 160: Not fully deployed to leave it for later
- 161: Not fully deployed to leave it for later
- 162: Not fully deployed to leave it for later
- 163: Not fully deployed to leave it for later
- 164: Not fully deployed to leave it for later

| ID | WBS | Task | Duration | Start | Finish | Predecessors | Total slack | Free slack | Resources | Work |
| --- | --- | --- | --- | --- | --- | --- | --- | --- | --- | --- |
| 167 | 1.5.1.6.2.5 | **Functional Genotype** | 42d | 2009-11-26 | 2010-01-26 |  | 284d |  |  | 128h |
| 168 | 1.5.1.6.2.5.1 | Rule Details | 2d | 2009-11-26 | 2009-11-27 | 131 | 327d |  | MH | 16h |
| 169 | 1.5.1.6.2.5.2 | Data Aquisition (Info/Links) | 5d | 2010-01-06 | 2010-01-12 | 157, 125 | 277d | 0d | MH | 40h |
| 170 | 1.5.1.6.2.5.3 | Component Rendering | 5d | 2010-01-13 | 2010-01-19 | 158 | 252d | 0d | MH | 40h |
| 171 | 1.5.1.6.2.5.4 | Object Profile - 3D Enviroment | 2d | 2010-01-20 | 2010-01-21 | 170 | 287d | 0d | MH; JD | 32h |
| 172 | 1.5.1.6.2.5.5 | Visualization - 3D object | 3d | 2010-01-22 | 2010-01-26 | 171 | 287d |  |  |  |
| 173 | 1.5.1.6.2.6 | **Proteomics** | 50d | 2009-11-26 | 2010-02-05 |  | 279d |  |  | 104h |
| 174 | 1.5.1.6.2.6.1 | Rule Details | 2d | 2009-11-26 | 2009-11-27 | 131 | 327d |  |  |  |
| 175 | 1.5.1.6.2.6.2 | Data Aquisition (Info/Links) | 5d | 2010-01-13 | 2010-01-19 | 169, 126 | 277d | 0d | MH | 40h |
| 176 | 1.5.1.6.2.6.3 | Component Rendering | 5d | 2010-01-20 | 2010-01-26 | 170 | 252d | 0d |  |  |
| 177 | 1.5.1.6.2.6.4 | Object Profile - 3D Enviroment | 5d | 2010-01-27 | 2010-02-02 | 176 | 279d | 0d | MH | 40h |
| 178 | 1.5.1.6.2.6.5 | Visualization - 3D object | 3d | 2010-02-03 | 2010-02-05 | 177 | 279d |  | SM | 24h |
| 179 | 1.5.1.6.2.7 | **BioInformatics** | 52d | 2009-11-26 | 2010-02-09 |  | 277d |  |  | 160h |
| 180 | 1.5.1.6.2.7.1 | Rule Details | 2d | 2009-11-26 | 2009-11-27 | 131 | 327d |  | MH | 16h |
| 181 | 1.5.1.6.2.7.2 | Data Aquisition (Info/Links) | 5d | 2010-01-20 | 2010-01-26 | 175, 127 | 277d | 0d | MH | 40h |
| 182 | 1.5.1.6.2.7.3 | Component Rendering | 5d | 2010-01-27 | 2010-02-02 | 176 | 252d | 0d | MH; JD | 80h |
| 183 | 1.5.1.6.2.7.4 | Object Profile - 3D Enviroment | 2d | 2010-02-03 | 2010-02-04 | 182 | 277d | 0d |  |  |
| 184 | 1.5.1.6.2.7.5 | Visualization - 3D object | 3d | 2010-02-05 | 2010-02-09 | 183 | 277d |  | SM | 24h |
| 185 | 1.5.1.6.2.8 | **Metabolomics** | 57d | 2009-11-26 | 2010-02-16 |  | 272d |  |  | 136h |
| 186 | 1.5.1.6.2.8.1 | Rule Details | 2d | 2009-11-26 | 2009-11-27 | 131 | 327d |  | MH | 16h |
| 187 | 1.5.1.6.2.8.2 | Data Aquisition (Info/Links) | 5d | 2010-01-27 | 2010-02-02 | 181, 128 | 277d | 0d | MH | 40h |
| 188 | 1.5.1.6.2.8.3 | Component Rendering | 5d | 2010-02-03 | 2010-02-09 | 182 | 252d | 0d | MH; JD | 80h |
| 189 | 1.5.1.6.2.8.4 | Object Profile - 3D Enviroment | 2d | 2010-02-10 | 2010-02-11 | 188 | 272d | 0d |  |  |
| 190 | 1.5.1.6.2.8.5 | Visualization - 3D object | 3d | 2010-02-12 | 2010-02-16 | 189 | 272d |  |  |  |

Notes:
- 167: Not fully deployed to leave it for later
- 168: Not fully deployed to leave it for later
- 169: Not fully deployed to leave it for later
- 170: Not fully deployed to leave it for later
- 171: Not fully deployed to leave it for later
- 172: Not fully deployed to leave it for later
- 173: Not fully deployed to leave it for later
- 174: Not fully deployed to leave it for later
- 175: Not fully deployed to leave it for later
- 176: Not fully deployed to leave it for later
- 177: Not fully deployed to leave it for later
- 178: Not fully deployed to leave it for later
- 179: Not fully deployed to leave it for later
- 180: Not fully deployed to leave it for later
- 181: Not fully deployed to leave it for later
- 182: Not fully deployed to leave it for later
- 183: Not fully deployed to leave it for later
- 184: Not fully deployed to leave it for later
- 185: Not fully deployed to leave it for later
- 186: Not fully deployed to leave it for later
- 187: Not fully deployed to leave it for later
- 188: Not fully deployed to leave it for later
- 189: Not fully deployed to leave it for later
- 190: Not fully deployed to leave it for later

| ID | WBS | Task | Type | Duration | Start | Finish | Predecessors | Total slack | Free slack | Resources | Work |
| --- | --- | --- | --- | --- | --- | --- | --- | --- | --- | --- | --- |
| 191 | 1.5.1.6.2.9 | **Structural Bioinformatics** |  | 62d | 2009-11-26 | 2010-02-23 |  | 267d |  |  | 136h |
| 192 | 1.5.1.6.2.9.1 | Rule Details |  | 2d | 2009-11-26 | 2009-11-27 | 131 | 327d |  | MH | 16h |
| 193 | 1.5.1.6.2.9.2 | Data Aquisition (Info/Links) |  | 5d | 2010-02-03 | 2010-02-09 | 187, 129 | 277d |  | MH | 40h |
| 194 | 1.5.1.6.2.9.3 | Component Rendering |  | 5d | 2010-02-10 | 2010-02-16 | 188 | 252d | 0d | MH; JD | 80h |
| 195 | 1.5.1.6.2.9.4 | Object Profile - 3D Enviroment |  | 2d | 2010-02-17 | 2010-02-18 | 194 | 252d | 0d |  |  |
| 196 | 1.5.1.6.2.9.5 | Visualization - 3D object |  | 3d | 2010-02-19 | 2010-02-23 | 195 | 252d | 0d |  |  |
| 197 | 1.5.1.6.3 | **3D Environment Consolidation** |  | 15d | 2010-02-24 | 2010-03-16 |  | 252d |  |  |  |
| 198 | 1.5.1.6.3.1 | Combined 3D Object Environments |  | 5d | 2010-02-24 | 2010-03-02 | 196 | 252d | 0d |  |  |
| 199 | 1.5.1.6.3.2 | Combined Visualization |  | 5d | 2010-03-03 | 2010-03-09 | 198 | 252d | 0d |  |  |
| 200 | 1.5.1.6.3.3 | Combined Interaction |  | 5d | 2010-03-10 | 2010-03-16 | 199 | 252d |  |  |  |
| 201 | 1.5.2 | **Development** |  | 70d | 2009-12-16 | 2010-03-25 |  | 0d |  |  |  |
| 202 | 1.5.2.1 | Object design frameworks |  | 10d | 2009-12-16 | 2009-12-30 | 116 | 0d |  |  |  |
| 203 | 1.5.2.2 | Object design libraries |  | 45d | 2009-12-31 | 2010-03-04 | 202 | 260d |  |  |  |
| 204 | 1.5.2.3 | complete object designs |  | 45d | 2009-12-31 | 2010-03-04 | 202 | 0d |  |  |  |
| 205 | 1.5.2.4 | Stage design |  | 15d | 2010-03-05 | 2010-03-25 | 204 | 0d |  |  |  |
| 206 | 1.5.3 | Development Complete - VR Platform | milestone | 0d | 2010-03-25 | 2010-03-25 | 205 | 35d |  |  |  |
| 207 | 1.5.4 | **Quality assurance** |  | 35d | 2010-03-26 | 2010-05-13 |  | 0d |  |  |  |
| 208 | 1.5.4.1 | **Test matrix** |  | 10d | 2010-03-26 | 2010-04-08 |  | 0d |  |  |  |
| 209 | 1.5.4.1.1 | Environment test matrix |  | 5d | 2010-03-26 | 2010-04-01 | 205 | 0d |  |  |  |
| 210 | 1.5.4.1.2 | Scientific test matrix |  | 5d | 2010-04-02 | 2010-04-08 | 209 | 0d |  |  |  |
| 211 | 1.5.4.2 | **Test period** |  | 25d | 2010-04-09 | 2010-05-13 |  | 0d |  |  |  |
| 212 | 1.5.4.2.1 | Environment test period |  | 25d | 2010-04-09 | 2010-05-13 | 210 | 0d |  |  |  |
| 213 | 1.5.4.2.2 | Scientific test period |  | 25d | 2010-04-09 | 2010-05-13 | 210 | 210d |  |  |  |
| 214 | 1.5.5 | Complete First Product Delivery - VR | milestone | 0d | 2010-05-13 | 2010-05-13 | 212 | 0d |  |  |  |

Notes:
- 191: Not fully deployed to leave it for later
- 192: Not fully deployed to leave it for later
- 193: Not fully deployed to leave it for later
- 194: Not fully deployed to leave it for later
- 195: Not fully deployed to leave it for later
- 196: Not fully deployed to leave it for later
- 197: Not fully deployed to leave it for later
- 198: Not fully deployed to leave it for later
- 199: Not fully deployed to leave it for later
- 200: Not fully deployed to leave it for later

| ID | WBS | Task | Type | Duration | Start | Finish | Predecessors | Total slack | Free slack | Resources | Work |
| --- | --- | --- | --- | --- | --- | --- | --- | --- | --- | --- | --- |
| 215 | 1.6 | **WP5 Integration** |  | 64d | 2010-03-23 | 2010-06-18 |  | 152d |  | O2H | 1192h |
| 216 | 1.6.1 | **Mobile - Web integration** |  | 40d | 2010-03-23 | 2010-05-17 |  | 208d |  | FL | 320h |
| 217 | 1.6.1.1 | XML communication |  | 10d | 2010-03-23 | 2010-04-05 | 35, 87 | 208d | 0d |  |  |
| 218 | 1.6.1.2 | Security implementation |  | 10d | 2010-04-06 | 2010-04-19 | 217 | 208d | 0d |  |  |
| 219 | 1.6.1.3 | Mobile to Server communication |  | 10d | 2010-04-20 | 2010-05-03 | 218 | 208d | 0d |  |  |
| 220 | 1.6.1.4 | Server to Mobile communication |  | 10d | 2010-05-04 | 2010-05-17 | 219 | 208d | 0d |  |  |
| 221 | 1.6.2 | Platform Mobile Integration - Complete | milestone | 0d | 2010-05-17 | 2010-05-17 | 220 | 208d | 12d |  |  |
| 222 | 1.6.3 | **Social networks** |  | 30d | 2010-03-23 | 2010-05-03 |  | 218d |  |  |  |
| 223 | 1.6.3.1 | Facebook integration |  | 15d | 2010-03-23 | 2010-04-12 | 101, 87 | 218d | 0d |  |  |
| 224 | 1.6.3.2 | Other networks |  | 15d | 2010-04-13 | 2010-05-03 | 223 | 218d | 0d |  |  |
| 225 | 1.6.4 | Platform Social Networking Integration - Complete | milestone | 0d | 2010-05-03 | 2010-05-03 | 224 | 218d | 22d |  |  |
| 226 | 1.6.5 | **Virtual 3D - Web integration** |  | 14d | 2010-05-14 | 2010-06-02 |  | 196d |  | O2H | 112h |
| 227 | 1.6.5.1 | **ActionScript - JavaScript** |  | 14d | 2010-05-14 | 2010-06-02 |  | 196d |  |  |  |
| 228 | 1.6.5.1.1 | Reuse of entities |  | 7d | 2010-05-14 | 2010-05-24 | 214 | 203d |  |  |  |
| 229 | 1.6.5.1.2 | Reuse of commands |  | 7d | 2010-05-14 | 2010-05-24 | 214 | 203d |  |  |  |
| 230 | 1.6.5.1.1 | Demo of integration |  | 14d | 2010-05-14 | 2010-06-02 | 214, 87 | 196d | 0d |  |  |
| 231 | 1.6.6 | Platform VR 3D Integration - Complete | milestone | 0d | 2010-06-02 | 2010-06-02 | 230 | 196d | 0d |  |  |
| 232 | 1.6.7 | **Semantic Web (HL7)** |  | 10d | 2010-03-23 | 2010-04-05 |  | 238d |  | ISOCO | 80h |
| 233 | 1.6.7.1 | Environment Setting |  | 10d | 2010-03-23 | 2010-04-05 | 87 | 238d | 42d |  |  |
| 234 | 1.6.8 | Platform Integration - Complete | milestone | 0d | 2010-06-02 | 2010-06-02 | 221, 225, 231, 233 | 196d |  |  |  |
| 235 | 1.6.5 | **Quality assurance** |  | 26d | 2010-05-14 | 2010-06-18 |  | 114d |  |  | 168h |
| 236 | 1.6.5.1 | **Test matrix** |  | 6d | 2010-05-14 | 2010-05-21 |  | 114d |  |  | 168h |
| 237 | 1.6.5.1.1 | Test Matrix Update |  | 1d | 2010-05-14 | 2010-05-14 | 35, 87, 206, 214, 101 | 114d | 0d | FG | 8h |
| 238 | 1.6.5.1.1 | Patient matrix |  | 5d | 2010-05-17 | 2010-05-21 | 237 | 114d | 0d | FG | 40h |
| 239 | 1.6.5.1.2 | Clinician matrix |  | 5d | 2010-05-17 | 2010-05-21 | 237 | 114d | 0d | LH | 40h |
| 240 | 1.6.5.1.3 | Researcher matrix |  | 5d | 2010-05-17 | 2010-05-21 | 237 | 204d |  | JVA | 40h |
| 241 | 1.6.5.1.4 | Technical matrix |  | 5d | 2010-05-17 | 2010-05-21 | 237 | 124d | 0d | MH | 40h |

Notes:
- 218: Described up

| ID | WBS | Task | Type | Duration | Start | Finish | Predecessors | Total slack | Free slack | Resources | Work |
| --- | --- | --- | --- | --- | --- | --- | --- | --- | --- | --- | --- |
| 242 | 1.6.5.2 | **Test period** |  | 20d | 2010-05-24 | 2010-06-18 |  | 114d |  |  |  |
| 243 | 1.6.5.2.1 | Patient test |  | 10d | 2010-05-24 | 2010-06-04 | 238 | 114d | 0d |  |  |
| 244 | 1.6.5.2.2 | Clinician test |  | 10d | 2010-05-24 | 2010-06-04 | 239 | 114d | 0d |  |  |
| 245 | 1.6.5.2.3 | Researcher tests |  | 10d | 2010-06-07 | 2010-06-18 | 244, 243 | 114d | 0d |  |  |
| 246 | 1.6.5.2.4 | Technical tests |  | 10d | 2010-05-24 | 2010-06-04 | 241 | 124d | 10d |  |  |
| 247 | 1.6.6 | Complete First Product Delivery - WP | milestone | 0d | 2010-06-18 | 2010-06-18 | 243, 244, 245, 246 | 114d | 0d |  |  |
| 248 | 1.9 | **WP6 Inference and reasoning** |  | 85d | 2010-05-14 | 2010-09-09 |  | 0d |  | UPF | 680h |
| 249 | 1.9.1 | **Analysis** |  | 10d | 2010-05-14 | 2010-05-27 |  | 0d |  |  |  |
| 250 | 1.9.1.1 | Database reference document |  | 5d | 2010-05-14 | 2010-05-20 | 35, 87, 101, 206, 214 | 0d |  |  |  |
| 251 | 1.9.1.2 | Knoweldge generation document |  | 5d | 2010-05-21 | 2010-05-27 | 250 | 0d |  |  |  |
| 252 | 1.9.2 | **Development** |  | 35d | 2010-05-28 | 2010-07-15 |  | 0d |  |  |  |
| 253 | 1.9.2.1 | Integration of databases |  | 5d | 2010-05-28 | 2010-06-03 | 251 | 0d |  |  |  |
| 254 | 1.9.2.2 | Interface for accessing information |  | 15d | 2010-06-04 | 2010-06-24 | 253 | 0d |  |  |  |
| 255 | 1.9.2.3 | Integration of new results |  | 15d | 2010-06-25 | 2010-07-15 | 254 | 0d |  |  |  |
| 256 | 1.9.2.4 | Development Complete - Inference Platform | milestone | 0d | 2010-07-15 | 2010-07-15 | 255 | 0d |  |  |  |
| 257 | 1.9.3 | **Quality Assurance** |  | 40d | 2010-07-16 | 2010-09-09 |  | 111d |  |  |  |
| 258 | 1.9.3.1 | **Test Matrix** |  | 10d | 2010-07-16 | 2010-07-29 |  | 111d |  |  |  |
| 259 | 1.9.3.1.1 | Clinician test matrix |  | 5d | 2010-07-16 | 2010-07-22 | 256 | 111d | 0d |  |  |
| 260 | 1.9.3.1.2 | Researcher test matrix |  | 5d | 2010-07-23 | 2010-07-29 | 259 | 111d | 0d |  |  |
| 261 | 1.9.3.1.3 | Platform Integration - Complete | milestone | 0d | 2010-07-29 | 2010-07-29 | 260 | 111d | 0d |  |  |
| 262 | 1.9.3.2 | **Test Period** |  | 30d | 2010-07-30 | 2010-09-09 |  | 111d |  |  |  |
| 263 | 1.9.3.2.1 | Clinician test period |  | 15d | 2010-07-30 | 2010-08-19 | 261 | 111d | 0d |  |  |
| 264 | 1.9.3.2.2 | Researcher test period |  | 15d | 2010-08-20 | 2010-09-09 | 263 | 111d | 0d |  |  |
| 265 | 1.7 | Platform Version 1 - Complete | milestone | 0d | 2010-09-09 | 2010-09-09 | 264 | 111d | 0d |  |  |
| 266 | 1.8 | Code versioning |  | 14d | 2010-09-10 | 2010-09-29 | 265 | 111d |  |  |  |

Notes:
- 243: Do not mix the testing phase named here with the WP Patient Management, they are not related
- 266: Installment of SVN or CVS

| ID | WBS | Task | Type | Duration | Start | Finish | Predecessors | Total slack | Free slack | Resources | Work |
| --- | --- | --- | --- | --- | --- | --- | --- | --- | --- | --- | --- |
| 267 | 1.9 | **WP7 Patient management** |  | 289d | 2009-10-29 | 2010-12-09 |  | 60d |  | AMFQ | 2312h |
| 268 | 1.9.1 | **Preparation** |  | 140d | 2009-10-29 | 2010-05-14 |  | 139d |  |  |  |
| 269 | 1.9.1.1 | Protocol document |  | 25d | 2009-10-29 | 2009-12-02 |  | 139d | 0d |  |  |
| 270 | 1.9.1.2 | Clinician training |  | 60d | 2009-12-03 | 2010-02-26 | 269 | 139d | 0d |  |  |
| 271 | 1.9.1.3 | Condifentiality agreement |  | 30d | 2010-03-01 | 2010-04-09 | 270 | 139d | 0d |  |  |
| 272 | 1.9.1.4 | Patient selection |  | 15d | 2010-04-12 | 2010-04-30 | 271 | 139d | 0d |  |  |
| 273 | 1.9.1.5 | Prueba completa con unos individuos |  | 10d | 2010-05-03 | 2010-05-14 | 272 | 139d | 25d |  |  |
| 274 | 1.9.2 | **Initiation** |  | 70d | 2010-06-21 | 2010-09-24 |  | 114d |  |  |  |
| 275 | 1.9.2.1 | Educational training |  | 15d | 2010-06-21 | 2010-07-09 | 273, 247 | 114d | 0d |  |  |
| 276 | 1.9.2.2 | Patient observation |  | 40d | 2010-07-12 | 2010-09-03 | 275 | 114d | 0d |  |  |
| 277 | 1.9.2.3 | Patient post observation |  | 15d | 2010-09-06 | 2010-09-24 | 276 | 114d |  |  |  |
| 278 | 1.9.3 | **Evaluation and control** |  | 105d | 2010-07-16 | 2010-12-09 |  | 0d |  |  |  |
| 279 | 1.9.3.1 | Initial Analysis and Scientific treatment of data |  | 15d | 2010-07-16 | 2010-08-05 | 256 | 0d |  |  |  |
| 280 | 1.9.3.2 | Scientific treatment of data |  | 60d | 2010-08-06 | 2010-10-28 | 279 | 0d |  |  |  |
| 281 | 1.9.3.3 | Clinician treatment of data |  | 30d | 2010-10-29 | 2010-12-09 | 280 | 0d |  |  |  |
| 282 | 1.10 | Platform Version 1.1 - Complete | milestone | 0d | 2010-12-09 | 2010-12-09 | 281 | 0d |  |  |  |
| 283 | 2 | **GP 1B Version 1.1 (revision)** |  | 349d | 2009-10-29 | 2011-03-03 |  | 0d |  |  | 4968h |
| 284 | 2.1 | **WP8 (revision)** |  | 349d | 2009-10-29 | 2011-03-03 |  | 0d |  | O2H | 2792h |
| 285 | 2.1.1 | **Analysis** |  | 20d | 2010-12-10 | 2011-01-06 |  | 0d |  |  |  |
| 286 | 2.1.1.1 | Modification Requests |  | 10d | 2010-12-10 | 2010-12-23 | 282 | 0d |  |  |  |
| 287 | 2.1.1.2 | Knoweldge generation document |  | 10d | 2010-12-24 | 2011-01-06 | 286 | 0d |  |  |  |
| 288 | 2.1.2 | **Development** |  | 30d | 2011-01-07 | 2011-02-17 |  | 0d |  |  |  |
| 289 | 2.1.2.1 | Modification Development |  | 15d | 2011-01-07 | 2011-01-27 | 287 | 0d |  |  |  |
| 290 | 2.1.2.2 | Integration of new results |  | 15d | 2011-01-28 | 2011-02-17 | 289 | 0d |  |  |  |
| 291 | 2.1.2.3 | Development Complete - VR Platform | milestone | 0d | 2011-02-17 | 2011-02-17 | 290 | 0d |  |  |  |

Notes:
- 267: Deberia de ser WP7 y arreglar los otros
- 273: Atar antes de Test matrix y period

| ID | WBS | Task | Type | Duration | Start | Finish | Predecessors | Total slack | Free slack | Resources | Work |
| --- | --- | --- | --- | --- | --- | --- | --- | --- | --- | --- | --- |
| 292 | 2.1.3 | **Quality Assurance** |  | 349d | 2009-10-29 | 2011-03-03 |  | 0d |  |  |  |
| 293 | 2.1.3.1 | **Test Matrix** |  | 10d | 2011-02-18 | 2011-03-03 |  | 0d |  |  |  |
| 294 | 2.1.3.1.1 | Clinician test matrix |  | 5d | 2011-02-18 | 2011-02-24 | 291 | 0d |  |  |  |
| 295 | 2.1.3.1.2 | Researcher test matrix |  | 5d | 2011-02-25 | 2011-03-03 | 294 | 0d |  |  |  |
| 296 | 2.1.3.2 | Platform Integration - Complete | milestone | 0d | 2011-03-03 | 2011-03-03 | 295 | 0d |  |  |  |
| 297 | 2.1.3.3 | **Test Period** |  | 30d | 2009-10-29 | 2009-12-09 |  | 47d |  |  |  |
| 298 | 2.1.3.3.1 | Clinician test period |  | 15d | 2009-10-29 | 2009-11-18 |  | 47d | 0d |  |  |
| 299 | 2.1.3.3.2 | Researcher test period |  | 15d | 2009-11-19 | 2009-12-09 | 298 | 47d | 0d |  |  |
| 300 | 2.2 | Platform Version 1.1 - Complete | milestone | 0d | 2009-12-09 | 2009-12-09 | 299 | 47d | 0d |  |  |
| 301 | 2.3 | **WP9 Patient management** |  | 270d | 2009-12-10 | 2010-12-24 |  | 47d |  | AMFQ | 2160h |
| 302 | 2.3.1 | **Preparation** |  | 180d | 2009-12-10 | 2010-08-20 |  | 47d |  |  |  |
| 303 | 2.3.1.1 | Protocol document |  | 25d | 2009-12-10 | 2010-01-15 | 300 | 294d |  |  |  |
| 304 | 2.3.1.2 | Clinician training |  | 20d | 2009-12-10 | 2010-01-08 | 300 | 299d |  |  |  |
| 305 | 2.3.1.3 | Condifentiality agreement |  | 20d | 2009-12-10 | 2010-01-08 | 300 | 47d | 0d |  |  |
| 306 | 2.3.1.4 | **Development** |  | 70d | 2010-01-11 | 2010-04-16 |  | 47d |  |  |  |
| 307 | 2.3.1.4.1 | Educational training |  | 15d | 2010-01-11 | 2010-01-29 | 305 | 284d |  |  |  |
| 308 | 2.3.1.4.2 | Patient selection |  | 15d | 2010-01-11 | 2010-01-29 | 305 | 47d | 0d |  |  |
| 309 | 2.3.1.4.3 | Patient observation |  | 40d | 2010-02-01 | 2010-03-26 | 308 | 47d | 0d |  |  |
| 310 | 2.3.1.4.4 | Patient post observation |  | 15d | 2010-03-29 | 2010-04-16 | 309 | 47d | 0d |  |  |
| 311 | 2.3.1.5 | **Evaluation and control** |  | 90d | 2010-04-19 | 2010-08-20 |  | 47d |  |  |  |
| 312 | 2.3.1.5.1 | Scientific treatment of data |  | 60d | 2010-04-19 | 2010-07-09 | 310 | 47d | 0d |  |  |
| 313 | 2.3.1.5.2 | Clinician treatment of data |  | 30d | 2010-07-12 | 2010-08-20 | 312 | 47d | 0d |  |  |
| 314 | 2.3.2 | **Evaluation and control** |  | 90d | 2010-08-23 | 2010-12-24 |  | 47d |  |  |  |
| 315 | 2.3.2.1 | Scientific treatment of data |  | 60d | 2010-08-23 | 2010-11-12 | 313 | 47d | 0d |  |  |
| 316 | 2.3.2.2 | Clinician treatment of data |  | 30d | 2010-11-15 | 2010-12-24 | 315 | 47d | 0d |  |  |

| ID | WBS | Task | Duration | Start | Finish | Predecessors | Total slack | Free slack | Constraint | Resources | Work |
| --- | --- | --- | --- | --- | --- | --- | --- | --- | --- | --- | --- |
| 317 | 2.4 | **Version 1.1 - Demonstration** | 2d | 2010-12-27 | 2010-12-28 |  | 47d |  |  | O2H | 16h |
| 318 | 2.4.1 | Internal Demonstration | 1d | 2010-12-27 | 2010-12-27 | 316 | 47d | 0d |  |  |  |
| 319 | 2.4.2 | Congress Demonstration | 1d | 2010-12-28 | 2010-12-28 | 318 | 47d |  |  |  |  |
| 320 | 3 | **GP Administrative** | 159d | 2009-08-07 | 2010-03-19 |  | 0d |  |  | O2H | 1272h |
| 321 | 3.1 | Initial Study | 60d | 2009-08-07 | 2009-10-29 |  | 0d |  | must finish on 2009-10-29 |  |  |
| 322 | 3.2 | Functional Analysis | 60d | 2009-08-07 | 2009-10-29 |  | 0d |  | must finish on 2009-10-29 |  |  |
| 323 | 3.3 | Business Plan | 60d | 2009-10-29 | 2010-01-22 |  | 249d | 0d |  |  |  |
| 324 | 3.4 | Difusion Plan | 40d | 2010-01-25 | 2010-03-19 | 323 | 249d |  |  |  |  |
| 325 | 4 | **Documentation management** | 100d | 2009-10-29 | 2010-03-19 |  | 249d |  |  | ASET | 800h |
| 326 | 4.1 | Memoria 1ra | 100d | 2009-10-29 | 2010-03-19 |  | 249d |  |  |  |  |
