# Planning_ActivA

Schedule from MS Project, 2009-08-07 to 2011-03-03.

## Calendars

- Standard: Mon-Fri 08:00-12:00, 13:00-17:00; Sat-Sun off. Exceptions (off unless hours are given): 2009-12-25 (Christmas), 2010-01-01 (New year).

## Resources

| Resource | Group |
| --- | --- |
| Dr. Luis Maiz | HRC |
| Dra. Maite Martinez | H12O |
| Esther Sabando | AMFQ |
| Alfonso Montero | AMFQ |
| Tamara del corral | AMFQ |
| Jordi Villa | UPF |
| Sinan Mutlu | UPF |
| James Dalton | UPF |
| Jordi Blecua | ISOCO |
| Miguel Tsuchiya | FL |
| Joan Plana | ASET |
| Lisbeth Hernández | O2H |
| Miguel Hernández | O2H |
| Jordi Vilaro | O2H |
| Ezequiel Cuesta | O2H |
| Doug Thurber | O2H |
| William Lalinde | O2H |
| FL |  |
| O2H |  |
| ISOCO |  |
| UPF |  |
| AMFQ |  |
| ASET |  |
| FG |  |
| LH |  |
| JV |  |
| MH |  |
| JVL |  |
| JVA |  |
| SINAN |  |
| SM |  |
| JD |  |

## Schedule

| ID | WBS | Task | Type | Duration | Start | Finish | Predecessors | Total slack | Free slack | Constraint | Resources | Work |
| --- | --- | --- | --- | --- | --- | --- | --- | --- | --- | --- | --- | --- |
| 1 | 1 | **GP 1A Version 1 - ActivA Platform** |  | 331d | 2009-09-01 | 2010-12-09 |  | 0d |  |  |  | 17784h |
| 2 | 1.1 | **Analysis - Entire Platform Complete** |  | 57d | 2009-09-01 | 2009-11-18 |  | 0d |  |  |  |  |
| 3 | 1.1.1 | Specifications |  | 43d | 2009-09-01 | 2009-10-29 |  | 0d |  | start no earlier than 2009-09-01 |  |  |
| 4 | 1.1.2 | INDEXING RULES |  | 14d | 2009-10-29 | 2009-11-17 |  | 335d |  |  |  |  |
| 5 | 1.1.2 | Integration Specifications |  | 14d | 2009-10-29 | 2009-11-17 |  | 335d |  |  |  |  |
| 6 | 1.1.2 | Analysis complete Entire Platform - General |  | 14d | 2009-10-30 | 2009-11-18 | 3 | 0d |  |  |  |  |
| 7 | 1.2 | **WP1 Mobile platform** |  | 80d | 2009-10-29 | 2010-02-19 |  | 119d |  |  | FL; O2H | 3152h |
| 8 | 1.2.1 | **Analysis Mobile Applications** |  | 23d | 2009-10-29 | 2009-11-30 |  | 269d |  |  | O2H | 184h |
| 9 | 1.2.1.1 | Specifications |  | 15d | 2009-10-29 | 2009-11-18 |  | 252d | 0d | start no earlier than 2009-10-29 |  |  |
| 10 | 1.2.1.2 | Analysis Mobile Platform |  | 15d | 2009-11-10 | 2009-11-30 |  | 271d | 0d | start no earlier than 2009-11-10 |  |  |
| 11 | 1.2.2 | **Equipment Acquisition** |  | 10d | 2009-11-19 | 2009-12-02 |  | 324d |  |  | FL | 80h |
| 12 | 1.2.2.1 | Acquisition |  | 5d | 2009-11-19 | 2009-11-25 | 6 | 307d | 0d |  |  |  |
| 13 | 1.2.2.2 | Installation |  | 5d | 2009-11-26 | 2009-12-02 | 12 | 307d |  |  |  |  |
| 14 | 1.2.3 | **iPhone development (from other project)** |  | 65d | 2009-11-19 | 2010-02-19 |  | 269d |  |  | FL | 520h |
| 15 | 1.2.3.1 | Smart questionaries |  | 45d | 2009-12-01 | 2010-02-03 | 10 | 259d | 0d |  |  |  |
| 16 | 1.2.3.2 | Measurements |  | 45d | 2009-12-01 | 2010-02-03 | 10 | 259d | 0d |  |  |  |
| 17 | 1.2.3.3 | Calendar and alarm |  | 45d | 2009-12-01 | 2010-02-03 | 10 | 259d | 0d |  |  |  |
| 18 | 1.2.3.4 | Security |  | 14d | 2009-12-01 | 2009-12-18 | 10 | 290d | 31d |  |  |  |
| 19 | 1.2.3.5 | Complete Build Version 1 application |  | 5d | 2010-02-04 | 2010-02-10 | 15, 16, 17, 18 | 259d |  |  |  |  |
| 20 | 1.2.3.6 | Implementation document |  | 50d | 2009-11-19 | 2010-01-29 | 9 | 252d | 0d |  |  |  |
| 21 | 1.2.3.7 | User manual |  | 15d | 2010-02-01 | 2010-02-19 | 20 | 252d |  |  |  |  |
| 22 | 1.2.4 | **Android Development** |  | 58d | 2009-11-19 | 2010-02-10 |  | 276d |  |  | FL | 464h |
| 23 | 1.2.4.1 | Smart questionaries |  | 30d | 2009-12-01 | 2010-01-13 | 10 | 254d | 0d |  |  |  |
| 24 | 1.2.4.2 | Measurements |  | 30d | 2009-12-01 | 2010-01-13 | 10 | 269d | 15d |  |  |  |
| 25 | 1.2.4.3 | Calendar and alarm |  | 15d | 2010-01-14 | 2010-02-03 | 23 | 254d | 0d |  |  |  |
| 26 | 1.2.4.4 | Security |  | 15d | 2010-01-14 | 2010-02-03 | 23 | 254d | 0d |  |  |  |
| 27 | 1.2.4.5 | Complete Build Version 1 application |  | 5d | 2010-02-04 | 2010-02-10 | 23, 24, 25, 26 | 254d | 0d |  |  |  |
| 28 | 1.2.4.6 | Implementation document |  | 50d | 2009-11-19 | 2010-01-29 | 9 | 267d |  |  |  |  |
| 29 | 1.2.4.7 | User manual |  | 15d | 2009-11-19 | 2009-12-09 | 9 | 302d |  |  |  |  |
| 30 | 1.2.4.8 | Development Complete - Mobile Platform | milestone | 0d | 2010-02-10 | 2010-02-10 | 27 | 276d |  |  |  |  |

Notes:
- 1: Although a cascade way is shown, the methodology must be iterative by prototypying
- 4: Documentation, iterative through development
- 5: Documentation, iterative through development
- 6: Documentation, iterative through development

| ID | WBS | Task | Type | Duration | Start | Finish | Predecessors | Total slack | Free slack | Resources | Work |
| --- | --- | --- | --- | --- | --- | --- | --- | --- | --- | --- | --- |
| 31 | 1.2.5 | **Quality assurance** |  | 78d | 2009-10-29 | 2010-02-17 |  | 119d |  | FL | 624h |
| 32 | 1.2.5.1 | Test Matrix |  | 5d | 2010-02-11 | 2010-02-17 | 27 | 254d |  |  |  |
| 33 | 1.2.5.2 | Test Quality assurance iPhone |  | 10d | 2009-10-29 | 2009-11-11 |  | 119d | 0d |  |  |
| 34 | 1.2.5.3 | Test Quality assurance Android |  | 10d | 2009-11-12 | 2009-11-25 | 33 | 102d | 0d |  |  |
| 35 | 1.2.6 | Complete First Product Delivery - MP | milestone | 0d | 2009-11-25 | 2009-11-25 | 33, 34 | 119d | 81d |  |  |
| 36 | 1.3 | **WP2 Web platform** |  | 137d | 2009-10-30 | 2010-05-12 |  | 38d |  |  | 440h |
| 37 | 1.3.1 | **WP2.1 Analysis** |  | 20d | 2009-10-30 | 2009-11-26 |  | 38d | 0d | O2H | 440h |
| 38 | 1.3.1.1 | Architecture document update |  | 15d | 2009-10-30 | 2009-11-19 | 3 | 43d |  | MH | 120h |
| 39 | 1.3.1.2 | Analysis ActivA Platform |  | 15d | 2009-10-30 | 2009-11-19 | 3 | 38d | 0d | MH | 120h |
| 40 | 1.3.1.1 | Test Matrix |  | 5d | 2009-11-20 | 2009-11-26 | 39 | 38d | 10d | MH | 40h |
| 41 | 1.3.2 | **WP2.2 Development** |  | 117d | 2009-11-27 | 2010-05-12 | 37 | 38d |  |  |  |
| 42 | 1.3.2.1 | **WP2.2.1 Hardware** |  | 70d | 2009-11-27 | 2010-03-08 |  | 38d |  |  |  |
| 43 | 1.3.2.1.1 | Demo server installation |  | 10d | 2009-11-27 | 2009-12-10 | 3 | 38d | 0d |  |  |
| 44 | 1.3.2.1.2 | Load balancing servers |  | 30d | 2009-12-11 | 2010-01-25 | 43 | 258d | 0d |  |  |
| 45 | 1.3.2.1.3 | Disperse database |  | 30d | 2010-01-26 | 2010-03-08 | 44 | 258d |  |  |  |
| 46 | 1.3.2.2 | **WP2.2.2 Server side development** |  | 65d | 2009-12-11 | 2010-03-15 | 43 | 38d |  |  |  |
| 47 | 1.3.2.2.1 | Business objects (EJB3 Entities) |  | 20d | 2009-12-11 | 2010-01-11 | 40 | 38d | 0d |  |  |
| 48 | 1.3.2.2.2 | Business methods (EJB3 Sessions) |  | 20d | 2010-01-12 | 2010-02-08 | 47 | 38d | 0d |  |  |
| 49 | 1.3.2.2.3 | Client server communication |  | 20d | 2009-12-11 | 2010-01-11 | 40 | 281d | 40d |  |  |
| 50 | 1.3.2.2.4 | Client side communication (GWT RPC) |  | 20d | 2009-12-11 | 2010-01-11 | 40 | 281d | 40d |  |  |
| 51 | 1.3.2.2.5 | Client side communication (GWT JSON) |  | 20d | 2009-12-11 | 2010-01-11 | 40 | 281d | 40d |  |  |
| 52 | 1.3.2.2.6 | Web services (SOAP XML) |  | 20d | 2010-02-09 | 2010-03-08 | 48 | 38d | 0d |  |  |
| 53 | 1.3.2.2.1 | Test Period |  | 5d | 2010-03-09 | 2010-03-15 | 48, 49, 50, 51, 52 | 241d | 30d |  |  |
| 54 | 1.3.2.3 | **WP2.2.3 Client side development** |  | 106d | 2009-11-27 | 2010-04-27 |  | 53d |  |  |  |
| 55 | 1.3.2.3.1 | Client Business objects |  | 21d | 2009-11-27 | 2009-12-28 | 39 | 77d | 24d |  |  |
| 56 | 1.3.2.3.2 | Client UI Events |  | 20d | 2009-11-27 | 2009-12-24 | 39 | 53d | 0d |  |  |
| 57 | 1.3.2.3.3 | Client widgets |  | 25d | 2009-12-28 | 2010-02-01 | 56 | 53d | 0d |  |  |
| 58 | 1.3.2.3.4 | Client Services |  | 10d | 2010-02-02 | 2010-02-15 | 55, 56, 57 | 53d | 15d |  |  |
| 59 | 1.3.2.3.5 | Web Develpoment end to end consolidation |  | 10d | 2010-03-09 | 2010-03-22 | 52, 58 | 38d | 0d |  |  |
| 60 | 1.3.2.3.6 | Internatioalization and Accesibility |  | 20d | 2010-03-23 | 2010-04-19 | 59 | 211d | 0d |  |  |
| 61 | 1.3.2.3.1 | Test Period |  | 5d | 2010-04-20 | 2010-04-26 | 55, 56, 57, 58, 59, 60 | 211d | 0d |  |  |
| 62 | 1.3.2.3.2 | Document delivery |  | 1d | 2010-04-27 | 2010-04-27 | 61 | 222d |  |  |  |

Notes:
- 32: Test Matrix imust developed with specifications
- 35: Used to take patient measurements
- 38: This architecture document is not constrained only to the web platform.
- 40: Test Matrix imust developed with specifications
- 43: Initially only one server is needed
- 44: For an scalable choice multiple servers must be mounted
- 45: The database must be dispersed as well to avoid being the bottleneck
- 47: Objetos de negocio
- 48: Métodos de negocio
- 51: Additional sites not using RPC
- 53: Test Matrix imust developed with specifications
- 57: Will be replaced by the 3D UI.
- 61: Test Matrix imust developed with specifications

| ID | WBS | Task | Duration | Start | Finish | Predecessors | Total slack | Free slack |
| --- | --- | --- | --- | --- | --- | --- | --- | --- |
| 63 | 1.3.2.4 | **WP2.2.4 e-commerce** | 81d | 2009-11-27 | 2010-03-23 |  | 43d |  |
| 64 | 1.3.2.4.1 | 2.2.4.1 Analysis & Update to Arch. Doc | 15d | 2009-11-27 | 2009-12-17 | 39 | 43d | 0d |
| 65 | 1.3.2.4.4 | 2.2.4.2 Interface implementation | 45d | 2009-12-18 | 2010-02-22 | 64 | 43d | 0d |
| 66 | 1.3.2.4.5 | 2.2.4.3 Transaction | 15d | 2010-02-23 | 2010-03-15 | 65 | 43d | 0d |
| 67 | 1.3.2.4.1 | Test Period | 5d | 2010-03-16 | 2010-03-22 | 66, 64, 65 | 236d | 0d |
| 68 | 1.3.2.4.2 | Document delivery | 1d | 2010-03-23 | 2010-03-23 | 67 | 247d |  |
| 69 | 1.3.2.5 | **WP2.2.5 Security** | 106d | 2009-11-27 | 2010-04-27 |  | 42d |  |
| 70 | 1.3.2.5.1 | 2.2.5.1 Analysis & Update Architecture | 15d | 2009-11-27 | 2009-12-17 | 39 | 42d | 0d |
| 71 | 1.3.2.5.2 | Document delivery | 1d | 2009-12-18 | 2009-12-18 | 70 | 42d | 0d |
| 72 | 1.3.2.5.3 | 2.2.5.2 HTTPS | 45d | 2009-12-21 | 2010-02-23 | 71 | 42d | 0d |
| 73 | 1.3.2.5.4 | 2.2.5.3 Captchas | 15d | 2010-02-24 | 2010-03-16 | 72 | 42d | 0d |
| 74 | 1.3.2.5.1 | Test Period | 5d | 2010-03-17 | 2010-03-23 | 73, 70, 71, 72 | 235d | 0d |
| 75 | 1.3.2.5.2 | Document delivery | 1d | 2010-03-24 | 2010-03-24 | 74 | 246d |  |
| 76 | 1.3.2.5.6 | **WP 2.2.6 Google Health** | 106d | 2009-11-27 | 2010-04-27 |  | 222d |  |
| 77 | 1.3.2.5.6.1 | **WP 2.2.6.1 Analysis** | 106d | 2009-11-27 | 2010-04-27 |  | 222d |  |
| 78 | 1.3.2.5.6.1.1 | 2.2.6.1 Architecture | 20d | 2009-11-27 | 2009-12-24 |  | 222d | 0d |
| 79 | 1.3.2.5.6.1.2 | 2.2.6.2 Development | 20d | 2009-12-28 | 2010-01-25 | 78 | 222d | 0d |
| 80 | 1.3.2.5.6.1.1 | 2.2.6.2 Web services for interfaces | 60d | 2010-01-26 | 2010-04-19 | 79 | 222d | 0d |
| 81 | 1.3.2.5.6.1.1 | Test Period | 5d | 2010-04-20 | 2010-04-26 | 78, 79, 80 | 222d | 0d |
| 82 | 1.3.2.5.6.1.2 | Document delivery | 1d | 2010-04-27 | 2010-04-27 | 81 | 222d |  |
| 83 | 1.3.2.6 | **WP 2.2.6 HL7** | 106d | 2009-11-27 | 2010-04-27 |  | 211d |  |
| 84 | 1.3.2.6.1 | **WP 2.2.6.1 Analysis** | 106d | 2009-11-27 | 2010-04-27 |  | 211d |  |
| 85 | 1.3.2.6.1.1 | 2.2.6.1 Architecture | 20d | 2009-11-27 | 2009-12-24 | 39 | 211d | 0d |
| 86 | 1.3.2.6.1.2 | 2.2.6.2 Development | 20d | 2009-12-28 | 2010-01-25 | 85 | 211d | 0d |
| 87 | 1.3.2.6.1.3 | 2.2.6.2 Web services for interfaces | 60d | 2010-01-26 | 2010-04-19 | 86 | 211d | 0d |
| 88 | 1.3.2.6.1.1 | Test Period | 5d | 2010-04-20 | 2010-04-26 | 87, 85, 86 | 211d | 0d |
| 89 | 1.3.2.6.1.2 | Document delivery | 1d | 2010-04-27 | 2010-04-27 | 88 | 222d |  |

Notes:
- 67: Test Matrix imust developed with specifications
- 74: Test Matrix imust developed with specifications
- 81: Test Matrix imust developed with specifications
- 88: Test Matrix imust developed with specifications

| ID | WBS | Task | Type | Duration | Start | Finish | Predecessors | Total slack | Free slack | Resources | Work |
| --- | --- | --- | --- | --- | --- | --- | --- | --- | --- | --- | --- |
| 90 | 1.3.2.7 | **Quality Assurance** |  | 12d | 2010-04-27 | 2010-05-12 |  | 211d |  |  |  |
| 91 | 1.3.2.7.1 | Test Matrix Update |  | 2d | 2010-04-27 | 2010-04-28 | 53, 61, 67, 74, 88 | 211d | 0d |  |  |
| 92 | 1.3.2.7.2 | Test Period |  | 10d | 2010-04-29 | 2010-05-12 | 91 | 211d |  |  |  |
| 93 | 1.3.3 | Implementation document |  | 110d | 2009-11-20 | 2010-04-26 | 39 | 223d |  |  |  |
| 94 | 1.3.4 | Development Complete - Web Platform | milestone | 0d | 2010-03-22 | 2010-03-22 | 52, 59, 66, 73 | 38d | 0d |  |  |
| 95 | 1.4 | **WP3 Social Networking platform** |  | 115d | 2009-10-29 | 2010-04-09 |  | 54d |  | ISOCO | 920h |
| 96 | 1.4.1 | **WP3.1 Analysis** |  | 75d | 2009-11-19 | 2010-03-05 |  | 39d |  |  |  |
| 97 | 1.4.1.1 | 3.1.1 Social Networks |  | 20d | 2009-11-19 | 2009-12-16 | 6 | 39d | 0d |  |  |
| 98 | 1.4.1.2 | 3.1.2 Communication chanels and wikis |  | 10d | 2009-12-17 | 2009-12-31 | 97 | 39d | 0d |  |  |
| 99 | 1.4.1.3 | 3.1.3 Mobile access |  | 10d | 2010-01-04 | 2010-01-15 | 98 | 39d | 0d |  |  |
| 100 | 1.4.1.4 | 3.1.4 RSS |  | 25d | 2010-01-18 | 2010-02-19 | 99 | 39d | 0d |  |  |
| 101 | 1.4.1.5 | 3.1.5 Stadistics |  | 10d | 2010-02-22 | 2010-03-05 | 100 | 239d | 0d |  |  |
| 102 | 1.4.2 | **WP3.2 Development** |  | 110d | 2009-10-29 | 2010-04-02 |  | 119d |  |  |  |
| 103 | 1.4.2.1 | 3.2.1 Social network integration |  | 20d | 2010-03-08 | 2010-04-02 | 101 | 239d |  |  |  |
| 104 | 1.4.2.2 | 3.2.2 Communication chanels and wikis |  | 30d | 2010-02-22 | 2010-04-02 | 100 | 239d |  |  |  |
| 105 | 1.4.2.3 | 3.2.3 Mobile development |  | 20d | 2010-02-22 | 2010-03-19 | 100 | 39d | 0d |  |  |
| 106 | 1.4.2.4 | 3.2.4 RSS interfaces |  | 15d | 2010-02-22 | 2010-03-12 | 100 | 254d |  |  |  |
| 107 | 1.4.2.5 | 3.2.5 Stadistics package |  | 10d | 2009-10-29 | 2009-11-11 |  | 339d |  |  |  |
| 108 | 1.4.3 | Development Complete - SN Platform | milestone | 0d | 2010-03-19 | 2010-03-19 | 105 | 39d | 0d |  |  |
| 109 | 1.4.4 | **WP3.3 Quality assurance** |  | 15d | 2010-03-22 | 2010-04-09 |  | 234d |  |  |  |
| 110 | 1.4.4.1 | **WP3.3.1 Test matrix** |  | 10d | 2010-03-22 | 2010-04-02 |  | 234d |  |  |  |
| 111 | 1.4.4.1.1 | 3.3.1.1 Environment test matrix |  | 5d | 2010-03-22 | 2010-03-26 | 108 | 234d | 0d |  |  |
| 112 | 1.4.4.1.2 | 3.3.1.2 Scientific test matrix |  | 5d | 2010-03-29 | 2010-04-02 | 111 | 234d | 0d |  |  |
| 113 | 1.4.4.2 | **WP3.3.2 Test period** |  | 5d | 2010-04-05 | 2010-04-09 |  | 234d |  |  |  |
| 114 | 1.4.4.2.1 | 3.3.2.1 Environment test period |  | 5d | 2010-04-05 | 2010-04-09 | 112 | 234d |  |  |  |
| 115 | 1.4.4.2.2 | 3.3.2.2 Scientific test period |  | 5d | 2010-04-05 | 2010-04-09 | 112 | 234d | 0d |  |  |
| 116 | 1.4.5 | Complete First Product Delivery - SN | milestone | 0d | 2010-04-09 | 2010-04-09 | 115 | 234d |  |  |  |

Notes:
- 91: Agregar Test Matrix al principio y Text Period al final de todos los bloques en WP2 (integracion al final MH)
- 93: This implementation document is not constrained only to the web platform.
- 98: Not fully deployed to leave it for later
- 99: Not fully deployed to leave it for later

| ID | WBS | Task | Duration | Start | Finish | Predecessors | Total slack | Free slack | Resources | Work |
| --- | --- | --- | --- | --- | --- | --- | --- | --- | --- | --- |
| 117 | 1.5 | **WP4 Virtual 3D platform** | 139d | 2009-10-29 | 2010-05-13 |  | 15d |  | UPF | 9088h |
| 118 | 1.5.1 | **Analysis** | 97d | 2009-10-29 | 2010-03-16 |  | 15d |  |  | 7976h |
| 119 | 1.5.1.1 | Functional Definitions | 5d | 2009-11-19 | 2009-11-25 | 6 | 329d |  | JV | 40h |
| 120 | 1.5.1.2 | Matrix - Tools Sets | 5d | 2009-11-19 | 2009-11-25 | 6 | 0d |  | JV; JD; MH; SM | 160h |
| 121 | 1.5.1.3 | General Level Rules Definition | 2d | 2009-11-26 | 2009-11-27 | 120 | 0d |  | LH; JVA | 32h |
| 122 | 1.5.1.1 | Animation script (screenplay) | 10d | 2009-11-30 | 2009-12-11 | 121 | 0d |  | LH; JVA | 160h |
| 123 | 1.5.1.1 | End User Visualization Guidelines | 2d | 2009-12-14 | 2009-12-15 | 122 | 0d |  | SM; JVA; JD | 48h |
| 124 | 1.5.1.6 | **ActionScript development** | 97d | 2009-10-29 | 2010-03-16 |  | 252d |  |  | 7536h |
| 125 | 1.5.1.6.1 | **Genomics** | 60d | 2009-10-29 | 2010-01-22 |  | 259d |  |  | 6392h |
| 126 | 1.5.1.6.1.1 | Genomics - Genotyping 4.1.1 | 15d | 2009-11-30 | 2009-12-18 | 121 | 312d |  | JD; JV | 240h |
| 127 | 1.5.1.6.1.2 | Chromosome Model and Visual Source | 15d | 2009-10-29 | 2009-11-18 |  | 259d | 7d | JD; JV | 240h |
| 128 | 1.5.1.6.1.3 | CFTR Gene Model and Visual Sources | 15d | 2009-10-29 | 2009-11-18 |  | 289d | 12d | JD; JV | 240h |
| 129 | 1.5.1.6.1.4 | Chaperone | 30d | 2009-10-29 | 2009-12-09 |  | 317d | 0d | JD; JV | 480h |
| 130 | 1.5.1.6.1.5 | Regulation | 30d | 2009-10-29 | 2009-12-09 |  | 317d | 0d | JD; JV | 480h |
| 131 | 1.5.1.6.1.6 | Pro Inflamatory Model and Visual Sources | 30d | 2009-10-29 | 2009-12-09 |  | 317d | 0d | JD; JV | 480h |
| 132 | 1.5.1.6.1.7 | Functional Genotype Model and Visual Sources | 45d | 2009-10-29 | 2009-12-31 |  | 279d | 2d | JD; JV | 720h |
| 133 | 1.5.1.6.1.8 | Proteomics Data and Visual Sources | 45d | 2009-10-29 | 2009-12-31 |  | 284d | 7d | JD; JV | 720h |
| 134 | 1.5.1.6.1.9 | Bioinformatics Data and Visual Sources | 45d | 2009-10-29 | 2009-12-31 |  | 289d | 12d | JD; JV | 720h |
| 135 | 1.5.1.6.1.10 | Metabolomics Data and Visual Sources | 60d | 2009-10-29 | 2010-01-22 |  | 279d | 2d | JD; JV | 960h |
| 136 | 1.5.1.6.1.11 | Structural Data and Visual Sources | 60d | 2009-10-29 | 2010-01-22 |  | 284d | 7d | JD; JV | 960h |
| 137 | 1.5.1.6.1.12 | **3D Initial Tool Test** | 7d | 2009-11-19 | 2009-11-27 |  | 252d |  |  | 56h |
| 138 | 1.5.1.6.1.12.1 | Rule Details | 5d | 2009-11-19 | 2009-11-25 | 6 | 252d | 0d | MH | 40h |
| 139 | 1.5.1.6.1.12.2 | Initial Component Rendering | 2d | 2009-11-19 | 2009-11-20 | 6 | 332d |  | SM | 16h |
| 140 | 1.5.1.6.1.12.3 | Visualization - 3D Initial Rules/Guidelines | 2d | 2009-11-19 | 2009-11-20 | 6 | 327d | 0d |  |  |
| 141 | 1.5.1.6.1.12.4 | Object Profile - 3D Enviroment | 2d | 2009-11-23 | 2009-11-24 | 140 | 327d | 0d |  |  |
| 142 | 1.5.1.6.1.12.5 | Visualization & Interaction (basic) - 3D object | 3d | 2009-11-25 | 2009-11-27 | 141 | 327d |  |  |  |

Notes:
- 126: Not fully deployed to leave it for later
- 137: Not fully deployed to leave it for later
- 138: Not fully deployed to leave it for later
- 139: Not fully deployed to leave it for later

| ID | WBS | Task | Duration | Start | Finish | Predecessors | Total slack | Free slack | Resources | Work |
| --- | --- | --- | --- | --- | --- | --- | --- | --- | --- | --- |
| 143 | 1.5.1.6.1.13 | **Chromosome** | 17d | 2009-11-26 | 2009-12-18 |  | 252d |  |  | 96h |
| 144 | 1.5.1.6.1.13.1 | Rule Details | 2d | 2009-11-26 | 2009-11-27 | 138 | 252d | 0d | MH | 16h |
| 145 | 1.5.1.6.1.13.2 | Data Aquisition (Info/Links) | 5d | 2009-11-30 | 2009-12-04 | 144, 127 | 252d | 0d | MH | 40h |
| 146 | 1.5.1.6.1.13.3 | Component Rendering | 5d | 2009-12-07 | 2009-12-11 | 145 | 252d | 0d | SM | 40h |
| 147 | 1.5.1.6.1.13.4 | Object Profile - 3D Enviroment | 2d | 2009-12-14 | 2009-12-15 | 146 | 310d | 0d |  |  |
| 148 | 1.5.1.6.1.13.5 | Visualization & Interaction - 3D object | 3d | 2009-12-16 | 2009-12-18 | 147 | 312d |  |  |  |
| 149 | 1.5.1.6.2 | **Genotyping CFTR 4.1.1** | 62d | 2009-11-26 | 2010-02-23 |  | 264d |  |  | 1144h |
| 150 | 1.5.1.6.2.1 | **Rule Details** | 19d | 2009-11-26 | 2009-12-22 |  | 264d |  | MH | 248h |
| 151 | 1.5.1.6.2.1.1 | Rule Details | 2d | 2009-11-26 | 2009-11-27 | 138 | 327d |  | MH | 16h |
| 152 | 1.5.1.6.2.1.2 | Data Aquisition (Info/Links) | 5d | 2009-12-07 | 2009-12-11 | 145, 128 | 277d | 0d | MH | 40h |
| 153 | 1.5.1.6.2.1.3 | Component Rendering | 5d | 2009-12-14 | 2009-12-18 | 146 | 252d | 0d | SM | 40h |
| 154 | 1.5.1.6.2.1.4 | Object Profile - 3D Enviroment | 2d | 2009-12-16 | 2009-12-17 | 147 | 310d | 0d |  |  |
| 155 | 1.5.1.6.2.1.5 | Visualization & Interaction - 3D object | 3d | 2009-12-18 | 2009-12-22 | 154 | 310d |  |  |  |
| 156 | 1.5.1.6.2.2 | **Chaperones** | 22d | 2009-12-10 | 2010-01-12 |  | 264d |  |  | 136h |
| 157 | 1.5.1.6.2.2.1 | Rule Details | 2d | 2009-12-10 | 2009-12-11 | 138, 129 | 317d |  | MH | 16h |
| 158 | 1.5.1.6.2.2.2 | Data Aquisition (Info/Links) | 5d | 2009-12-21 | 2009-12-28 | 170 | 277d | 0d | MH | 40h |
| 159 | 1.5.1.6.2.2.3 | Component Rendering | 5d | 2009-12-29 | 2010-01-05 | 171 | 252d | 0d | MH; JD | 80h |
| 160 | 1.5.1.6.2.2.4 | Object Profile - 3D Enviroment | 2d | 2010-01-06 | 2010-01-07 | 159 | 297d | 0d |  |  |
| 161 | 1.5.1.6.2.2.5 | Visualization & Interaction - 3D object | 3d | 2010-01-08 | 2010-01-12 | 160 | 297d |  |  |  |
| 162 | 1.5.1.6.2.3 | **Gene Regulation** | 27d | 2009-12-10 | 2010-01-19 |  | 269d |  |  |  |
| 163 | 1.5.1.6.2.3.1 | Rule Details | 2d | 2009-12-10 | 2009-12-11 | 138, 130 | 317d |  |  |  |
| 164 | 1.5.1.6.2.3.2 | Data Aquisition (Info/Links) | 5d | 2009-12-29 | 2010-01-05 | 158 | 277d | 0d |  |  |
| 165 | 1.5.1.6.2.3.3 | Component Rendering | 5d | 2010-01-06 | 2010-01-12 | 159 | 252d | 0d |  |  |
| 166 | 1.5.1.6.2.3.4 | Object Profile - 3D Enviroment | 2d | 2010-01-13 | 2010-01-14 | 165 | 292d | 0d |  |  |
| 167 | 1.5.1.6.2.3.5 | Visualization - 3D object | 3d | 2010-01-15 | 2010-01-19 | 166 | 292d |  |  |  |

Notes:
- 143: Not fully deployed to leave it for later
- 144: Not fully deployed to leave it for later
- 145: Not fully deployed to leave it for later
- 146: Not fully deployed to leave it for later
- 149: Not fully deployed to leave it for later
- 150: Not fully deployed to leave it for later
- 151: Not fully deployed to leave it for later
- 152: Not fully deployed to leave it for later
- 153: Not fully deployed to leave it for later
- 156: Not fully deployed to leave it for later
- 157: Not fully deployed to leave it for later
- 158: Not fully deployed to leave it for later
- 159: Not fully deployed to leave it for later
- 160: Not fully deployed to leave it for later
- 161: Not fully deployed to leave it for later
- 162: Not fully deployed to leave it for later
- 163: Not fully deployed to leave it for later
- 164: Not fully deployed to leave it for later
- 165: Not fully deployed to leave it for later
- 166: Not fully deployed to leave it for later
- 167: Not fully deployed to leave it for later

| ID | WBS | Task | Duration | Start | Finish | Predecessors | Total slack | Free slack | Resources | Work |
| --- | --- | --- | --- | --- | --- | --- | --- | --- | --- | --- |
| 168 | 1.5.1.6.2.4 | **Pro-Inflamatory Genotype** | 17d | 2009-12-10 | 2010-01-05 |  | 259d |  |  | 96h |
| 169 | 1.5.1.6.2.4.1 | Rule Details | 2d | 2009-12-10 | 2009-12-11 | 138, 131 | 317d |  | MH | 16h |
| 170 | 1.5.1.6.2.4.2 | Data Aquisition (Info/Links) | 5d | 2009-12-14 | 2009-12-18 | 152 | 277d | 0d | MH | 40h |
| 171 | 1.5.1.6.2.4.3 | Component Rendering | 5d | 2009-12-21 | 2009-12-28 | 153 | 252d | 0d | SM | 40h |
| 172 | 1.5.1.6.2.4.4 | Object Profile - 3D Enviroment | 2d | 2009-12-29 | 2009-12-30 | 171 | 302d | 0d |  |  |
| 173 | 1.5.1.6.2.4.5 | Visualization & Interaction - 3D object | 3d | 2009-12-31 | 2010-01-05 | 172 | 302d |  |  |  |
| 174 | 1.5.1.6.2.5 | **Functional Genotype** | 42d | 2009-11-26 | 2010-01-26 |  | 284d |  |  | 128h |
| 175 | 1.5.1.6.2.5.1 | Rule Details | 2d | 2009-11-26 | 2009-11-27 | 138 | 327d |  | MH | 16h |
| 176 | 1.5.1.6.2.5.2 | Data Aquisition (Info/Links) | 5d | 2010-01-06 | 2010-01-12 | 164, 132 | 277d | 0d | MH | 40h |
| 177 | 1.5.1.6.2.5.3 | Component Rendering | 5d | 2010-01-13 | 2010-01-19 | 165 | 252d | 0d | MH | 40h |
| 178 | 1.5.1.6.2.5.4 | Object Profile - 3D Enviroment | 2d | 2010-01-20 | 2010-01-21 | 177 | 287d | 0d | MH; JD | 32h |
| 179 | 1.5.1.6.2.5.5 | Visualization - 3D object | 3d | 2010-01-22 | 2010-01-26 | 178 | 287d |  |  |  |
| 180 | 1.5.1.6.2.6 | **Proteomics** | 50d | 2009-11-26 | 2010-02-05 |  | 279d |  |  | 104h |
| 181 | 1.5.1.6.2.6.1 | Rule Details | 2d | 2009-11-26 | 2009-11-27 | 138 | 327d |  |  |  |
| 182 | 1.5.1.6.2.6.2 | Data Aquisition (Info/Links) | 5d | 2010-01-13 | 2010-01-19 | 176, 133 | 277d | 0d | MH | 40h |
| 183 | 1.5.1.6.2.6.3 | Component Rendering | 5d | 2010-01-20 | 2010-01-26 | 177 | 252d | 0d |  |  |
| 184 | 1.5.1.6.2.6.4 | Object Profile - 3D Enviroment | 5d | 2010-01-27 | 2010-02-02 | 183 | 279d | 0d | MH | 40h |
| 185 | 1.5.1.6.2.6.5 | Visualization - 3D object | 3d | 2010-02-03 | 2010-02-05 | 184 | 279d |  | SM | 24h |
| 186 | 1.5.1.6.2.7 | **BioInformatics** | 52d | 2009-11-26 | 2010-02-09 |  | 277d |  |  | 160h |
| 187 | 1.5.1.6.2.7.1 | Rule Details | 2d | 2009-11-26 | 2009-11-27 | 138 | 327d |  | MH | 16h |
| 188 | 1.5.1.6.2.7.2 | Data Aquisition (Info/Links) | 5d | 2010-01-20 | 2010-01-26 | 182, 134 | 277d | 0d | MH | 40h |
| 189 | 1.5.1.6.2.7.3 | Component Rendering | 5d | 2010-01-27 | 2010-02-02 | 183 | 252d | 0d | MH; JD | 80h |
| 190 | 1.5.1.6.2.7.4 | Object Profile - 3D Enviroment | 2d | 2010-02-03 | 2010-02-04 | 189 | 277d | 0d |  |  |
| 191 | 1.5.1.6.2.7.5 | Visualization - 3D object | 3d | 2010-02-05 | 2010-02-09 | 190 | 277d |  | SM | 24h |

Notes:
- 168: Not fully deployed to leave it for later
- 169: Not fully deployed to leave it for later
- 170: Not fully deployed to leave it for later
- 171: Not fully deployed to leave it for later
- 174: Not fully deployed to leave it for later
- 175: Not fully deployed to leave it for later
- 176: Not fully deployed to leave it for later
- 177: Not fully deployed to leave it for later
- 178: Not fully deployed to leave it for later
- 179: Not fully deployed to leave it for later
- 180: Not fully deployed to leave it for later
- 181: Not fully deployed to leave it for later
- 182: Not fully deployed to leave it for later
- 183: Not fully deployed to leave it for later
- 184: Not fully deployed to leave it for later
- 185: Not fully deployed to leave it for later
- 186: Not fully deployed to leave it for later
- 187: Not fully deployed to leave it for later
- 188: Not fully deployed to leave it for later
- 189: Not fully deployed to leave it for later
- 190: Not fully deployed to leave it for later
- 191: Not fully deployed to leave it for later

| ID | WBS | Task | Type | Duration | Start | Finish | Predecessors | Total slack | Free slack | Resources | Work |
| --- | --- | --- | --- | --- | --- | --- | --- | --- | --- | --- | --- |
| 192 | 1.5.1.6.2.8 | **Metabolomics** |  | 57d | 2009-11-26 | 2010-02-16 |  | 272d |  |  | 136h |
| 193 | 1.5.1.6.2.8.1 | Rule Details |  | 2d | 2009-11-26 | 2009-11-27 | 138 | 327d |  | MH | 16h |
| 194 | 1.5.1.6.2.8.2 | Data Aquisition (Info/Links) |  | 5d | 2010-01-27 | 2010-02-02 | 188, 135 | 277d | 0d | MH | 40h |
| 195 | 1.5.1.6.2.8.3 | Component Rendering |  | 5d | 2010-02-03 | 2010-02-09 | 189 | 252d | 0d | MH; JD | 80h |
| 196 | 1.5.1.6.2.8.4 | Object Profile - 3D Enviroment |  | 2d | 2010-02-10 | 2010-02-11 | 195 | 272d | 0d |  |  |
| 197 | 1.5.1.6.2.8.5 | Visualization - 3D object |  | 3d | 2010-02-12 | 2010-02-16 | 196 | 272d |  |  |  |
| 198 | 1.5.1.6.2.9 | **Structural Bioinformatics** |  | 62d | 2009-11-26 | 2010-02-23 |  | 267d |  |  | 136h |
| 199 | 1.5.1.6.2.9.1 | Rule Details |  | 2d | 2009-11-26 | 2009-11-27 | 138 | 327d |  | MH | 16h |
| 200 | 1.5.1.6.2.9.2 | Data Aquisition (Info/Links) |  | 5d | 2010-02-03 | 2010-02-09 | 194, 136 | 277d |  | MH | 40h |
| 201 | 1.5.1.6.2.9.3 | Component Rendering |  | 5d | 2010-02-10 | 2010-02-16 | 195 | 252d | 0d | MH; JD | 80h |
| 202 | 1.5.1.6.2.9.4 | Object Profile - 3D Enviroment |  | 2d | 2010-02-17 | 2010-02-18 | 201 | 252d | 0d |  |  |
| 203 | 1.5.1.6.2.9.5 | Visualization - 3D object |  | 3d | 2010-02-19 | 2010-02-23 | 202 | 252d | 0d |  |  |
| 204 | 1.5.1.6.3 | **3D Environment Consolidation** |  | 15d | 2010-02-24 | 2010-03-16 |  | 252d |  |  |  |
| 205 | 1.5.1.6.3.1 | Combined 3D Object Environments |  | 5d | 2010-02-24 | 2010-03-02 | 203 | 252d | 0d |  |  |
| 206 | 1.5.1.6.3.2 | Combined Visualization |  | 5d | 2010-03-03 | 2010-03-09 | 205 | 252d | 0d |  |  |
| 207 | 1.5.1.6.3.3 | Combined Interaction |  | 5d | 2010-03-10 | 2010-03-16 | 206 | 252d |  |  |  |
| 208 | 1.5.2 | **Development** |  | 70d | 2009-12-16 | 2010-03-25 |  | 0d |  |  |  |
| 209 | 1.5.2.1 | Object design frameworks |  | 10d | 2009-12-16 | 2009-12-30 | 123 | 0d |  |  |  |
| 210 | 1.5.2.2 | Object design libraries |  | 45d | 2009-12-31 | 2010-03-04 | 209 | 260d |  |  |  |
| 211 | 1.5.2.3 | complete object designs |  | 45d | 2009-12-31 | 2010-03-04 | 209 | 0d |  |  |  |
| 212 | 1.5.2.4 | Stage design |  | 15d | 2010-03-05 | 2010-03-25 | 211 | 0d |  |  |  |
| 213 | 1.5.3 | Development Complete - VR Platform | milestone | 0d | 2010-03-25 | 2010-03-25 | 212 | 35d |  |  |  |
| 214 | 1.5.4 | **Quality assurance** |  | 35d | 2010-03-26 | 2010-05-13 |  | 0d |  |  |  |
| 215 | 1.5.4.1 | **Test matrix** |  | 10d | 2010-03-26 | 2010-04-08 |  | 0d |  |  |  |
| 216 | 1.5.4.1.1 | Environment test matrix |  | 5d | 2010-03-26 | 2010-04-01 | 212 | 0d |  |  |  |
| 217 | 1.5.4.1.2 | Scientific test matrix |  | 5d | 2010-04-02 | 2010-04-08 | 216 | 0d |  |  |  |

Notes:
- 192: Not fully deployed to leave it for later
- 193: Not fully deployed to leave it for later
- 194: Not fully deployed to leave it for later
- 195: Not fully deployed to leave it for later
- 196: Not fully deployed to leave it for later
- 197: Not fully deployed to leave it for later
- 198: Not fully deployed to leave it for later
- 199: Not fully deployed to leave it for later
- 200: Not fully deployed to leave it for later
- 201: Not fully deployed to leave it for later
- 202: Not fully deployed to leave it for later
- 203: Not fully deployed to leave it for later
- 204: Not fully deployed to leave it for later
- 205: Not fully deployed to leave it for later
- 206: Not fully deployed to leave it for later
- 207: Not fully deployed to leave it for later

| ID | WBS | Task | Type | Duration | Start | Finish | Predecessors | Total slack | Free slack | Resources | Work |
| --- | --- | --- | --- | --- | --- | --- | --- | --- | --- | --- | --- |
| 218 | 1.5.4.2 | **Test period** |  | 25d | 2010-04-09 | 2010-05-13 |  | 0d |  |  |  |
| 219 | 1.5.4.2.1 | Environment test period |  | 25d | 2010-04-09 | 2010-05-13 | 217 | 0d |  |  |  |
| 220 | 1.5.4.2.2 | Scientific test period |  | 25d | 2010-04-09 | 2010-05-13 | 217 | 210d |  |  |  |
| 221 | 1.5.5 | Complete First Product Delivery - VR | milestone | 0d | 2010-05-13 | 2010-05-13 | 219 | 0d |  |  |  |
| 222 | 1.6 | **WP5 Integration** |  | 64d | 2010-03-23 | 2010-06-18 |  | 152d |  | O2H | 1192h |
| 223 | 1.6.1 | **Mobile - Web integration** |  | 40d | 2010-03-23 | 2010-05-17 |  | 208d |  | FL | 320h |
| 224 | 1.6.1.1 | XML communication |  | 10d | 2010-03-23 | 2010-04-05 | 35, 94 | 208d | 0d |  |  |
| 225 | 1.6.1.2 | Security implementation |  | 10d | 2010-04-06 | 2010-04-19 | 224 | 208d | 0d |  |  |
| 226 | 1.6.1.3 | Mobile to Server communication |  | 10d | 2010-04-20 | 2010-05-03 | 225 | 208d | 0d |  |  |
| 227 | 1.6.1.4 | Server to Mobile communication |  | 10d | 2010-05-04 | 2010-05-17 | 226 | 208d | 0d |  |  |
| 228 | 1.6.2 | Platform Mobile Integration - Complete | milestone | 0d | 2010-05-17 | 2010-05-17 | 227 | 208d | 12d |  |  |
| 229 | 1.6.3 | **Social networks** |  | 30d | 2010-03-23 | 2010-05-03 |  | 218d |  |  |  |
| 230 | 1.6.3.1 | Facebook integration |  | 15d | 2010-03-23 | 2010-04-12 | 108, 94 | 218d | 0d |  |  |
| 231 | 1.6.3.2 | Other networks |  | 15d | 2010-04-13 | 2010-05-03 | 230 | 218d | 0d |  |  |
| 232 | 1.6.4 | Platform Social Networking Integration - Complete | milestone | 0d | 2010-05-03 | 2010-05-03 | 231 | 218d | 22d |  |  |
| 233 | 1.6.5 | **Virtual 3D - Web integration** |  | 14d | 2010-05-14 | 2010-06-02 |  | 196d |  | O2H | 112h |
| 234 | 1.6.5.1 | **ActionScript - JavaScript** |  | 14d | 2010-05-14 | 2010-06-02 |  | 196d |  |  |  |
| 235 | 1.6.5.1.1 | Reuse of entities |  | 7d | 2010-05-14 | 2010-05-24 | 221 | 203d |  |  |  |
| 236 | 1.6.5.1.2 | Reuse of commands |  | 7d | 2010-05-14 | 2010-05-24 | 221 | 203d |  |  |  |
| 237 | 1.6.5.1.1 | Demo of integration |  | 14d | 2010-05-14 | 2010-06-02 | 221, 94 | 196d | 0d |  |  |
| 238 | 1.6.6 | Platform VR 3D Integration - Complete | milestone | 0d | 2010-06-02 | 2010-06-02 | 237 | 196d | 0d |  |  |
| 239 | 1.6.7 | **Semantic Web (HL7)** |  | 10d | 2010-03-23 | 2010-04-05 |  | 238d |  | ISOCO | 80h |
| 240 | 1.6.7.1 | Environment Setting |  | 10d | 2010-03-23 | 2010-04-05 | 94 | 238d | 42d |  |  |
| 241 | 1.6.8 | Platform Integration - Complete | milestone | 0d | 2010-06-02 | 2010-06-02 | 228, 232, 238, 240 | 196d |  |  |  |

Notes:
- 225: Described up

| ID | WBS | Task | Type | Duration | Start | Finish | Predecessors | Total slack | Free slack | Resources | Work |
| --- | --- | --- | --- | --- | --- | --- | --- | --- | --- | --- | --- |
| 242 | 1.6.5 | **Quality assurance** |  | 26d | 2010-05-14 | 2010-06-18 |  | 114d |  |  | 168h |
| 243 | 1.6.5.1 | **Test matrix** |  | 6d | 2010-05-14 | 2010-05-21 |  | 114d |  |  | 168h |
| 244 | 1.6.5.1.1 | Test Matrix Update |  | 1d | 2010-05-14 | 2010-05-14 | 35, 94, 213, 221, 108 | 114d | 0d | FG | 8h |
| 245 | 1.6.5.1.1 | Patient matrix |  | 5d | 2010-05-17 | 2010-05-21 | 244 | 114d | 0d | FG | 40h |
| 246 | 1.6.5.1.2 | Clinician matrix |  | 5d | 2010-05-17 | 2010-05-21 | 244 | 114d | 0d | LH | 40h |
| 247 | 1.6.5.1.3 | Researcher matrix |  | 5d | 2010-05-17 | 2010-05-21 | 244 | 204d |  | JVA | 40h |
| 248 | 1.6.5.1.4 | Technical matrix |  | 5d | 2010-05-17 | 2010-05-21 | 244 | 124d | 0d | MH | 40h |
| 249 | 1.6.5.2 | **Test period** |  | 20d | 2010-05-24 | 2010-06-18 |  | 114d |  |  |  |
| 250 | 1.6.5.2.1 | Patient test |  | 10d | 2010-05-24 | 2010-06-04 | 245 | 114d | 0d |  |  |
| 251 | 1.6.5.2.2 | Clinician test |  | 10d | 2010-05-24 | 2010-06-04 | 246 | 114d | 0d |  |  |
| 252 | 1.6.5.2.3 | Researcher tests |  | 10d | 2010-06-07 | 2010-06-18 | 251, 250 | 114d | 0d |  |  |
| 253 | 1.6.5.2.4 | Technical tests |  | 10d | 2010-05-24 | 2010-06-04 | 248 | 124d | 10d |  |  |
| 254 | 1.6.6 | Complete First Product Delivery - WP | milestone | 0d | 2010-06-18 | 2010-06-18 | 250, 251, 252, 253 | 114d | 0d |  |  |
| 255 | 1.9 | **WP6 Inference and reasoning** |  | 85d | 2010-05-14 | 2010-09-09 |  | 0d |  | UPF | 680h |
| 256 | 1.9.1 | **Analysis** |  | 10d | 2010-05-14 | 2010-05-27 |  | 0d |  |  |  |
| 257 | 1.9.1.1 | Database reference document |  | 5d | 2010-05-14 | 2010-05-20 | 35, 94, 108, 213, 221 | 0d |  |  |  |
| 258 | 1.9.1.2 | Knoweldge generation document |  | 5d | 2010-05-21 | 2010-05-27 | 257 | 0d |  |  |  |
| 259 | 1.9.2 | **Development** |  | 35d | 2010-05-28 | 2010-07-15 |  | 0d |  |  |  |
| 260 | 1.9.2.1 | Integration of databases |  | 5d | 2010-05-28 | 2010-06-03 | 258 | 0d |  |  |  |
| 261 | 1.9.2.2 | Interface for accessing information |  | 15d | 2010-06-04 | 2010-06-24 | 260 | 0d |  |  |  |
| 262 | 1.9.2.3 | Integration of new results |  | 15d | 2010-06-25 | 2010-07-15 | 261 | 0d |  |  |  |
| 263 | 1.9.2.4 | Development Complete - Inference Platform | milestone | 0d | 2010-07-15 | 2010-07-15 | 262 | 0d |  |  |  |
| 264 | 1.9.3 | **Quality Assurance** |  | 40d | 2010-07-16 | 2010-09-09 |  | 111d |  |  |  |
| 265 | 1.9.3.1 | **Test Matrix** |  | 10d | 2010-07-16 | 2010-07-29 |  | 111d |  |  |  |
| 266 | 1.9.3.1.1 | Clinician test matrix |  | 5d | 2010-07-16 | 2010-07-22 | 263 | 111d | 0d |  |  |
| 267 | 1.9.3.1.2 | Researcher test matrix |  | 5d | 2010-07-23 | 2010-07-29 | 266 | 111d | 0d |  |  |
| 268 | 1.9.3.1.3 | Platform Integration - Complete | milestone | 0d | 2010-07-29 | 2010-07-29 | 267 | 111d | 0d |  |  |

Notes:
- 250: Do not mix the testing phase named here with the WP Patient Management, they are not related

| ID | WBS | Task | Type | Duration | Start | Finish | Predecessors | Total slack | Free slack | Resources | Work |
| --- | --- | --- | --- | --- | --- | --- | --- | --- | --- | --- | --- |
| 269 | 1.9.3.2 | **Test Period** |  | 30d | 2010-07-30 | 2010-09-09 |  | 111d |  |  |  |
| 270 | 1.9.3.2.1 | Clinician test period |  | 15d | 2010-07-30 | 2010-08-19 | 268 | 111d | 0d |  |  |
| 271 | 1.9.3.2.2 | Researcher test period |  | 15d | 2010-08-20 | 2010-09-09 | 270 | 111d | 0d |  |  |
| 272 | 1.7 | Platform Version 1 - Complete | milestone | 0d | 2010-09-09 | 2010-09-09 | 271 | 111d | 0d |  |  |
| 273 | 1.8 | Code versioning |  | 14d | 2010-09-10 | 2010-09-29 | 272 | 111d |  |  |  |
| 274 | 1.9 | **WP7 Patient management** |  | 289d | 2009-10-29 | 2010-12-09 |  | 60d |  | AMFQ | 2312h |
| 275 | 1.9.1 | **Preparation** |  | 140d | 2009-10-29 | 2010-05-14 |  | 139d |  |  |  |
| 276 | 1.9.1.1 | Protocol document |  | 25d | 2009-10-29 | 2009-12-02 |  | 139d | 0d |  |  |
| 277 | 1.9.1.2 | Clinician training |  | 60d | 2009-12-03 | 2010-02-26 | 276 | 139d | 0d |  |  |
| 278 | 1.9.1.3 | Condifentiality agreement |  | 30d | 2010-03-01 | 2010-04-09 | 277 | 139d | 0d |  |  |
| 279 | 1.9.1.4 | Patient selection |  | 15d | 2010-04-12 | 2010-04-30 | 278 | 139d | 0d |  |  |
| 280 | 1.9.1.5 | Prueba completa con unos individuos |  | 10d | 2010-05-03 | 2010-05-14 | 279 | 139d | 25d |  |  |
| 281 | 1.9.2 | **Initiation** |  | 70d | 2010-06-21 | 2010-09-24 |  | 114d |  |  |  |
| 282 | 1.9.2.1 | Educational training |  | 15d | 2010-06-21 | 2010-07-09 | 280, 254 | 114d | 0d |  |  |
| 283 | 1.9.2.2 | Patient observation |  | 40d | 2010-07-12 | 2010-09-03 | 282 | 114d | 0d |  |  |
| 284 | 1.9.2.3 | Patient post observation |  | 15d | 2010-09-06 | 2010-09-24 | 283 | 114d |  |  |  |
| 285 | 1.9.3 | **Evaluation and control** |  | 105d | 2010-07-16 | 2010-12-09 |  | 0d |  |  |  |
| 286 | 1.9.3.1 | Initial Analysis and Scientific treatment of data |  | 15d | 2010-07-16 | 2010-08-05 | 263 | 0d |  |  |  |
| 287 | 1.9.3.2 | Scientific treatment of data |  | 60d | 2010-08-06 | 2010-10-28 | 286 | 0d |  |  |  |
| 288 | 1.9.3.3 | Clinician treatment of data |  | 30d | 2010-10-29 | 2010-12-09 | 287 | 0d |  |  |  |
| 289 | 1.10 | Platform Version 1.1 - Complete | milestone | 0d | 2010-12-09 | 2010-12-09 | 288 | 0d |  |  |  |
| 290 | 2 | **GP 1B Version 1.1 (revision)** |  | 349d | 2009-10-29 | 2011-03-03 |  | 0d |  |  | 4968h |
| 291 | 2.1 | **WP8 (revision)** |  | 349d | 2009-10-29 | 2011-03-03 |  | 0d |  | O2H | 2792h |
| 292 | 2.1.1 | **Analysis** |  | 20d | 2010-12-10 | 2011-01-06 |  | 0d |  |  |  |
| 293 | 2.1.1.1 | Modification Requests |  | 10d | 2010-12-10 | 2010-12-23 | 289 | 0d |  |  |  |
| 294 | 2.1.1.2 | Knoweldge generation document |  | 10d | 2010-12-24 | 2011-01-06 | 293 | 0d |  |  |  |

Notes:
- 273: Installment of SVN or CVS
- 274: Deberia de ser WP7 y arreglar los otros
- 280: Atar antes de Test matrix y period

| ID | WBS | Task | Type | Duration | Start | Finish | Predecessors | Total slack | Free slack | Resources | Work |
| --- | --- | --- | --- | --- | --- | --- | --- | --- | --- | --- | --- |
| 295 | 2.1.2 | **Development** |  | 30d | 2011-01-07 | 2011-02-17 |  | 0d |  |  |  |
| 296 | 2.1.2.1 | Modification Development |  | 15d | 2011-01-07 | 2011-01-27 | 294 | 0d |  |  |  |
| 297 | 2.1.2.2 | Integration of new results |  | 15d | 2011-01-28 | 2011-02-17 | 296 | 0d |  |  |  |
| 298 | 2.1.2.3 | Development Complete - VR Platform | milestone | 0d | 2011-02-17 | 2011-02-17 | 297 | 0d |  |  |  |
| 299 | 2.1.3 | **Quality Assurance** |  | 349d | 2009-10-29 | 2011-03-03 |  | 0d |  |  |  |
| 300 | 2.1.3.1 | **Test Matrix** |  | 10d | 2011-02-18 | 2011-03-03 |  | 0d |  |  |  |
| 301 | 2.1.3.1.1 | Clinician test matrix |  | 5d | 2011-02-18 | 2011-02-24 | 298 | 0d |  |  |  |
| 302 | 2.1.3.1.2 | Researcher test matrix |  | 5d | 2011-02-25 | 2011-03-03 | 301 | 0d |  |  |  |
| 303 | 2.1.3.2 | Platform Integration - Complete | milestone | 0d | 2011-03-03 | 2011-03-03 | 302 | 0d |  |  |  |
| 304 | 2.1.3.3 | **Test Period** |  | 30d | 2009-10-29 | 2009-12-09 |  | 47d |  |  |  |
| 305 | 2.1.3.3.1 | Clinician test period |  | 15d | 2009-10-29 | 2009-11-18 |  | 47d | 0d |  |  |
| 306 | 2.1.3.3.2 | Researcher test period |  | 15d | 2009-11-19 | 2009-12-09 | 305 | 47d | 0d |  |  |
| 307 | 2.2 | Platform Version 1.1 - Complete | milestone | 0d | 2009-12-09 | 2009-12-09 | 306 | 47d | 0d |  |  |
| 308 | 2.3 | **WP9 Patient management** |  | 270d | 2009-12-10 | 2010-12-24 |  | 47d |  | AMFQ | 2160h |
| 309 | 2.3.1 | **Preparation** |  | 180d | 2009-12-10 | 2010-08-20 |  | 47d |  |  |  |
| 310 | 2.3.1.1 | Protocol document |  | 25d | 2009-12-10 | 2010-01-15 | 307 | 294d |  |  |  |
| 311 | 2.3.1.2 | Clinician training |  | 20d | 2009-12-10 | 2010-01-08 | 307 | 299d |  |  |  |
| 312 | 2.3.1.3 | Condifentiality agreement |  | 20d | 2009-12-10 | 2010-01-08 | 307 | 47d | 0d |  |  |
| 313 | 2.3.1.4 | **Development** |  | 70d | 2010-01-11 | 2010-04-16 |  | 47d |  |  |  |
| 314 | 2.3.1.4.1 | Educational training |  | 15d | 2010-01-11 | 2010-01-29 | 312 | 284d |  |  |  |
| 315 | 2.3.1.4.2 | Patient selection |  | 15d | 2010-01-11 | 2010-01-29 | 312 | 47d | 0d |  |  |
| 316 | 2.3.1.4.3 | Patient observation |  | 40d | 2010-02-01 | 2010-03-26 | 315 | 47d | 0d |  |  |
| 317 | 2.3.1.4.4 | Patient post observation |  | 15d | 2010-03-29 | 2010-04-16 | 316 | 47d | 0d |  |  |
| 318 | 2.3.1.5 | **Evaluation and control** |  | 90d | 2010-04-19 | 2010-08-20 |  | 47d |  |  |  |
| 319 | 2.3.1.5.1 | Scientific treatment of data |  | 60d | 2010-04-19 | 2010-07-09 | 317 | 47d | 0d |  |  |
| 320 | 2.3.1.5.2 | Clinician treatment of data |  | 30d | 2010-07-12 | 2010-08-20 | 319 | 47d | 0d |  |  |

| ID | WBS | Task | Duration | Start | Finish | Predecessors | Total slack | Free slack | Constraint | Resources | Work |
| --- | --- | --- | --- | --- | --- | --- | --- | --- | --- | --- | --- |
| 321 | 2.3.2 | **Evaluation and control** | 90d | 2010-08-23 | 2010-12-24 |  | 47d |  |  |  |  |
| 322 | 2.3.2.1 | Scientific treatment of data | 60d | 2010-08-23 | 2010-11-12 | 320 | 47d | 0d |  |  |  |
| 323 | 2.3.2.2 | Clinician treatment of data | 30d | 2010-11-15 | 2010-12-24 | 322 | 47d | 0d |  |  |  |
| 324 | 2.4 | **Version 1.1 - Demonstration** | 2d | 2010-12-27 | 2010-12-28 |  | 47d |  |  | O2H | 16h |
| 325 | 2.4.1 | Internal Demonstration | 1d | 2010-12-27 | 2010-12-27 | 323 | 47d | 0d |  |  |  |
| 326 | 2.4.2 | Congress Demonstration | 1d | 2010-12-28 | 2010-12-28 | 325 | 47d |  |  |  |  |
| 327 | 3 | **GP Administrative** | 159d | 2009-08-07 | 2010-03-19 |  | 0d |  |  | O2H | 1272h |
| 328 | 3.1 | Initial Study | 60d | 2009-08-07 | 2009-10-29 |  | 0d |  | must finish on 2009-10-29 |  |  |
| 329 | 3.2 | Functional Analysis | 60d | 2009-08-07 | 2009-10-29 |  | 0d |  | must finish on 2009-10-29 |  |  |
| 330 | 3.3 | Business Plan | 60d | 2009-10-29 | 2010-01-22 |  | 249d | 0d |  |  |  |
| 331 | 3.4 | Difusion Plan | 40d | 2010-01-25 | 2010-03-19 | 330 | 249d |  |  |  |  |
| 332 | 4 | **Documentation management** | 100d | 2009-10-29 | 2010-03-19 |  | 249d |  |  | ASET | 800h |
| 333 | 4.1 | Memoria 1ra | 100d | 2009-10-29 | 2010-03-19 |  | 249d |  |  |  |  |
